# Finish Line

Schedule from MS Project, 2005-01-24 to 2005-03-28.
GSC GameWorld

## Calendars

- Стандартный: Mon-Fri 10:00-13:00, 14:00-19:00; Sat 11:00-13:00, 14:00-20:00; Sun off.

## Resources

| Resource |
| --- |
| Руслан, Рома |
| Руслан, Коан |
| Чугай, Рома |
| Змей, Рома |
| Джим, Угрюмый |
| Сидорович, Маст Дай |
| Чугай, Лестат |
| Rainbow, |
| Rainbow, Ефимов Владимир |
| Веня |
| Rainbow |
| Рома |
| Рома, Змей |
| Коан, Руслан |
| Маст Дай, Сидорович |
| Лестат, Чугай |
| Dima |
| Partizan |
| Sidorovich |
| Mustdie |
| Змей |
| Сидорович |

## Schedule

| ID | WBS | Task | Duration | Start | Finish | Predecessors | Total slack | Free slack | Resources | Work |
| --- | --- | --- | --- | --- | --- | --- | --- | --- | --- | --- |
| 2 | 1 | **01_Escape** | 11d? | 2005-01-24 | 2005-02-04 |  | 44d |  | Руслан, Рома | 128h |
| 3 | 1.1 | **LevelDesign** | 11d? | 2005-01-24 | 2005-02-04 |  | 44d |  |  |  |
| 4 | 1.1.1 | **Stage 1** | 11d? | 2005-01-24 | 2005-02-04 |  | 44d |  |  |  |
| 5 | 1.1.1.1 | List of Changes | 2d | 2005-01-24 | 2005-01-25 |  | 44d | 0d |  |  |
| 6 | 1.1.1.2 | Changed Geometry | 1d? | 2005-01-26 | 2005-01-26 | 5 | 44d | 0d |  |  |
| 7 | 1.1.1.3 | Check List 1 | 1d? | 2005-01-27 | 2005-01-27 | 6 | 44d | 0d |  |  |
| 8 | 1.1.1.4 | Check List 2 | 1d? | 2005-01-28 | 2005-01-28 | 7 | 44d | 0d |  |  |
| 9 | 1.1.1.5 | Check List 3 | 1d? | 2005-01-29 | 2005-01-29 | 8 | 44d | 0d |  |  |
| 10 | 1.1.1.6 | Check List 4 | 1d? | 2005-01-31 | 2005-01-31 | 9 | 44d | 0d |  |  |
| 11 | 1.1.1.7 | Render Geometry | 1d? | 2005-02-01 | 2005-02-01 | 10 | 44d | 0d |  |  |
| 12 | 1.1.1.8 | Grass | 1d? | 2005-02-02 | 2005-02-02 | 11 | 44d | 0d |  |  |
| 13 | 1.1.1.9 | AI Maps | 1d? | 2005-02-03 | 2005-02-03 | 12 | 44d | 0d |  |  |
| 14 | 1.1.1.10 | Graphs | 1d? | 2005-02-04 | 2005-02-04 | 13 | 44d |  |  |  |
| 16 | 1.2 | **GameDesign** | 3d? | 2005-01-24 | 2005-01-26 |  | 52d |  |  |  |
| 17 | 1.2.1 | **Secrets** | 3d? | 2005-01-24 | 2005-01-26 |  | 52d |  |  |  |
| 18 | 1.2.1.1 | **Stage 1** | 3d? | 2005-01-24 | 2005-01-26 |  | 52d |  |  |  |
| 19 | 1.2.1.1.1 | Design | 1d? | 2005-01-24 | 2005-01-24 |  | 52d | 0d |  |  |
| 20 | 1.2.1.1.2 | Implementation | 1d? | 2005-01-25 | 2005-01-25 | 19 | 52d | 0d |  |  |
| 21 | 1.2.1.1.3 | Tuning | 1d? | 2005-01-26 | 2005-01-26 | 20 | 52d |  |  |  |
| 22 | 1.2.2 | **Smartterrains** | 3d? | 2005-01-24 | 2005-01-26 |  | 52d |  |  |  |
| 23 | 1.2.2.1 | **Stage 1** | 3d? | 2005-01-24 | 2005-01-26 |  | 52d |  |  |  |
| 24 | 1.2.2.1.1 | Design | 1d? | 2005-01-24 | 2005-01-24 |  | 52d | 0d |  |  |
| 25 | 1.2.2.1.2 | Implementation | 1d? | 2005-01-25 | 2005-01-25 | 24 | 52d | 0d |  |  |
| 26 | 1.2.2.1.3 | Tuning | 1d? | 2005-01-26 | 2005-01-26 | 25 | 52d |  |  |  |

| ID | WBS | Task | Duration | Start | Finish | Predecessors | Total slack | Free slack | Work |
| --- | --- | --- | --- | --- | --- | --- | --- | --- | --- |
| 27 | 1.2.3 | **Monsters/Spawns** | 3d? | 2005-01-24 | 2005-01-26 |  | 52d |  |  |
| 28 | 1.2.3.1 | **Stage 1** | 3d? | 2005-01-24 | 2005-01-26 |  | 52d |  |  |
| 29 | 1.2.3.1.1 | Design | 1d? | 2005-01-24 | 2005-01-24 |  | 52d | 0d |  |
| 30 | 1.2.3.1.2 | Implementation | 1d? | 2005-01-25 | 2005-01-25 | 29 | 52d | 0d |  |
| 31 | 1.2.3.1.3 | Tuning | 1d? | 2005-01-26 | 2005-01-26 | 30 | 52d |  |  |
| 32 | 1.2.4 | **Stalkers/Spawns** | 3d? | 2005-01-24 | 2005-01-26 |  | 52d |  |  |
| 33 | 1.2.4.1 | **Stage 1** | 3d? | 2005-01-24 | 2005-01-26 |  | 52d |  |  |
| 34 | 1.2.4.1.1 | Design | 1d? | 2005-01-24 | 2005-01-24 |  | 52d | 0d |  |
| 35 | 1.2.4.1.2 | Implementation | 1d? | 2005-01-25 | 2005-01-25 | 34 | 52d | 0d |  |
| 36 | 1.2.4.1.3 | Tuning | 1d? | 2005-01-26 | 2005-01-26 | 35 | 52d |  |  |
| 37 | 1.2.5 | **Anomalies/Spawns** | 3d? | 2005-01-24 | 2005-01-26 |  | 52d |  |  |
| 38 | 1.2.5.1 | **Stage 1** | 3d? | 2005-01-24 | 2005-01-26 |  | 52d |  |  |
| 39 | 1.2.5.1.1 | Design | 1d? | 2005-01-24 | 2005-01-24 |  | 52d | 0d |  |
| 40 | 1.2.5.1.2 | Implementation | 1d? | 2005-01-25 | 2005-01-25 | 39 | 52d | 0d |  |
| 41 | 1.2.5.1.3 | Tuning | 1d? | 2005-01-26 | 2005-01-26 | 40 | 52d |  |  |
| 42 | 1.2.6 | **Physicks** | 3d? | 2005-01-24 | 2005-01-26 |  | 52d |  |  |
| 43 | 1.2.6.1 | **Stage 1** | 3d? | 2005-01-24 | 2005-01-26 |  | 52d |  |  |
| 44 | 1.2.6.1.1 | Design | 1d? | 2005-01-24 | 2005-01-24 |  | 52d | 0d |  |
| 45 | 1.2.6.1.2 | Implementation | 1d? | 2005-01-25 | 2005-01-25 | 44 | 52d | 0d |  |
| 46 | 1.2.6.1.3 | Tuning | 1d? | 2005-01-26 | 2005-01-26 | 45 | 52d |  |  |
| 48 | 1.3 | **Scripts** | 3d? | 2005-01-24 | 2005-01-26 |  | 52d |  | 40h |
| 49 | 1.3.1 | Сценарий (текст) | 1d? | 2005-01-24 | 2005-01-24 |  | 54d |  |  |
| 50 | 1.3.2 | **Сцена 1 - Плоть рядом с аномалией** | 3d? | 2005-01-24 | 2005-01-26 |  | 52d |  | 16h |
| 51 | 1.3.2.1 | Постановка задач | 1d? | 2005-01-24 | 2005-01-24 |  | 52d | 0d |  |

| ID | WBS | Task | Duration | Start | Finish | Predecessors | Total slack | Free slack | Resources | Work |
| --- | --- | --- | --- | --- | --- | --- | --- | --- | --- | --- |
| 52 | 1.3.2.2 | **Реализация** | 1d? | 2005-01-25 | 2005-01-25 | 51 | 52d |  |  | 8h |
| 53 | 1.3.2.2.1 | Доработка X в движке | 1d? | 2005-01-25 | 2005-01-25 |  | 52d | 0d | Dima | 8h |
| 54 | 1.3.2.3 | **Тестирование** | 1d? | 2005-01-26 | 2005-01-26 | 53 | 52d |  |  | 8h |
| 55 | 1.3.2.3.1 | Проверить расстановку AI нод вокруг дерева | 1d? | 2005-01-26 | 2005-01-26 |  | 52d |  | Partizan | 8h |
| 56 | 1.3.3 | **Сцена 2 - Кабаны играют в футбол** | 3d? | 2005-01-24 | 2005-01-26 |  | 52d |  |  | 24h |
| 57 | 1.3.3.1 | Постановка задач | 1d? | 2005-01-24 | 2005-01-24 |  | 52d | 0d |  |  |
| 58 | 1.3.3.2 | **Реализация** | 1d? | 2005-01-25 | 2005-01-25 | 57 | 52d |  |  | 16h |
| 59 | 1.3.3.2.1 | Написать схему mob_kicker | 1d? | 2005-01-25 | 2005-01-25 |  | 52d | 0d | Сидорович | 8h |
| 60 | 1.3.3.2.2 | Установить и настроить схему на Escape | 1d? | 2005-01-25 | 2005-01-25 |  | 53d |  | Mustdie | 8h |
| 61 | 1.3.3.3 | **Тестирование** | 1d? | 2005-01-26 | 2005-01-26 | 59 | 52d |  |  | 8h |
| 62 | 1.3.3.3.1 | Отсутствие визуальных дефектов | 1d? | 2005-01-26 | 2005-01-26 |  | 52d |  | Partizan | 8h |
| 64 | 2 | **02_Garbage** | 11d? | 2005-01-24 | 2005-02-04 |  | 44d |  | Руслан, Коан | 88h |
| 65 | 2.1 | **LevelDesign** | 11d? | 2005-01-24 | 2005-02-04 |  | 44d |  |  |  |
| 66 | 2.1.1 | **Stage 1** | 11d? | 2005-01-24 | 2005-02-04 |  | 44d |  |  |  |
| 67 | 2.1.1.1 | List of Changes | 2d | 2005-01-24 | 2005-01-25 |  | 44d | 0d |  |  |
| 68 | 2.1.1.2 | Changed Geometry | 1d? | 2005-01-26 | 2005-01-26 | 67 | 44d | 0d |  |  |
| 69 | 2.1.1.3 | Check List 1 | 1d? | 2005-01-27 | 2005-01-27 | 68 | 44d | 0d |  |  |
| 70 | 2.1.1.4 | Check List 2 | 1d? | 2005-01-28 | 2005-01-28 | 69 | 44d | 0d |  |  |
| 71 | 2.1.1.5 | Check List 3 | 1d? | 2005-01-29 | 2005-01-29 | 70 | 44d | 0d |  |  |
| 72 | 2.1.1.6 | Check List 4 | 1d? | 2005-01-31 | 2005-01-31 | 71 | 44d | 0d |  |  |
| 73 | 2.1.1.7 | Render Geometry | 1d? | 2005-02-01 | 2005-02-01 | 72 | 44d | 0d |  |  |
| 74 | 2.1.1.8 | Grass | 1d? | 2005-02-02 | 2005-02-02 | 73 | 44d | 0d |  |  |
| 75 | 2.1.1.9 | AI Maps | 1d? | 2005-02-03 | 2005-02-03 | 74 | 44d | 0d |  |  |
| 76 | 2.1.1.10 | Graphs | 1d? | 2005-02-04 | 2005-02-04 | 75 | 44d |  |  |  |

Notes:
- 57: Два кабана по очереди пинают труп, стараясь не выходить далеко за пределы указанной на уровне зоны. При появлении игрока атакуют его.

| ID | WBS | Task | Duration | Start | Finish | Predecessors | Total slack | Free slack |
| --- | --- | --- | --- | --- | --- | --- | --- | --- |
| 78 | 2.2 | **GameDesign** | 3d? | 2005-01-24 | 2005-01-26 |  | 52d |  |
| 79 | 2.2.1 | **Secrets** | 3d? | 2005-01-24 | 2005-01-26 |  | 52d |  |
| 80 | 2.2.1.1 | **Stage 1** | 3d? | 2005-01-24 | 2005-01-26 |  | 52d |  |
| 81 | 2.2.1.1.1 | Design | 1d? | 2005-01-24 | 2005-01-24 |  | 52d | 0d |
| 82 | 2.2.1.1.2 | Implementation | 1d? | 2005-01-25 | 2005-01-25 | 81 | 52d | 0d |
| 83 | 2.2.1.1.3 | Tuning | 1d? | 2005-01-26 | 2005-01-26 | 82 | 52d |  |
| 84 | 2.2.2 | **Smartterrains** | 3d? | 2005-01-24 | 2005-01-26 |  | 52d |  |
| 85 | 2.2.2.1 | **Stage 1** | 3d? | 2005-01-24 | 2005-01-26 |  | 52d |  |
| 86 | 2.2.2.1.1 | Design | 1d? | 2005-01-24 | 2005-01-24 |  | 52d | 0d |
| 87 | 2.2.2.1.2 | Implementation | 1d? | 2005-01-25 | 2005-01-25 | 86 | 52d | 0d |
| 88 | 2.2.2.1.3 | Tuning | 1d? | 2005-01-26 | 2005-01-26 | 87 | 52d |  |
| 89 | 2.2.3 | **Monsters/Spawns** | 3d? | 2005-01-24 | 2005-01-26 |  | 52d |  |
| 90 | 2.2.3.1 | **Stage 1** | 3d? | 2005-01-24 | 2005-01-26 |  | 52d |  |
| 91 | 2.2.3.1.1 | Design | 1d? | 2005-01-24 | 2005-01-24 |  | 52d | 0d |
| 92 | 2.2.3.1.2 | Implementation | 1d? | 2005-01-25 | 2005-01-25 | 91 | 52d | 0d |
| 93 | 2.2.3.1.3 | Tuning | 1d? | 2005-01-26 | 2005-01-26 | 92 | 52d |  |
| 94 | 2.2.4 | **Stalkers/Spawns** | 3d? | 2005-01-24 | 2005-01-26 |  | 52d |  |
| 95 | 2.2.4.1 | **Stage 1** | 3d? | 2005-01-24 | 2005-01-26 |  | 52d |  |
| 96 | 2.2.4.1.1 | Design | 1d? | 2005-01-24 | 2005-01-24 |  | 52d | 0d |
| 97 | 2.2.4.1.2 | Implementation | 1d? | 2005-01-25 | 2005-01-25 | 96 | 52d | 0d |
| 98 | 2.2.4.1.3 | Tuning | 1d? | 2005-01-26 | 2005-01-26 | 97 | 52d |  |
| 99 | 2.2.5 | **Anomalies/Spawns** | 3d? | 2005-01-24 | 2005-01-26 |  | 52d |  |
| 100 | 2.2.5.1 | **Stage 1** | 3d? | 2005-01-24 | 2005-01-26 |  | 52d |  |
| 101 | 2.2.5.1.1 | Design | 1d? | 2005-01-24 | 2005-01-24 |  | 52d | 0d |
| 102 | 2.2.5.1.2 | Implementation | 1d? | 2005-01-25 | 2005-01-25 | 101 | 52d | 0d |
| 103 | 2.2.5.1.3 | Tuning | 1d? | 2005-01-26 | 2005-01-26 | 102 | 52d |  |

| ID | WBS | Task | Duration | Start | Finish | Predecessors | Total slack | Free slack |
| --- | --- | --- | --- | --- | --- | --- | --- | --- |
| 104 | 2.2.6 | **Physicks** | 3d? | 2005-01-24 | 2005-01-26 |  | 52d |  |
| 105 | 2.2.6.1 | **Stage 1** | 3d? | 2005-01-24 | 2005-01-26 |  | 52d |  |
| 106 | 2.2.6.1.1 | Design | 1d? | 2005-01-24 | 2005-01-24 |  | 52d | 0d |
| 107 | 2.2.6.1.2 | Implementation | 1d? | 2005-01-25 | 2005-01-25 | 106 | 52d | 0d |
| 108 | 2.2.6.1.3 | Tuning | 1d? | 2005-01-26 | 2005-01-26 | 107 | 52d |  |
| 110 | 2.3 | **Scripts** | 5d? | 2005-01-24 | 2005-01-28 |  | 50d |  |
| 111 | 2.3.1 | **Script 1** | 5d? | 2005-01-24 | 2005-01-28 |  | 50d |  |
| 112 | 2.3.1.1 | Scenario(text) | 1d? | 2005-01-24 | 2005-01-24 |  | 50d | 0d |
| 113 | 2.3.1.2 | Постановка задач | 1d? | 2005-01-25 | 2005-01-25 | 112 | 50d | 0d |
| 114 | 2.3.1.3 | Implimentation | 1d? | 2005-01-26 | 2005-01-26 | 113 | 50d | 0d |
| 115 | 2.3.1.4 | Dilogs/VO/Icons/Objects/Animations | 1d? | 2005-01-27 | 2005-01-27 | 114 | 50d | 0d |
| 116 | 2.3.1.5 | Настройка | 1d? | 2005-01-28 | 2005-01-28 | 115 | 50d |  |
| 117 | 2.3.2 | **Script 2** | 5d? | 2005-01-24 | 2005-01-28 |  | 50d |  |
| 118 | 2.3.2.1 | Scenario(text) | 1d? | 2005-01-24 | 2005-01-24 |  | 50d | 0d |
| 119 | 2.3.2.2 | Постановка задач | 1d? | 2005-01-25 | 2005-01-25 | 118 | 50d | 0d |
| 120 | 2.3.2.3 | Implimentation | 1d? | 2005-01-26 | 2005-01-26 | 119 | 50d | 0d |
| 121 | 2.3.2.4 | Dilogs/VO/Icons/Objects/Animations | 1d? | 2005-01-27 | 2005-01-27 | 120 | 50d | 0d |
| 122 | 2.3.2.5 | Настройка | 1d? | 2005-01-28 | 2005-01-28 | 121 | 50d |  |
| 123 | 2.3.3 | **Script 3** | 5d? | 2005-01-24 | 2005-01-28 |  | 50d |  |
| 124 | 2.3.3.1 | Scenario(text) | 1d? | 2005-01-24 | 2005-01-24 |  | 50d | 0d |
| 125 | 2.3.3.2 | Постановка задач | 1d? | 2005-01-25 | 2005-01-25 | 124 | 50d | 0d |
| 126 | 2.3.3.3 | Implimentation | 1d? | 2005-01-26 | 2005-01-26 | 125 | 50d | 0d |
| 127 | 2.3.3.4 | Dilogs/VO/Icons/Objects/Animations | 1d? | 2005-01-27 | 2005-01-27 | 126 | 50d | 0d |
| 128 | 2.3.3.5 | Настройка | 1d? | 2005-01-28 | 2005-01-28 | 127 | 50d |  |

| ID | WBS | Task | Duration | Start | Finish | Predecessors | Total slack | Free slack | Resources | Work |
| --- | --- | --- | --- | --- | --- | --- | --- | --- | --- | --- |
| 129 | 2.3.4 | **Script 4** | 5d? | 2005-01-24 | 2005-01-28 |  | 50d |  |  |  |
| 130 | 2.3.4.1 | Scenario(text) | 1d? | 2005-01-24 | 2005-01-24 |  | 50d | 0d |  |  |
| 131 | 2.3.4.2 | Постановка задач | 1d? | 2005-01-25 | 2005-01-25 | 130 | 50d | 0d |  |  |
| 132 | 2.3.4.3 | Implimentation | 1d? | 2005-01-26 | 2005-01-26 | 131 | 50d | 0d |  |  |
| 133 | 2.3.4.4 | Dilogs/VO/Icons/Objects/Animations | 1d? | 2005-01-27 | 2005-01-27 | 132 | 50d | 0d |  |  |
| 134 | 2.3.4.5 | Настройка | 1d? | 2005-01-28 | 2005-01-28 | 133 | 50d |  |  |  |
| 135 | 2.3.5 | **Script 5** | 5d? | 2005-01-24 | 2005-01-28 |  | 50d |  |  |  |
| 136 | 2.3.5.1 | Scenario(text) | 1d? | 2005-01-24 | 2005-01-24 |  | 50d | 0d |  |  |
| 137 | 2.3.5.2 | Постановка задач | 1d? | 2005-01-25 | 2005-01-25 | 136 | 50d | 0d |  |  |
| 138 | 2.3.5.3 | Implimentation | 1d? | 2005-01-26 | 2005-01-26 | 137 | 50d | 0d |  |  |
| 139 | 2.3.5.4 | Dilogs/VO/Icons/Objects/Animations | 1d? | 2005-01-27 | 2005-01-27 | 138 | 50d | 0d |  |  |
| 140 | 2.3.5.5 | Настройка | 1d? | 2005-01-28 | 2005-01-28 | 139 | 50d |  |  |  |
| 142 | 3 | **03_Agroprom** | 11d? | 2005-01-24 | 2005-02-04 |  | 44d |  | Чугай, Рома | 88h |
| 143 | 3.1 | **LevelDesign** | 11d? | 2005-01-24 | 2005-02-04 |  | 44d |  |  |  |
| 144 | 3.1.1 | **Stage 1** | 11d? | 2005-01-24 | 2005-02-04 |  | 44d |  |  |  |
| 145 | 3.1.1.1 | List of Changes | 2d | 2005-01-24 | 2005-01-25 |  | 44d | 0d |  |  |
| 146 | 3.1.1.2 | Changed Geometry | 1d? | 2005-01-26 | 2005-01-26 | 145 | 44d | 0d |  |  |
| 147 | 3.1.1.3 | Check List 1 | 1d? | 2005-01-27 | 2005-01-27 | 146 | 44d | 0d |  |  |
| 148 | 3.1.1.4 | Check List 2 | 1d? | 2005-01-28 | 2005-01-28 | 147 | 44d | 0d |  |  |
| 149 | 3.1.1.5 | Check List 3 | 1d? | 2005-01-29 | 2005-01-29 | 148 | 44d | 0d |  |  |
| 150 | 3.1.1.6 | Check List 4 | 1d? | 2005-01-31 | 2005-01-31 | 149 | 44d | 0d |  |  |
| 151 | 3.1.1.7 | Render Geometry | 1d? | 2005-02-01 | 2005-02-01 | 150 | 44d | 0d |  |  |
| 152 | 3.1.1.8 | Grass | 1d? | 2005-02-02 | 2005-02-02 | 151 | 44d | 0d |  |  |
| 153 | 3.1.1.9 | AI Maps | 1d? | 2005-02-03 | 2005-02-03 | 152 | 44d | 0d |  |  |
| 154 | 3.1.1.10 | Graphs | 1d? | 2005-02-04 | 2005-02-04 | 153 | 44d |  |  |  |

| ID | WBS | Task | Duration | Start | Finish | Predecessors | Total slack | Free slack |
| --- | --- | --- | --- | --- | --- | --- | --- | --- |
| 156 | 3.2 | **GameDesign** | 3d? | 2005-01-24 | 2005-01-26 |  | 52d |  |
| 157 | 3.2.1 | **Secrets** | 3d? | 2005-01-24 | 2005-01-26 |  | 52d |  |
| 158 | 3.2.1.1 | **Stage 1** | 3d? | 2005-01-24 | 2005-01-26 |  | 52d |  |
| 159 | 3.2.1.1.1 | Design | 1d? | 2005-01-24 | 2005-01-24 |  | 52d | 0d |
| 160 | 3.2.1.1.2 | Implementation | 1d? | 2005-01-25 | 2005-01-25 | 159 | 52d | 0d |
| 161 | 3.2.1.1.3 | Tuning | 1d? | 2005-01-26 | 2005-01-26 | 160 | 52d |  |
| 162 | 3.2.2 | **Smartterrains** | 3d? | 2005-01-24 | 2005-01-26 |  | 52d |  |
| 163 | 3.2.2.1 | **Stage 1** | 3d? | 2005-01-24 | 2005-01-26 |  | 52d |  |
| 164 | 3.2.2.1.1 | Design | 1d? | 2005-01-24 | 2005-01-24 |  | 52d | 0d |
| 165 | 3.2.2.1.2 | Implementation | 1d? | 2005-01-25 | 2005-01-25 | 164 | 52d | 0d |
| 166 | 3.2.2.1.3 | Tuning | 1d? | 2005-01-26 | 2005-01-26 | 165 | 52d |  |
| 167 | 3.2.3 | **Monsters/Spawns** | 3d? | 2005-01-24 | 2005-01-26 |  | 52d |  |
| 168 | 3.2.3.1 | **Stage 1** | 3d? | 2005-01-24 | 2005-01-26 |  | 52d |  |
| 169 | 3.2.3.1.1 | Design | 1d? | 2005-01-24 | 2005-01-24 |  | 52d | 0d |
| 170 | 3.2.3.1.2 | Implementation | 1d? | 2005-01-25 | 2005-01-25 | 169 | 52d | 0d |
| 171 | 3.2.3.1.3 | Tuning | 1d? | 2005-01-26 | 2005-01-26 | 170 | 52d |  |
| 172 | 3.2.4 | **Stalkers/Spawns** | 3d? | 2005-01-24 | 2005-01-26 |  | 52d |  |
| 173 | 3.2.4.1 | **Stage 1** | 3d? | 2005-01-24 | 2005-01-26 |  | 52d |  |
| 174 | 3.2.4.1.1 | Design | 1d? | 2005-01-24 | 2005-01-24 |  | 52d | 0d |
| 175 | 3.2.4.1.2 | Implementation | 1d? | 2005-01-25 | 2005-01-25 | 174 | 52d | 0d |
| 176 | 3.2.4.1.3 | Tuning | 1d? | 2005-01-26 | 2005-01-26 | 175 | 52d |  |
| 177 | 3.2.5 | **Anomalies/Spawns** | 3d? | 2005-01-24 | 2005-01-26 |  | 52d |  |
| 178 | 3.2.5.1 | **Stage 1** | 3d? | 2005-01-24 | 2005-01-26 |  | 52d |  |
| 179 | 3.2.5.1.1 | Design | 1d? | 2005-01-24 | 2005-01-24 |  | 52d | 0d |
| 180 | 3.2.5.1.2 | Implementation | 1d? | 2005-01-25 | 2005-01-25 | 179 | 52d | 0d |
| 181 | 3.2.5.1.3 | Tuning | 1d? | 2005-01-26 | 2005-01-26 | 180 | 52d |  |

| ID | WBS | Task | Duration | Start | Finish | Predecessors | Total slack | Free slack |
| --- | --- | --- | --- | --- | --- | --- | --- | --- |
| 182 | 3.2.6 | **Physicks** | 3d? | 2005-01-24 | 2005-01-26 |  | 52d |  |
| 183 | 3.2.6.1 | **Stage 1** | 3d? | 2005-01-24 | 2005-01-26 |  | 52d |  |
| 184 | 3.2.6.1.1 | Design | 1d? | 2005-01-24 | 2005-01-24 |  | 52d | 0d |
| 185 | 3.2.6.1.2 | Implementation | 1d? | 2005-01-25 | 2005-01-25 | 184 | 52d | 0d |
| 186 | 3.2.6.1.3 | Tuning | 1d? | 2005-01-26 | 2005-01-26 | 185 | 52d |  |
| 188 | 3.3 | **Scripts** | 5d? | 2005-01-24 | 2005-01-28 |  | 50d |  |
| 189 | 3.3.1 | **Script 1** | 5d? | 2005-01-24 | 2005-01-28 |  | 50d |  |
| 190 | 3.3.1.1 | Scenario(text) | 1d? | 2005-01-24 | 2005-01-24 |  | 50d | 0d |
| 191 | 3.3.1.2 | Постановка задач | 1d? | 2005-01-25 | 2005-01-25 | 190 | 50d | 0d |
| 192 | 3.3.1.3 | Implimentation | 1d? | 2005-01-26 | 2005-01-26 | 191 | 50d | 0d |
| 193 | 3.3.1.4 | Dilogs/VO/Icons/Objects/Animations | 1d? | 2005-01-27 | 2005-01-27 | 192 | 50d | 0d |
| 194 | 3.3.1.5 | Настройка | 1d? | 2005-01-28 | 2005-01-28 | 193 | 50d |  |
| 195 | 3.3.2 | **Script 2** | 5d? | 2005-01-24 | 2005-01-28 |  | 50d |  |
| 196 | 3.3.2.1 | Scenario(text) | 1d? | 2005-01-24 | 2005-01-24 |  | 50d | 0d |
| 197 | 3.3.2.2 | Постановка задач | 1d? | 2005-01-25 | 2005-01-25 | 196 | 50d | 0d |
| 198 | 3.3.2.3 | Implimentation | 1d? | 2005-01-26 | 2005-01-26 | 197 | 50d | 0d |
| 199 | 3.3.2.4 | Dilogs/VO/Icons/Objects/Animations | 1d? | 2005-01-27 | 2005-01-27 | 198 | 50d | 0d |
| 200 | 3.3.2.5 | Настройка | 1d? | 2005-01-28 | 2005-01-28 | 199 | 50d |  |
| 201 | 3.3.3 | **Script 3** | 5d? | 2005-01-24 | 2005-01-28 |  | 50d |  |
| 202 | 3.3.3.1 | Scenario(text) | 1d? | 2005-01-24 | 2005-01-24 |  | 50d | 0d |
| 203 | 3.3.3.2 | Постановка задач | 1d? | 2005-01-25 | 2005-01-25 | 202 | 50d | 0d |
| 204 | 3.3.3.3 | Implimentation | 1d? | 2005-01-26 | 2005-01-26 | 203 | 50d | 0d |
| 205 | 3.3.3.4 | Dilogs/VO/Icons/Objects/Animations | 1d? | 2005-01-27 | 2005-01-27 | 204 | 50d | 0d |
| 206 | 3.3.3.5 | Настройка | 1d? | 2005-01-28 | 2005-01-28 | 205 | 50d |  |

| ID | WBS | Task | Duration | Start | Finish | Predecessors | Total slack | Free slack | Resources | Work |
| --- | --- | --- | --- | --- | --- | --- | --- | --- | --- | --- |
| 207 | 3.3.4 | **Script 4** | 5d? | 2005-01-24 | 2005-01-28 |  | 50d |  |  |  |
| 208 | 3.3.4.1 | Scenario(text) | 1d? | 2005-01-24 | 2005-01-24 |  | 50d | 0d |  |  |
| 209 | 3.3.4.2 | Постановка задач | 1d? | 2005-01-25 | 2005-01-25 | 208 | 50d | 0d |  |  |
| 210 | 3.3.4.3 | Implimentation | 1d? | 2005-01-26 | 2005-01-26 | 209 | 50d | 0d |  |  |
| 211 | 3.3.4.4 | Dilogs/VO/Icons/Objects/Animations | 1d? | 2005-01-27 | 2005-01-27 | 210 | 50d | 0d |  |  |
| 212 | 3.3.4.5 | Настройка | 1d? | 2005-01-28 | 2005-01-28 | 211 | 50d |  |  |  |
| 213 | 3.3.5 | **Script 5** | 5d? | 2005-01-24 | 2005-01-28 |  | 50d |  |  |  |
| 214 | 3.3.5.1 | Scenario(text) | 1d? | 2005-01-24 | 2005-01-24 |  | 50d | 0d |  |  |
| 215 | 3.3.5.2 | Постановка задач | 1d? | 2005-01-25 | 2005-01-25 | 214 | 50d | 0d |  |  |
| 216 | 3.3.5.3 | Implimentation | 1d? | 2005-01-26 | 2005-01-26 | 215 | 50d | 0d |  |  |
| 217 | 3.3.5.4 | Dilogs/VO/Icons/Objects/Animations | 1d? | 2005-01-27 | 2005-01-27 | 216 | 50d | 0d |  |  |
| 218 | 3.3.5.5 | Настройка | 1d? | 2005-01-28 | 2005-01-28 | 217 | 50d |  |  |  |
| 220 | 4 | **04_Agroprom_Underground** | 11d? | 2005-01-24 | 2005-02-04 |  | 44d |  | Чугай, Рома | 88h |
| 221 | 4.1 | **LevelDesign** | 11d? | 2005-01-24 | 2005-02-04 |  | 44d |  |  |  |
| 222 | 4.1.1 | **Stage 1** | 11d? | 2005-01-24 | 2005-02-04 |  | 44d |  |  |  |
| 223 | 4.1.1.1 | List of Changes | 2d | 2005-01-24 | 2005-01-25 |  | 44d | 0d |  |  |
| 224 | 4.1.1.2 | Changed Geometry | 1d? | 2005-01-26 | 2005-01-26 | 223 | 44d | 0d |  |  |
| 225 | 4.1.1.3 | Check List 1 | 1d? | 2005-01-27 | 2005-01-27 | 224 | 44d | 0d |  |  |
| 226 | 4.1.1.4 | Check List 2 | 1d? | 2005-01-28 | 2005-01-28 | 225 | 44d | 0d |  |  |
| 227 | 4.1.1.5 | Check List 3 | 1d? | 2005-01-29 | 2005-01-29 | 226 | 44d | 0d |  |  |
| 228 | 4.1.1.6 | Check List 4 | 1d? | 2005-01-31 | 2005-01-31 | 227 | 44d | 0d |  |  |
| 229 | 4.1.1.7 | Render Geometry | 1d? | 2005-02-01 | 2005-02-01 | 228 | 44d | 0d |  |  |
| 230 | 4.1.1.8 | Grass | 1d? | 2005-02-02 | 2005-02-02 | 229 | 44d | 0d |  |  |
| 231 | 4.1.1.9 | AI Maps | 1d? | 2005-02-03 | 2005-02-03 | 230 | 44d | 0d |  |  |
| 232 | 4.1.1.10 | Graphs | 1d? | 2005-02-04 | 2005-02-04 | 231 | 44d |  |  |  |

| ID | WBS | Task | Duration | Start | Finish | Predecessors | Total slack | Free slack |
| --- | --- | --- | --- | --- | --- | --- | --- | --- |
| 234 | 4.2 | **GameDesign** | 3d? | 2005-01-24 | 2005-01-26 |  | 52d |  |
| 235 | 4.2.1 | **Secrets** | 3d? | 2005-01-24 | 2005-01-26 |  | 52d |  |
| 236 | 4.2.1.1 | **Stage 1** | 3d? | 2005-01-24 | 2005-01-26 |  | 52d |  |
| 237 | 4.2.1.1.1 | Design | 1d? | 2005-01-24 | 2005-01-24 |  | 52d | 0d |
| 238 | 4.2.1.1.2 | Implementation | 1d? | 2005-01-25 | 2005-01-25 | 237 | 52d | 0d |
| 239 | 4.2.1.1.3 | Tuning | 1d? | 2005-01-26 | 2005-01-26 | 238 | 52d |  |
| 240 | 4.2.2 | **Smartterrains** | 3d? | 2005-01-24 | 2005-01-26 |  | 52d |  |
| 241 | 4.2.2.1 | **Stage 1** | 3d? | 2005-01-24 | 2005-01-26 |  | 52d |  |
| 242 | 4.2.2.1.1 | Design | 1d? | 2005-01-24 | 2005-01-24 |  | 52d | 0d |
| 243 | 4.2.2.1.2 | Implementation | 1d? | 2005-01-25 | 2005-01-25 | 242 | 52d | 0d |
| 244 | 4.2.2.1.3 | Tuning | 1d? | 2005-01-26 | 2005-01-26 | 243 | 52d |  |
| 245 | 4.2.3 | **Monsters/Spawns** | 3d? | 2005-01-24 | 2005-01-26 |  | 52d |  |
| 246 | 4.2.3.1 | **Stage 1** | 3d? | 2005-01-24 | 2005-01-26 |  | 52d |  |
| 247 | 4.2.3.1.1 | Design | 1d? | 2005-01-24 | 2005-01-24 |  | 52d | 0d |
| 248 | 4.2.3.1.2 | Implementation | 1d? | 2005-01-25 | 2005-01-25 | 247 | 52d | 0d |
| 249 | 4.2.3.1.3 | Tuning | 1d? | 2005-01-26 | 2005-01-26 | 248 | 52d |  |
| 250 | 4.2.4 | **Stalkers/Spawns** | 3d? | 2005-01-24 | 2005-01-26 |  | 52d |  |
| 251 | 4.2.4.1 | **Stage 1** | 3d? | 2005-01-24 | 2005-01-26 |  | 52d |  |
| 252 | 4.2.4.1.1 | Design | 1d? | 2005-01-24 | 2005-01-24 |  | 52d | 0d |
| 253 | 4.2.4.1.2 | Implementation | 1d? | 2005-01-25 | 2005-01-25 | 252 | 52d | 0d |
| 254 | 4.2.4.1.3 | Tuning | 1d? | 2005-01-26 | 2005-01-26 | 253 | 52d |  |
| 255 | 4.2.5 | **Anomalies/Spawns** | 3d? | 2005-01-24 | 2005-01-26 |  | 52d |  |
| 256 | 4.2.5.1 | **Stage 1** | 3d? | 2005-01-24 | 2005-01-26 |  | 52d |  |
| 257 | 4.2.5.1.1 | Design | 1d? | 2005-01-24 | 2005-01-24 |  | 52d | 0d |
| 258 | 4.2.5.1.2 | Implementation | 1d? | 2005-01-25 | 2005-01-25 | 257 | 52d | 0d |
| 259 | 4.2.5.1.3 | Tuning | 1d? | 2005-01-26 | 2005-01-26 | 258 | 52d |  |

| ID | WBS | Task | Duration | Start | Finish | Predecessors | Total slack | Free slack |
| --- | --- | --- | --- | --- | --- | --- | --- | --- |
| 260 | 4.2.6 | **Physicks** | 3d? | 2005-01-24 | 2005-01-26 |  | 52d |  |
| 261 | 4.2.6.1 | **Stage 1** | 3d? | 2005-01-24 | 2005-01-26 |  | 52d |  |
| 262 | 4.2.6.1.1 | Design | 1d? | 2005-01-24 | 2005-01-24 |  | 52d | 0d |
| 263 | 4.2.6.1.2 | Implementation | 1d? | 2005-01-25 | 2005-01-25 | 262 | 52d | 0d |
| 264 | 4.2.6.1.3 | Tuning | 1d? | 2005-01-26 | 2005-01-26 | 263 | 52d |  |
| 266 | 4.3 | **Scripts** | 5d? | 2005-01-24 | 2005-01-28 |  | 50d |  |
| 267 | 4.3.1 | **Script 1** | 5d? | 2005-01-24 | 2005-01-28 |  | 50d |  |
| 268 | 4.3.1.1 | Scenario(text) | 1d? | 2005-01-24 | 2005-01-24 |  | 50d | 0d |
| 269 | 4.3.1.2 | Постановка задач | 1d? | 2005-01-25 | 2005-01-25 | 268 | 50d | 0d |
| 270 | 4.3.1.3 | Implimentation | 1d? | 2005-01-26 | 2005-01-26 | 269 | 50d | 0d |
| 271 | 4.3.1.4 | Dilogs/VO/Icons/Objects/Animations | 1d? | 2005-01-27 | 2005-01-27 | 270 | 50d | 0d |
| 272 | 4.3.1.5 | Настройка | 1d? | 2005-01-28 | 2005-01-28 | 271 | 50d |  |
| 273 | 4.3.2 | **Script 2** | 5d? | 2005-01-24 | 2005-01-28 |  | 50d |  |
| 274 | 4.3.2.1 | Scenario(text) | 1d? | 2005-01-24 | 2005-01-24 |  | 50d | 0d |
| 275 | 4.3.2.2 | Постановка задач | 1d? | 2005-01-25 | 2005-01-25 | 274 | 50d | 0d |
| 276 | 4.3.2.3 | Implimentation | 1d? | 2005-01-26 | 2005-01-26 | 275 | 50d | 0d |
| 277 | 4.3.2.4 | Dilogs/VO/Icons/Objects/Animations | 1d? | 2005-01-27 | 2005-01-27 | 276 | 50d | 0d |
| 278 | 4.3.2.5 | Настройка | 1d? | 2005-01-28 | 2005-01-28 | 277 | 50d |  |
| 279 | 4.3.3 | **Script 3** | 5d? | 2005-01-24 | 2005-01-28 |  | 50d |  |
| 280 | 4.3.3.1 | Scenario(text) | 1d? | 2005-01-24 | 2005-01-24 |  | 50d | 0d |
| 281 | 4.3.3.2 | Постановка задач | 1d? | 2005-01-25 | 2005-01-25 | 280 | 50d | 0d |
| 282 | 4.3.3.3 | Implimentation | 1d? | 2005-01-26 | 2005-01-26 | 281 | 50d | 0d |
| 283 | 4.3.3.4 | Dilogs/VO/Icons/Objects/Animations | 1d? | 2005-01-27 | 2005-01-27 | 282 | 50d | 0d |
| 284 | 4.3.3.5 | Настройка | 1d? | 2005-01-28 | 2005-01-28 | 283 | 50d |  |

| ID | WBS | Task | Duration | Start | Finish | Predecessors | Total slack | Free slack | Constraint | Deadline | Resources | Work |
| --- | --- | --- | --- | --- | --- | --- | --- | --- | --- | --- | --- | --- |
| 285 | 4.3.4 | **Script 4** | 5d? | 2005-01-24 | 2005-01-28 |  | 50d |  |  |  |  |  |
| 286 | 4.3.4.1 | Scenario(text) | 1d? | 2005-01-24 | 2005-01-24 |  | 50d | 0d |  |  |  |  |
| 287 | 4.3.4.2 | Постановка задач | 1d? | 2005-01-25 | 2005-01-25 | 286 | 50d | 0d |  |  |  |  |
| 288 | 4.3.4.3 | Implimentation | 1d? | 2005-01-26 | 2005-01-26 | 287 | 50d | 0d |  |  |  |  |
| 289 | 4.3.4.4 | Dilogs/VO/Icons/Objects/Animations | 1d? | 2005-01-27 | 2005-01-27 | 288 | 50d | 0d |  |  |  |  |
| 290 | 4.3.4.5 | Настройка | 1d? | 2005-01-28 | 2005-01-28 | 289 | 50d |  |  |  |  |  |
| 291 | 4.3.5 | **Script 5** | 5d? | 2005-01-24 | 2005-01-28 |  | 50d |  |  |  |  |  |
| 292 | 4.3.5.1 | Scenario(text) | 1d? | 2005-01-24 | 2005-01-24 |  | 50d | 0d |  |  |  |  |
| 293 | 4.3.5.2 | Постановка задач | 1d? | 2005-01-25 | 2005-01-25 | 292 | 50d | 0d |  |  |  |  |
| 294 | 4.3.5.3 | Implimentation | 1d? | 2005-01-26 | 2005-01-26 | 293 | 50d | 0d |  |  |  |  |
| 295 | 4.3.5.4 | Dilogs/VO/Icons/Objects/Animations | 1d? | 2005-01-27 | 2005-01-27 | 294 | 50d | 0d |  |  |  |  |
| 296 | 4.3.5.5 | Настройка | 1d? | 2005-01-28 | 2005-01-28 | 295 | 50d |  |  |  |  |  |
| 302 | 5 | **05_Dark_Valley** | 11d? | 2005-01-24 | 2005-02-04 |  | 1.88d | 0d |  | 2005-03-01 | Рома, Змей | 208h |
| 303 | 5.1 | **LevelDesign** | 11d? | 2005-01-24 | 2005-02-04 |  | 1.88d |  |  | 2005-02-07 | Rainbow, Ефимов Владимир | 88h |
| 304 | 5.1.1 | **Stage 1** | 11d? | 2005-01-24 | 2005-02-04 |  | 1.88d |  |  |  |  |  |
| 305 | 5.1.1.1 | List of Changes | 2d | 2005-01-24 | 2005-01-25 |  | 1.88d | 0d | start no earlier than 2005-01-24 |  |  |  |
| 306 | 5.1.1.2 | Changed Geometry | 1d? | 2005-01-26 | 2005-01-26 | 305 | 1.88d | 0d |  |  |  |  |
| 307 | 5.1.1.3 | Check List 1 | 1d? | 2005-01-27 | 2005-01-27 | 306 | 1.88d | 0d |  |  |  |  |
| 308 | 5.1.1.4 | Check List 2 | 1d? | 2005-01-28 | 2005-01-28 | 307 | 1.88d | 0d |  |  |  |  |
| 309 | 5.1.1.5 | Check List 3 | 1d? | 2005-01-29 | 2005-01-29 | 308 | 1.88d | 0d |  |  |  |  |
| 310 | 5.1.1.6 | Check List 4 | 1d? | 2005-01-31 | 2005-01-31 | 309 | 1.88d | 0d |  |  |  |  |
| 311 | 5.1.1.7 | Render Geometry | 1d? | 2005-02-01 | 2005-02-01 | 310 | 1.88d | 0d |  |  |  |  |
| 312 | 5.1.1.8 | Grass | 1d? | 2005-02-02 | 2005-02-02 | 311 | 1.88d | 0d |  |  |  |  |
| 313 | 5.1.1.9 | AI Maps | 1d? | 2005-02-03 | 2005-02-03 | 312 | 1.88d | 0d |  |  |  |  |
| 314 | 5.1.1.10 | Graphs | 1d? | 2005-02-04 | 2005-02-04 | 313 | 1.88d |  |  |  |  |  |

| ID | WBS | Task | Duration | Start | Finish | Predecessors | Total slack | Free slack |
| --- | --- | --- | --- | --- | --- | --- | --- | --- |
| 316 | 5.2 | **GameDesign** | 3d? | 2005-01-24 | 2005-01-26 |  | 17.88d |  |
| 317 | 5.2.1 | **Secrets** | 3d? | 2005-01-24 | 2005-01-26 |  | 17.88d |  |
| 318 | 5.2.1.1 | **Stage 1** | 3d? | 2005-01-24 | 2005-01-26 |  | 17.88d |  |
| 319 | 5.2.1.1.1 | Design | 1d? | 2005-01-24 | 2005-01-24 |  | 17.88d | 0d |
| 320 | 5.2.1.1.2 | Implementation | 1d? | 2005-01-25 | 2005-01-25 | 319 | 17.88d | 0d |
| 321 | 5.2.1.1.3 | Tuning | 1d? | 2005-01-26 | 2005-01-26 | 320 | 17.88d |  |
| 322 | 5.2.2 | **Smartterrains** | 3d? | 2005-01-24 | 2005-01-26 |  | 17.88d |  |
| 323 | 5.2.2.1 | **Stage 1** | 3d? | 2005-01-24 | 2005-01-26 |  | 17.88d |  |
| 324 | 5.2.2.1.1 | Design | 1d? | 2005-01-24 | 2005-01-24 |  | 17.88d | 0d |
| 325 | 5.2.2.1.2 | Implementation | 1d? | 2005-01-25 | 2005-01-25 | 324 | 17.88d | 0d |
| 326 | 5.2.2.1.3 | Tuning | 1d? | 2005-01-26 | 2005-01-26 | 325 | 17.88d |  |
| 327 | 5.2.3 | **Monsters/Spawns** | 3d? | 2005-01-24 | 2005-01-26 |  | 17.88d |  |
| 328 | 5.2.3.1 | **Stage 1** | 3d? | 2005-01-24 | 2005-01-26 |  | 17.88d |  |
| 329 | 5.2.3.1.1 | Design | 1d? | 2005-01-24 | 2005-01-24 |  | 17.88d | 0d |
| 330 | 5.2.3.1.2 | Implementation | 1d? | 2005-01-25 | 2005-01-25 | 329 | 17.88d | 0d |
| 331 | 5.2.3.1.3 | Tuning | 1d? | 2005-01-26 | 2005-01-26 | 330 | 17.88d |  |
| 332 | 5.2.4 | **Stalkers/Spawns** | 3d? | 2005-01-24 | 2005-01-26 |  | 17.88d |  |
| 333 | 5.2.4.1 | **Stage 1** | 3d? | 2005-01-24 | 2005-01-26 |  | 17.88d |  |
| 334 | 5.2.4.1.1 | Design | 1d? | 2005-01-24 | 2005-01-24 |  | 17.88d | 0d |
| 335 | 5.2.4.1.2 | Implementation | 1d? | 2005-01-25 | 2005-01-25 | 334 | 17.88d | 0d |
| 336 | 5.2.4.1.3 | Tuning | 1d? | 2005-01-26 | 2005-01-26 | 335 | 17.88d |  |
| 337 | 5.2.5 | **Anomalies/Spawns** | 3d? | 2005-01-24 | 2005-01-26 |  | 17.88d |  |
| 338 | 5.2.5.1 | **Stage 1** | 3d? | 2005-01-24 | 2005-01-26 |  | 17.88d |  |
| 339 | 5.2.5.1.1 | Design | 1d? | 2005-01-24 | 2005-01-24 |  | 17.88d | 0d |
| 340 | 5.2.5.1.2 | Implementation | 1d? | 2005-01-25 | 2005-01-25 | 339 | 17.88d | 0d |
| 341 | 5.2.5.1.3 | Tuning | 1d? | 2005-01-26 | 2005-01-26 | 340 | 17.88d |  |

| ID | WBS | Task | Duration | Start | Finish | Predecessors | Total slack | Free slack | Deadline | Resources | Work |
| --- | --- | --- | --- | --- | --- | --- | --- | --- | --- | --- | --- |
| 342 | 5.2.6 | **Physicks** | 3d? | 2005-01-24 | 2005-01-26 |  | 17.88d |  |  |  |  |
| 343 | 5.2.6.1 | **Stage 1** | 3d? | 2005-01-24 | 2005-01-26 |  | 17.88d |  |  |  |  |
| 344 | 5.2.6.1.1 | Design | 1d? | 2005-01-24 | 2005-01-24 |  | 17.88d | 0d |  |  |  |
| 345 | 5.2.6.1.2 | Implementation | 1d? | 2005-01-25 | 2005-01-25 | 344 | 17.88d | 0d |  |  |  |
| 346 | 5.2.6.1.3 | Tuning | 1d? | 2005-01-26 | 2005-01-26 | 345 | 17.88d |  |  |  |  |
| 348 | 5.3 | **Scripts** | 1d? | 2005-01-24 | 2005-01-24 |  | 19.88d |  |  |  | 32h |
| 349 | 5.3.1 | Сценарий (текст) | 1d? | 2005-01-24 | 2005-01-24 |  | 19.88d |  |  |  |  |
| 350 | 5.3.2 | **Сцена 1 - бандиты скармливают сталкера монстру в яме** | 1d? | 2005-01-24 | 2005-01-24 |  | 19.88d |  |  |  | 32h |
| 351 | 5.3.2.1 | Постановка задач | 1d? | 2005-01-24 | 2005-01-24 |  | 19.88d |  |  |  |  |
| 352 | 5.3.2.2 | **Реализация** | 1d? | 2005-01-24 | 2005-01-24 |  | 19.88d |  |  |  | 16h |
| 353 | 5.3.2.2.1 | Скрипт и диалоги общения пленника с игроком | 1d? | 2005-01-24 | 2005-01-24 |  | 19.88d |  |  | Рома, Змей | 8h |
| 354 | 5.3.2.2.2 | Сценка со сталкиванием в яму | 1d? | 2005-01-24 | 2005-01-24 |  | 19.88d |  |  | Рома, Змей | 8h |
| 355 | 5.3.2.3 | **Тестирование** | 1d? | 2005-01-24 | 2005-01-24 |  | 19.88d |  |  |  | 16h |
| 356 | 5.3.2.3.1 | Персонажи сцены не срываются по реакциям на звук и прочие раздражители | 1d? | 2005-01-24 | 2005-01-24 |  | 19.88d |  |  | Partizan | 8h |
| 357 | 5.3.2.3.2 | Убедиться, что жертва упадет в яму даже в режиме с медленными апдейтами | 1d? | 2005-01-24 | 2005-01-24 |  | 19.88d |  |  | Partizan | 8h |
| 359 | 6 | **18_Prypiat** | 11d? | 2005-02-05 | 2005-02-17 | 302 | 9.88d | 0d | 2005-04-01 | Рома, Змей | 176h |
| 360 | 6.1 | **LevelDesign** | 11d? | 2005-02-05 | 2005-02-17 |  | 9.88d |  | 2005-03-01 | Веня | 88h |
| 361 | 6.1.1 | **Stage 1** | 11d? | 2005-02-05 | 2005-02-17 |  | 9.88d |  |  |  |  |
| 362 | 6.1.1.1 | List of Changes | 2d | 2005-02-05 | 2005-02-07 |  | 9.88d | 0d |  |  |  |
| 363 | 6.1.1.2 | Changed Geometry | 1d? | 2005-02-08 | 2005-02-08 | 362 | 9.88d | 0d |  |  |  |
| 364 | 6.1.1.3 | Check List 1 | 1d? | 2005-02-09 | 2005-02-09 | 363 | 9.88d | 0d |  |  |  |
| 365 | 6.1.1.4 | Check List 2 | 1d? | 2005-02-10 | 2005-02-10 | 364 | 9.88d | 0d |  |  |  |
| 366 | 6.1.1.5 | Check List 3 | 1d? | 2005-02-11 | 2005-02-11 | 365 | 9.88d | 0d |  |  |  |
| 367 | 6.1.1.6 | Check List 4 | 1d? | 2005-02-12 | 2005-02-12 | 366 | 9.88d | 0d |  |  |  |
| 368 | 6.1.1.7 | Render Geometry | 1d? | 2005-02-14 | 2005-02-14 | 367 | 9.88d | 0d |  |  |  |
| 369 | 6.1.1.8 | Grass | 1d? | 2005-02-15 | 2005-02-15 | 368 | 9.88d | 0d |  |  |  |
| 370 | 6.1.1.9 | AI Maps | 1d? | 2005-02-16 | 2005-02-16 | 369 | 9.88d | 0d |  |  |  |
| 371 | 6.1.1.10 | Graphs | 1d? | 2005-02-17 | 2005-02-17 | 370 | 9.88d |  |  |  |  |

Notes:
- 351: Заключенный говорит: «Тсс! Сюда идут!» / В подвал входят несколько бандитов, которые ведут сталкера-новичка. / Они подводят его к отверстию в полу (отверстие плохо видно из окна, через которое игрок общался с заключенным, поэтому игрок может перейти к соседнему окну, где отломан кусок стены). / Перекидываются парой фраз «Ставлю 10 рублей, что ему оторвут голову», «Нет, он вообще превратится в кровавое месиво через 5 секунд», «Да хватит томить, толкайте его уже!». / Один из бандитов толкает новичка в яму [если будет плохо выглядеть - пусть не толкает, а стреляет в новичка]. / Бандиты некоторое время смотрит, что происходит в яме, потом уходят. / Тестирование: / Для активации сцены нужно подойти к окну и спрыгнуть в нишу около решетки. Место отмечено на карте отметкой "жертвоприношение".
- 353: Подойти к окну, когда игрок туда спрыгнул, отыгрывание фраз "сюда идут" и т.п.

| ID | WBS | Task | Duration | Start | Finish | Predecessors | Total slack | Free slack |
| --- | --- | --- | --- | --- | --- | --- | --- | --- |
| 373 | 6.2 | **GameDesign** | 3d? | 2005-02-05 | 2005-02-08 |  | 33.88d |  |
| 374 | 6.2.1 | **Secrets** | 3d? | 2005-02-05 | 2005-02-08 |  | 33.88d |  |
| 375 | 6.2.1.1 | **Stage 1** | 3d? | 2005-02-05 | 2005-02-08 |  | 33.88d |  |
| 376 | 6.2.1.1.1 | Design | 1d? | 2005-02-05 | 2005-02-05 |  | 33.88d | 0d |
| 377 | 6.2.1.1.2 | Implementation | 1d? | 2005-02-07 | 2005-02-07 | 376 | 33.88d | 0d |
| 378 | 6.2.1.1.3 | Tuning | 1d? | 2005-02-08 | 2005-02-08 | 377 | 33.88d |  |
| 379 | 6.2.2 | **Smartterrains** | 3d? | 2005-02-05 | 2005-02-08 |  | 33.88d |  |
| 380 | 6.2.2.1 | **Stage 1** | 3d? | 2005-02-05 | 2005-02-08 |  | 33.88d |  |
| 381 | 6.2.2.1.1 | Design | 1d? | 2005-02-05 | 2005-02-05 |  | 33.88d | 0d |
| 382 | 6.2.2.1.2 | Implementation | 1d? | 2005-02-07 | 2005-02-07 | 381 | 33.88d | 0d |
| 383 | 6.2.2.1.3 | Tuning | 1d? | 2005-02-08 | 2005-02-08 | 382 | 33.88d |  |
| 384 | 6.2.3 | **Monsters/Spawns** | 3d? | 2005-02-05 | 2005-02-08 |  | 33.88d |  |
| 385 | 6.2.3.1 | **Stage 1** | 3d? | 2005-02-05 | 2005-02-08 |  | 33.88d |  |
| 386 | 6.2.3.1.1 | Design | 1d? | 2005-02-05 | 2005-02-05 |  | 33.88d | 0d |
| 387 | 6.2.3.1.2 | Implementation | 1d? | 2005-02-07 | 2005-02-07 | 386 | 33.88d | 0d |
| 388 | 6.2.3.1.3 | Tuning | 1d? | 2005-02-08 | 2005-02-08 | 387 | 33.88d |  |
| 389 | 6.2.4 | **Stalkers/Spawns** | 3d? | 2005-02-05 | 2005-02-08 |  | 33.88d |  |
| 390 | 6.2.4.1 | **Stage 1** | 3d? | 2005-02-05 | 2005-02-08 |  | 33.88d |  |
| 391 | 6.2.4.1.1 | Design | 1d? | 2005-02-05 | 2005-02-05 |  | 33.88d | 0d |
| 392 | 6.2.4.1.2 | Implementation | 1d? | 2005-02-07 | 2005-02-07 | 391 | 33.88d | 0d |
| 393 | 6.2.4.1.3 | Tuning | 1d? | 2005-02-08 | 2005-02-08 | 392 | 33.88d |  |
| 394 | 6.2.5 | **Anomalies/Spawns** | 3d? | 2005-02-05 | 2005-02-08 |  | 33.88d |  |
| 395 | 6.2.5.1 | **Stage 1** | 3d? | 2005-02-05 | 2005-02-08 |  | 33.88d |  |
| 396 | 6.2.5.1.1 | Design | 1d? | 2005-02-05 | 2005-02-05 |  | 33.88d | 0d |
| 397 | 6.2.5.1.2 | Implementation | 1d? | 2005-02-07 | 2005-02-07 | 396 | 33.88d | 0d |
| 398 | 6.2.5.1.3 | Tuning | 1d? | 2005-02-08 | 2005-02-08 | 397 | 33.88d |  |

| ID | WBS | Task | Duration | Start | Finish | Predecessors | Total slack | Free slack |
| --- | --- | --- | --- | --- | --- | --- | --- | --- |
| 399 | 6.2.6 | **Physicks** | 3d? | 2005-02-05 | 2005-02-08 |  | 33.88d |  |
| 400 | 6.2.6.1 | **Stage 1** | 3d? | 2005-02-05 | 2005-02-08 |  | 33.88d |  |
| 401 | 6.2.6.1.1 | Design | 1d? | 2005-02-05 | 2005-02-05 |  | 33.88d | 0d |
| 402 | 6.2.6.1.2 | Implementation | 1d? | 2005-02-07 | 2005-02-07 | 401 | 33.88d | 0d |
| 403 | 6.2.6.1.3 | Tuning | 1d? | 2005-02-08 | 2005-02-08 | 402 | 33.88d |  |
| 405 | 6.3 | **Scripts** | 5d? | 2005-02-05 | 2005-02-10 |  | 31.88d |  |
| 406 | 6.3.1 | **Script 1** | 5d? | 2005-02-05 | 2005-02-10 |  | 31.88d |  |
| 407 | 6.3.1.1 | Scenario(text) | 1d? | 2005-02-05 | 2005-02-05 |  | 31.88d | 0d |
| 408 | 6.3.1.2 | Постановка задач | 1d? | 2005-02-07 | 2005-02-07 | 407 | 31.88d | 0d |
| 409 | 6.3.1.3 | Implimentation | 1d? | 2005-02-08 | 2005-02-08 | 408 | 31.88d | 0d |
| 410 | 6.3.1.4 | Dilogs/VO/Icons/Objects/Animations | 1d? | 2005-02-09 | 2005-02-09 | 409 | 31.88d | 0d |
| 411 | 6.3.1.5 | Настройка | 1d? | 2005-02-10 | 2005-02-10 | 410 | 31.88d |  |
| 412 | 6.3.2 | **Script 2** | 5d? | 2005-02-05 | 2005-02-10 |  | 31.88d |  |
| 413 | 6.3.2.1 | Scenario(text) | 1d? | 2005-02-05 | 2005-02-05 |  | 31.88d | 0d |
| 414 | 6.3.2.2 | Постановка задач | 1d? | 2005-02-07 | 2005-02-07 | 413 | 31.88d | 0d |
| 415 | 6.3.2.3 | Implimentation | 1d? | 2005-02-08 | 2005-02-08 | 414 | 31.88d | 0d |
| 416 | 6.3.2.4 | Dilogs/VO/Icons/Objects/Animations | 1d? | 2005-02-09 | 2005-02-09 | 415 | 31.88d | 0d |
| 417 | 6.3.2.5 | Настройка | 1d? | 2005-02-10 | 2005-02-10 | 416 | 31.88d |  |
| 418 | 6.3.3 | **Script 3** | 5d? | 2005-02-05 | 2005-02-10 |  | 31.88d |  |
| 419 | 6.3.3.1 | Scenario(text) | 1d? | 2005-02-05 | 2005-02-05 |  | 31.88d | 0d |
| 420 | 6.3.3.2 | Постановка задач | 1d? | 2005-02-07 | 2005-02-07 | 419 | 31.88d | 0d |
| 421 | 6.3.3.3 | Implimentation | 1d? | 2005-02-08 | 2005-02-08 | 420 | 31.88d | 0d |
| 422 | 6.3.3.4 | Dilogs/VO/Icons/Objects/Animations | 1d? | 2005-02-09 | 2005-02-09 | 421 | 31.88d | 0d |
| 423 | 6.3.3.5 | Настройка | 1d? | 2005-02-10 | 2005-02-10 | 422 | 31.88d |  |

| ID | WBS | Task | Duration | Start | Finish | Predecessors | Total slack | Free slack | Deadline | Resources | Work |
| --- | --- | --- | --- | --- | --- | --- | --- | --- | --- | --- | --- |
| 424 | 6.3.4 | **Script 4** | 5d? | 2005-02-05 | 2005-02-10 |  | 31.88d |  |  |  |  |
| 425 | 6.3.4.1 | Scenario(text) | 1d? | 2005-02-05 | 2005-02-05 |  | 31.88d | 0d |  |  |  |
| 426 | 6.3.4.2 | Постановка задач | 1d? | 2005-02-07 | 2005-02-07 | 425 | 31.88d | 0d |  |  |  |
| 427 | 6.3.4.3 | Implimentation | 1d? | 2005-02-08 | 2005-02-08 | 426 | 31.88d | 0d |  |  |  |
| 428 | 6.3.4.4 | Dilogs/VO/Icons/Objects/Animations | 1d? | 2005-02-09 | 2005-02-09 | 427 | 31.88d | 0d |  |  |  |
| 429 | 6.3.4.5 | Настройка | 1d? | 2005-02-10 | 2005-02-10 | 428 | 31.88d |  |  |  |  |
| 430 | 6.3.5 | **Script 5** | 5d? | 2005-02-05 | 2005-02-10 |  | 31.88d |  |  |  |  |
| 431 | 6.3.5.1 | Scenario(text) | 1d? | 2005-02-05 | 2005-02-05 |  | 31.88d | 0d |  |  |  |
| 432 | 6.3.5.2 | Постановка задач | 1d? | 2005-02-07 | 2005-02-07 | 431 | 31.88d | 0d |  |  |  |
| 433 | 6.3.5.3 | Implimentation | 1d? | 2005-02-08 | 2005-02-08 | 432 | 31.88d | 0d |  |  |  |
| 434 | 6.3.5.4 | Dilogs/VO/Icons/Objects/Animations | 1d? | 2005-02-09 | 2005-02-09 | 433 | 31.88d | 0d |  |  |  |
| 435 | 6.3.5.5 | Настройка | 1d? | 2005-02-10 | 2005-02-10 | 434 | 31.88d |  |  |  |  |
| 437 | 7 | **13_Dead_City** | 11d? | 2005-02-18 | 2005-03-02 | 359 | 25.88d |  | 2005-04-29 | Рома, Змей | 176h |
| 438 | 7.1 | **LevelDesign** | 11d? | 2005-02-18 | 2005-03-02 |  | 25.88d |  | 2005-04-01 | Rainbow | 88h |
| 439 | 7.1.1 | **Stage 1** | 11d? | 2005-02-18 | 2005-03-02 |  | 25.88d |  |  |  |  |
| 440 | 7.1.1.1 | List of Changes | 2d | 2005-02-18 | 2005-02-19 |  | 25.88d | 0d |  |  |  |
| 441 | 7.1.1.2 | Changed Geometry | 1d? | 2005-02-21 | 2005-02-21 | 440 | 25.88d | 0d |  |  |  |
| 442 | 7.1.1.3 | Check List 1 | 1d? | 2005-02-22 | 2005-02-22 | 441 | 25.88d | 0d |  |  |  |
| 443 | 7.1.1.4 | Check List 2 | 1d? | 2005-02-23 | 2005-02-23 | 442 | 25.88d | 0d |  |  |  |
| 444 | 7.1.1.5 | Check List 3 | 1d? | 2005-02-24 | 2005-02-24 | 443 | 25.88d | 0d |  |  |  |
| 445 | 7.1.1.6 | Check List 4 | 1d? | 2005-02-25 | 2005-02-25 | 444 | 25.88d | 0d |  |  |  |
| 446 | 7.1.1.7 | Render Geometry | 1d? | 2005-02-26 | 2005-02-26 | 445 | 25.88d | 0d |  |  |  |
| 447 | 7.1.1.8 | Grass | 1d? | 2005-02-28 | 2005-02-28 | 446 | 25.88d | 0d |  |  |  |
| 448 | 7.1.1.9 | AI Maps | 1d? | 2005-03-01 | 2005-03-01 | 447 | 25.88d | 0d |  |  |  |
| 449 | 7.1.1.10 | Graphs | 1d? | 2005-03-02 | 2005-03-02 | 448 | 25.88d |  |  |  |  |

| ID | WBS | Task | Duration | Start | Finish | Predecessors | Total slack | Free slack |
| --- | --- | --- | --- | --- | --- | --- | --- | --- |
| 451 | 7.2 | **GameDesign** | 3d? | 2005-02-18 | 2005-02-21 |  | 57.88d |  |
| 452 | 7.2.1 | **Secrets** | 3d? | 2005-02-18 | 2005-02-21 |  | 57.88d |  |
| 453 | 7.2.1.1 | **Stage 1** | 3d? | 2005-02-18 | 2005-02-21 |  | 57.88d |  |
| 454 | 7.2.1.1.1 | Design | 1d? | 2005-02-18 | 2005-02-18 |  | 57.88d | 0d |
| 455 | 7.2.1.1.2 | Implementation | 1d? | 2005-02-19 | 2005-02-19 | 454 | 57.88d | 0d |
| 456 | 7.2.1.1.3 | Tuning | 1d? | 2005-02-21 | 2005-02-21 | 455 | 57.88d |  |
| 457 | 7.2.2 | **Smartterrains** | 3d? | 2005-02-18 | 2005-02-21 |  | 57.88d |  |
| 458 | 7.2.2.1 | **Stage 1** | 3d? | 2005-02-18 | 2005-02-21 |  | 57.88d |  |
| 459 | 7.2.2.1.1 | Design | 1d? | 2005-02-18 | 2005-02-18 |  | 57.88d | 0d |
| 460 | 7.2.2.1.2 | Implementation | 1d? | 2005-02-19 | 2005-02-19 | 459 | 57.88d | 0d |
| 461 | 7.2.2.1.3 | Tuning | 1d? | 2005-02-21 | 2005-02-21 | 460 | 57.88d |  |
| 462 | 7.2.3 | **Monsters/Spawns** | 3d? | 2005-02-18 | 2005-02-21 |  | 57.88d |  |
| 463 | 7.2.3.1 | **Stage 1** | 3d? | 2005-02-18 | 2005-02-21 |  | 57.88d |  |
| 464 | 7.2.3.1.1 | Design | 1d? | 2005-02-18 | 2005-02-18 |  | 57.88d | 0d |
| 465 | 7.2.3.1.2 | Implementation | 1d? | 2005-02-19 | 2005-02-19 | 464 | 57.88d | 0d |
| 466 | 7.2.3.1.3 | Tuning | 1d? | 2005-02-21 | 2005-02-21 | 465 | 57.88d |  |
| 467 | 7.2.4 | **Stalkers/Spawns** | 3d? | 2005-02-18 | 2005-02-21 |  | 57.88d |  |
| 468 | 7.2.4.1 | **Stage 1** | 3d? | 2005-02-18 | 2005-02-21 |  | 57.88d |  |
| 469 | 7.2.4.1.1 | Design | 1d? | 2005-02-18 | 2005-02-18 |  | 57.88d | 0d |
| 470 | 7.2.4.1.2 | Implementation | 1d? | 2005-02-19 | 2005-02-19 | 469 | 57.88d | 0d |
| 471 | 7.2.4.1.3 | Tuning | 1d? | 2005-02-21 | 2005-02-21 | 470 | 57.88d |  |
| 472 | 7.2.5 | **Anomalies/Spawns** | 3d? | 2005-02-18 | 2005-02-21 |  | 57.88d |  |
| 473 | 7.2.5.1 | **Stage 1** | 3d? | 2005-02-18 | 2005-02-21 |  | 57.88d |  |
| 474 | 7.2.5.1.1 | Design | 1d? | 2005-02-18 | 2005-02-18 |  | 57.88d | 0d |
| 475 | 7.2.5.1.2 | Implementation | 1d? | 2005-02-19 | 2005-02-19 | 474 | 57.88d | 0d |
| 476 | 7.2.5.1.3 | Tuning | 1d? | 2005-02-21 | 2005-02-21 | 475 | 57.88d |  |

| ID | WBS | Task | Duration | Start | Finish | Predecessors | Total slack | Free slack |
| --- | --- | --- | --- | --- | --- | --- | --- | --- |
| 477 | 7.2.6 | **Physicks** | 3d? | 2005-02-18 | 2005-02-21 |  | 57.88d |  |
| 478 | 7.2.6.1 | **Stage 1** | 3d? | 2005-02-18 | 2005-02-21 |  | 57.88d |  |
| 479 | 7.2.6.1.1 | Design | 1d? | 2005-02-18 | 2005-02-18 |  | 57.88d | 0d |
| 480 | 7.2.6.1.2 | Implementation | 1d? | 2005-02-19 | 2005-02-19 | 479 | 57.88d | 0d |
| 481 | 7.2.6.1.3 | Tuning | 1d? | 2005-02-21 | 2005-02-21 | 480 | 57.88d |  |
| 483 | 7.3 | **Scripts** | 5d? | 2005-02-18 | 2005-02-23 |  | 55.88d |  |
| 484 | 7.3.1 | **Script 1** | 5d? | 2005-02-18 | 2005-02-23 |  | 55.88d |  |
| 485 | 7.3.1.1 | Scenario(text) | 1d? | 2005-02-18 | 2005-02-18 |  | 55.88d | 0d |
| 486 | 7.3.1.2 | Постановка задач | 1d? | 2005-02-19 | 2005-02-19 | 485 | 55.88d | 0d |
| 487 | 7.3.1.3 | Implimentation | 1d? | 2005-02-21 | 2005-02-21 | 486 | 55.88d | 0d |
| 488 | 7.3.1.4 | Dilogs/VO/Icons/Objects/Animations | 1d? | 2005-02-22 | 2005-02-22 | 487 | 55.88d | 0d |
| 489 | 7.3.1.5 | Настройка | 1d? | 2005-02-23 | 2005-02-23 | 488 | 55.88d |  |
| 490 | 7.3.2 | **Script 2** | 5d? | 2005-02-18 | 2005-02-23 |  | 55.88d |  |
| 491 | 7.3.2.1 | Scenario(text) | 1d? | 2005-02-18 | 2005-02-18 |  | 55.88d | 0d |
| 492 | 7.3.2.2 | Постановка задач | 1d? | 2005-02-19 | 2005-02-19 | 491 | 55.88d | 0d |
| 493 | 7.3.2.3 | Implimentation | 1d? | 2005-02-21 | 2005-02-21 | 492 | 55.88d | 0d |
| 494 | 7.3.2.4 | Dilogs/VO/Icons/Objects/Animations | 1d? | 2005-02-22 | 2005-02-22 | 493 | 55.88d | 0d |
| 495 | 7.3.2.5 | Настройка | 1d? | 2005-02-23 | 2005-02-23 | 494 | 55.88d |  |
| 496 | 7.3.3 | **Script 3** | 5d? | 2005-02-18 | 2005-02-23 |  | 55.88d |  |
| 497 | 7.3.3.1 | Scenario(text) | 1d? | 2005-02-18 | 2005-02-18 |  | 55.88d | 0d |
| 498 | 7.3.3.2 | Постановка задач | 1d? | 2005-02-19 | 2005-02-19 | 497 | 55.88d | 0d |
| 499 | 7.3.3.3 | Implimentation | 1d? | 2005-02-21 | 2005-02-21 | 498 | 55.88d | 0d |
| 500 | 7.3.3.4 | Dilogs/VO/Icons/Objects/Animations | 1d? | 2005-02-22 | 2005-02-22 | 499 | 55.88d | 0d |
| 501 | 7.3.3.5 | Настройка | 1d? | 2005-02-23 | 2005-02-23 | 500 | 55.88d |  |

| ID | WBS | Task | Duration | Start | Finish | Predecessors | Total slack | Free slack | Deadline | Resources | Work |
| --- | --- | --- | --- | --- | --- | --- | --- | --- | --- | --- | --- |
| 502 | 7.3.4 | **Script 4** | 5d? | 2005-02-18 | 2005-02-23 |  | 55.88d |  |  |  |  |
| 503 | 7.3.4.1 | Scenario(text) | 1d? | 2005-02-18 | 2005-02-18 |  | 55.88d | 0d |  |  |  |
| 504 | 7.3.4.2 | Постановка задач | 1d? | 2005-02-19 | 2005-02-19 | 503 | 55.88d | 0d |  |  |  |
| 505 | 7.3.4.3 | Implimentation | 1d? | 2005-02-21 | 2005-02-21 | 504 | 55.88d | 0d |  |  |  |
| 506 | 7.3.4.4 | Dilogs/VO/Icons/Objects/Animations | 1d? | 2005-02-22 | 2005-02-22 | 505 | 55.88d | 0d |  |  |  |
| 507 | 7.3.4.5 | Настройка | 1d? | 2005-02-23 | 2005-02-23 | 506 | 55.88d |  |  |  |  |
| 508 | 7.3.5 | **Script 5** | 5d? | 2005-02-18 | 2005-02-23 |  | 55.88d |  |  |  |  |
| 509 | 7.3.5.1 | Scenario(text) | 1d? | 2005-02-18 | 2005-02-18 |  | 55.88d | 0d |  |  |  |
| 510 | 7.3.5.2 | Постановка задач | 1d? | 2005-02-19 | 2005-02-19 | 509 | 55.88d | 0d |  |  |  |
| 511 | 7.3.5.3 | Implimentation | 1d? | 2005-02-21 | 2005-02-21 | 510 | 55.88d | 0d |  |  |  |
| 512 | 7.3.5.4 | Dilogs/VO/Icons/Objects/Animations | 1d? | 2005-02-22 | 2005-02-22 | 511 | 55.88d | 0d |  |  |  |
| 513 | 7.3.5.5 | Настройка | 1d? | 2005-02-23 | 2005-02-23 | 512 | 55.88d |  |  |  |  |
| 517 | 8 | **06_Dark_Valley_Underground** | 11d? | 2005-01-24 | 2005-02-04 |  | 1.88d | 0d | 2005-03-01 | Джим, Угрюмый | 88h |
| 518 | 8.1 | **LevelDesign** | 11d? | 2005-01-24 | 2005-02-04 |  | 1.88d |  | 2005-02-07 |  |  |
| 519 | 8.1.1 | **Stage 1** | 11d? | 2005-01-24 | 2005-02-04 |  | 1.88d |  |  |  |  |
| 520 | 8.1.1.1 | List of Changes | 2d | 2005-01-24 | 2005-01-25 |  | 1.88d | 0d |  |  |  |
| 521 | 8.1.1.2 | Changed Geometry | 1d? | 2005-01-26 | 2005-01-26 | 520 | 1.88d | 0d |  |  |  |
| 522 | 8.1.1.3 | Check List 1 | 1d? | 2005-01-27 | 2005-01-27 | 521 | 1.88d | 0d |  |  |  |
| 523 | 8.1.1.4 | Check List 2 | 1d? | 2005-01-28 | 2005-01-28 | 522 | 1.88d | 0d |  |  |  |
| 524 | 8.1.1.5 | Check List 3 | 1d? | 2005-01-29 | 2005-01-29 | 523 | 1.88d | 0d |  |  |  |
| 525 | 8.1.1.6 | Check List 4 | 1d? | 2005-01-31 | 2005-01-31 | 524 | 1.88d | 0d |  |  |  |
| 526 | 8.1.1.7 | Render Geometry | 1d? | 2005-02-01 | 2005-02-01 | 525 | 1.88d | 0d |  |  |  |
| 527 | 8.1.1.8 | Grass | 1d? | 2005-02-02 | 2005-02-02 | 526 | 1.88d | 0d |  |  |  |
| 528 | 8.1.1.9 | AI Maps | 1d? | 2005-02-03 | 2005-02-03 | 527 | 1.88d | 0d |  |  |  |
| 529 | 8.1.1.10 | Graphs | 1d? | 2005-02-04 | 2005-02-04 | 528 | 1.88d |  |  |  |  |

| ID | WBS | Task | Duration | Start | Finish | Predecessors | Total slack | Free slack |
| --- | --- | --- | --- | --- | --- | --- | --- | --- |
| 531 | 8.2 | **GameDesign** | 3d? | 2005-01-24 | 2005-01-26 |  | 17.88d |  |
| 532 | 8.2.1 | **Secrets** | 3d? | 2005-01-24 | 2005-01-26 |  | 17.88d |  |
| 533 | 8.2.1.1 | **Stage 1** | 3d? | 2005-01-24 | 2005-01-26 |  | 17.88d |  |
| 534 | 8.2.1.1.1 | Design | 1d? | 2005-01-24 | 2005-01-24 |  | 17.88d | 0d |
| 535 | 8.2.1.1.2 | Implementation | 1d? | 2005-01-25 | 2005-01-25 | 534 | 17.88d | 0d |
| 536 | 8.2.1.1.3 | Tuning | 1d? | 2005-01-26 | 2005-01-26 | 535 | 17.88d |  |
| 537 | 8.2.2 | **Smartterrains** | 3d? | 2005-01-24 | 2005-01-26 |  | 17.88d |  |
| 538 | 8.2.2.1 | **Stage 1** | 3d? | 2005-01-24 | 2005-01-26 |  | 17.88d |  |
| 539 | 8.2.2.1.1 | Design | 1d? | 2005-01-24 | 2005-01-24 |  | 17.88d | 0d |
| 540 | 8.2.2.1.2 | Implementation | 1d? | 2005-01-25 | 2005-01-25 | 539 | 17.88d | 0d |
| 541 | 8.2.2.1.3 | Tuning | 1d? | 2005-01-26 | 2005-01-26 | 540 | 17.88d |  |
| 542 | 8.2.3 | **Monsters/Spawns** | 3d? | 2005-01-24 | 2005-01-26 |  | 17.88d |  |
| 543 | 8.2.3.1 | **Stage 1** | 3d? | 2005-01-24 | 2005-01-26 |  | 17.88d |  |
| 544 | 8.2.3.1.1 | Design | 1d? | 2005-01-24 | 2005-01-24 |  | 17.88d | 0d |
| 545 | 8.2.3.1.2 | Implementation | 1d? | 2005-01-25 | 2005-01-25 | 544 | 17.88d | 0d |
| 546 | 8.2.3.1.3 | Tuning | 1d? | 2005-01-26 | 2005-01-26 | 545 | 17.88d |  |
| 547 | 8.2.4 | **Stalkers/Spawns** | 3d? | 2005-01-24 | 2005-01-26 |  | 17.88d |  |
| 548 | 8.2.4.1 | **Stage 1** | 3d? | 2005-01-24 | 2005-01-26 |  | 17.88d |  |
| 549 | 8.2.4.1.1 | Design | 1d? | 2005-01-24 | 2005-01-24 |  | 17.88d | 0d |
| 550 | 8.2.4.1.2 | Implementation | 1d? | 2005-01-25 | 2005-01-25 | 549 | 17.88d | 0d |
| 551 | 8.2.4.1.3 | Tuning | 1d? | 2005-01-26 | 2005-01-26 | 550 | 17.88d |  |
| 552 | 8.2.5 | **Anomalies/Spawns** | 3d? | 2005-01-24 | 2005-01-26 |  | 17.88d |  |
| 553 | 8.2.5.1 | **Stage 1** | 3d? | 2005-01-24 | 2005-01-26 |  | 17.88d |  |
| 554 | 8.2.5.1.1 | Design | 1d? | 2005-01-24 | 2005-01-24 |  | 17.88d | 0d |
| 555 | 8.2.5.1.2 | Implementation | 1d? | 2005-01-25 | 2005-01-25 | 554 | 17.88d | 0d |
| 556 | 8.2.5.1.3 | Tuning | 1d? | 2005-01-26 | 2005-01-26 | 555 | 17.88d |  |

| ID | WBS | Task | Duration | Start | Finish | Predecessors | Total slack | Free slack |
| --- | --- | --- | --- | --- | --- | --- | --- | --- |
| 557 | 8.2.6 | **Physicks** | 3d? | 2005-01-24 | 2005-01-26 |  | 17.88d |  |
| 558 | 8.2.6.1 | **Stage 1** | 3d? | 2005-01-24 | 2005-01-26 |  | 17.88d |  |
| 559 | 8.2.6.1.1 | Design | 1d? | 2005-01-24 | 2005-01-24 |  | 17.88d | 0d |
| 560 | 8.2.6.1.2 | Implementation | 1d? | 2005-01-25 | 2005-01-25 | 559 | 17.88d | 0d |
| 561 | 8.2.6.1.3 | Tuning | 1d? | 2005-01-26 | 2005-01-26 | 560 | 17.88d |  |
| 563 | 8.3 | **Scripts** | 5d? | 2005-01-24 | 2005-01-28 |  | 15.88d |  |
| 564 | 8.3.1 | **Script 1** | 5d? | 2005-01-24 | 2005-01-28 |  | 15.88d |  |
| 565 | 8.3.1.1 | Scenario(text) | 1d? | 2005-01-24 | 2005-01-24 |  | 15.88d | 0d |
| 566 | 8.3.1.2 | Постановка задач | 1d? | 2005-01-25 | 2005-01-25 | 565 | 15.88d | 0d |
| 567 | 8.3.1.3 | Implimentation | 1d? | 2005-01-26 | 2005-01-26 | 566 | 15.88d | 0d |
| 568 | 8.3.1.4 | Dilogs/VO/Icons/Objects/Animations | 1d? | 2005-01-27 | 2005-01-27 | 567 | 15.88d | 0d |
| 569 | 8.3.1.5 | Настройка | 1d? | 2005-01-28 | 2005-01-28 | 568 | 15.88d |  |
| 570 | 8.3.2 | **Script 2** | 5d? | 2005-01-24 | 2005-01-28 |  | 15.88d |  |
| 571 | 8.3.2.1 | Scenario(text) | 1d? | 2005-01-24 | 2005-01-24 |  | 15.88d | 0d |
| 572 | 8.3.2.2 | Постановка задач | 1d? | 2005-01-25 | 2005-01-25 | 571 | 15.88d | 0d |
| 573 | 8.3.2.3 | Implimentation | 1d? | 2005-01-26 | 2005-01-26 | 572 | 15.88d | 0d |
| 574 | 8.3.2.4 | Dilogs/VO/Icons/Objects/Animations | 1d? | 2005-01-27 | 2005-01-27 | 573 | 15.88d | 0d |
| 575 | 8.3.2.5 | Настройка | 1d? | 2005-01-28 | 2005-01-28 | 574 | 15.88d |  |
| 576 | 8.3.3 | **Script 3** | 5d? | 2005-01-24 | 2005-01-28 |  | 15.88d |  |
| 577 | 8.3.3.1 | Scenario(text) | 1d? | 2005-01-24 | 2005-01-24 |  | 15.88d | 0d |
| 578 | 8.3.3.2 | Постановка задач | 1d? | 2005-01-25 | 2005-01-25 | 577 | 15.88d | 0d |
| 579 | 8.3.3.3 | Implimentation | 1d? | 2005-01-26 | 2005-01-26 | 578 | 15.88d | 0d |
| 580 | 8.3.3.4 | Dilogs/VO/Icons/Objects/Animations | 1d? | 2005-01-27 | 2005-01-27 | 579 | 15.88d | 0d |
| 581 | 8.3.3.5 | Настройка | 1d? | 2005-01-28 | 2005-01-28 | 580 | 15.88d |  |

| ID | WBS | Task | Duration | Start | Finish | Predecessors | Total slack | Free slack | Deadline | Resources | Work |
| --- | --- | --- | --- | --- | --- | --- | --- | --- | --- | --- | --- |
| 582 | 8.3.4 | **Script 4** | 5d? | 2005-01-24 | 2005-01-28 |  | 15.88d |  |  |  |  |
| 583 | 8.3.4.1 | Scenario(text) | 1d? | 2005-01-24 | 2005-01-24 |  | 15.88d | 0d |  |  |  |
| 584 | 8.3.4.2 | Постановка задач | 1d? | 2005-01-25 | 2005-01-25 | 583 | 15.88d | 0d |  |  |  |
| 585 | 8.3.4.3 | Implimentation | 1d? | 2005-01-26 | 2005-01-26 | 584 | 15.88d | 0d |  |  |  |
| 586 | 8.3.4.4 | Dilogs/VO/Icons/Objects/Animations | 1d? | 2005-01-27 | 2005-01-27 | 585 | 15.88d | 0d |  |  |  |
| 587 | 8.3.4.5 | Настройка | 1d? | 2005-01-28 | 2005-01-28 | 586 | 15.88d |  |  |  |  |
| 588 | 8.3.5 | **Script 5** | 5d? | 2005-01-24 | 2005-01-28 |  | 15.88d |  |  |  |  |
| 589 | 8.3.5.1 | Scenario(text) | 1d? | 2005-01-24 | 2005-01-24 |  | 15.88d | 0d |  |  |  |
| 590 | 8.3.5.2 | Постановка задач | 1d? | 2005-01-25 | 2005-01-25 | 589 | 15.88d | 0d |  |  |  |
| 591 | 8.3.5.3 | Implimentation | 1d? | 2005-01-26 | 2005-01-26 | 590 | 15.88d | 0d |  |  |  |
| 592 | 8.3.5.4 | Dilogs/VO/Icons/Objects/Animations | 1d? | 2005-01-27 | 2005-01-27 | 591 | 15.88d | 0d |  |  |  |
| 593 | 8.3.5.5 | Настройка | 1d? | 2005-01-28 | 2005-01-28 | 592 | 15.88d |  |  |  |  |
| 595 | 9 | **16_Radar_Antena_Control_Undergaround** | 11d? | 2005-02-05 | 2005-02-17 | 517 | 9.88d | 0d | 2005-04-01 | Джим, Угрюмый | 88h |
| 596 | 9.1 | **LevelDesign** | 11d? | 2005-02-05 | 2005-02-17 |  | 9.88d |  | 2005-03-01 |  |  |
| 597 | 9.1.1 | **Stage 1** | 11d? | 2005-02-05 | 2005-02-17 |  | 9.88d |  |  |  |  |
| 598 | 9.1.1.1 | List of Changes | 2d | 2005-02-05 | 2005-02-07 |  | 9.88d | 0d |  |  |  |
| 599 | 9.1.1.2 | Changed Geometry | 1d? | 2005-02-08 | 2005-02-08 | 598 | 9.88d | 0d |  |  |  |
| 600 | 9.1.1.3 | Check List 1 | 1d? | 2005-02-09 | 2005-02-09 | 599 | 9.88d | 0d |  |  |  |
| 601 | 9.1.1.4 | Check List 2 | 1d? | 2005-02-10 | 2005-02-10 | 600 | 9.88d | 0d |  |  |  |
| 602 | 9.1.1.5 | Check List 3 | 1d? | 2005-02-11 | 2005-02-11 | 601 | 9.88d | 0d |  |  |  |
| 603 | 9.1.1.6 | Check List 4 | 1d? | 2005-02-12 | 2005-02-12 | 602 | 9.88d | 0d |  |  |  |
| 604 | 9.1.1.7 | Render Geometry | 1d? | 2005-02-14 | 2005-02-14 | 603 | 9.88d | 0d |  |  |  |
| 605 | 9.1.1.8 | Grass | 1d? | 2005-02-15 | 2005-02-15 | 604 | 9.88d | 0d |  |  |  |
| 606 | 9.1.1.9 | AI Maps | 1d? | 2005-02-16 | 2005-02-16 | 605 | 9.88d | 0d |  |  |  |
| 607 | 9.1.1.10 | Graphs | 1d? | 2005-02-17 | 2005-02-17 | 606 | 9.88d |  |  |  |  |

| ID | WBS | Task | Duration | Start | Finish | Predecessors | Total slack | Free slack |
| --- | --- | --- | --- | --- | --- | --- | --- | --- |
| 609 | 9.2 | **GameDesign** | 3d? | 2005-02-05 | 2005-02-08 |  | 33.88d |  |
| 610 | 9.2.1 | **Secrets** | 3d? | 2005-02-05 | 2005-02-08 |  | 33.88d |  |
| 611 | 9.2.1.1 | **Stage 1** | 3d? | 2005-02-05 | 2005-02-08 |  | 33.88d |  |
| 612 | 9.2.1.1.1 | Design | 1d? | 2005-02-05 | 2005-02-05 |  | 33.88d | 0d |
| 613 | 9.2.1.1.2 | Implementation | 1d? | 2005-02-07 | 2005-02-07 | 612 | 33.88d | 0d |
| 614 | 9.2.1.1.3 | Tuning | 1d? | 2005-02-08 | 2005-02-08 | 613 | 33.88d |  |
| 615 | 9.2.2 | **Smartterrains** | 3d? | 2005-02-05 | 2005-02-08 |  | 33.88d |  |
| 616 | 9.2.2.1 | **Stage 1** | 3d? | 2005-02-05 | 2005-02-08 |  | 33.88d |  |
| 617 | 9.2.2.1.1 | Design | 1d? | 2005-02-05 | 2005-02-05 |  | 33.88d | 0d |
| 618 | 9.2.2.1.2 | Implementation | 1d? | 2005-02-07 | 2005-02-07 | 617 | 33.88d | 0d |
| 619 | 9.2.2.1.3 | Tuning | 1d? | 2005-02-08 | 2005-02-08 | 618 | 33.88d |  |
| 620 | 9.2.3 | **Monsters/Spawns** | 3d? | 2005-02-05 | 2005-02-08 |  | 33.88d |  |
| 621 | 9.2.3.1 | **Stage 1** | 3d? | 2005-02-05 | 2005-02-08 |  | 33.88d |  |
| 622 | 9.2.3.1.1 | Design | 1d? | 2005-02-05 | 2005-02-05 |  | 33.88d | 0d |
| 623 | 9.2.3.1.2 | Implementation | 1d? | 2005-02-07 | 2005-02-07 | 622 | 33.88d | 0d |
| 624 | 9.2.3.1.3 | Tuning | 1d? | 2005-02-08 | 2005-02-08 | 623 | 33.88d |  |
| 625 | 9.2.4 | **Stalkers/Spawns** | 3d? | 2005-02-05 | 2005-02-08 |  | 33.88d |  |
| 626 | 9.2.4.1 | **Stage 1** | 3d? | 2005-02-05 | 2005-02-08 |  | 33.88d |  |
| 627 | 9.2.4.1.1 | Design | 1d? | 2005-02-05 | 2005-02-05 |  | 33.88d | 0d |
| 628 | 9.2.4.1.2 | Implementation | 1d? | 2005-02-07 | 2005-02-07 | 627 | 33.88d | 0d |
| 629 | 9.2.4.1.3 | Tuning | 1d? | 2005-02-08 | 2005-02-08 | 628 | 33.88d |  |
| 630 | 9.2.5 | **Anomalies/Spawns** | 3d? | 2005-02-05 | 2005-02-08 |  | 33.88d |  |
| 631 | 9.2.5.1 | **Stage 1** | 3d? | 2005-02-05 | 2005-02-08 |  | 33.88d |  |
| 632 | 9.2.5.1.1 | Design | 1d? | 2005-02-05 | 2005-02-05 |  | 33.88d | 0d |
| 633 | 9.2.5.1.2 | Implementation | 1d? | 2005-02-07 | 2005-02-07 | 632 | 33.88d | 0d |
| 634 | 9.2.5.1.3 | Tuning | 1d? | 2005-02-08 | 2005-02-08 | 633 | 33.88d |  |

| ID | WBS | Task | Duration | Start | Finish | Predecessors | Total slack | Free slack |
| --- | --- | --- | --- | --- | --- | --- | --- | --- |
| 635 | 9.2.6 | **Physicks** | 3d? | 2005-02-05 | 2005-02-08 |  | 33.88d |  |
| 636 | 9.2.6.1 | **Stage 1** | 3d? | 2005-02-05 | 2005-02-08 |  | 33.88d |  |
| 637 | 9.2.6.1.1 | Design | 1d? | 2005-02-05 | 2005-02-05 |  | 33.88d | 0d |
| 638 | 9.2.6.1.2 | Implementation | 1d? | 2005-02-07 | 2005-02-07 | 637 | 33.88d | 0d |
| 639 | 9.2.6.1.3 | Tuning | 1d? | 2005-02-08 | 2005-02-08 | 638 | 33.88d |  |
| 641 | 9.3 | **Scripts** | 5d? | 2005-02-05 | 2005-02-10 |  | 31.88d |  |
| 642 | 9.3.1 | **Script 1** | 5d? | 2005-02-05 | 2005-02-10 |  | 31.88d |  |
| 643 | 9.3.1.1 | Scenario(text) | 1d? | 2005-02-05 | 2005-02-05 |  | 31.88d | 0d |
| 644 | 9.3.1.2 | Постановка задач | 1d? | 2005-02-07 | 2005-02-07 | 643 | 31.88d | 0d |
| 645 | 9.3.1.3 | Implimentation | 1d? | 2005-02-08 | 2005-02-08 | 644 | 31.88d | 0d |
| 646 | 9.3.1.4 | Dilogs/VO/Icons/Objects/Animations | 1d? | 2005-02-09 | 2005-02-09 | 645 | 31.88d | 0d |
| 647 | 9.3.1.5 | Настройка | 1d? | 2005-02-10 | 2005-02-10 | 646 | 31.88d |  |
| 648 | 9.3.2 | **Script 2** | 5d? | 2005-02-05 | 2005-02-10 |  | 31.88d |  |
| 649 | 9.3.2.1 | Scenario(text) | 1d? | 2005-02-05 | 2005-02-05 |  | 31.88d | 0d |
| 650 | 9.3.2.2 | Постановка задач | 1d? | 2005-02-07 | 2005-02-07 | 649 | 31.88d | 0d |
| 651 | 9.3.2.3 | Implimentation | 1d? | 2005-02-08 | 2005-02-08 | 650 | 31.88d | 0d |
| 652 | 9.3.2.4 | Dilogs/VO/Icons/Objects/Animations | 1d? | 2005-02-09 | 2005-02-09 | 651 | 31.88d | 0d |
| 653 | 9.3.2.5 | Настройка | 1d? | 2005-02-10 | 2005-02-10 | 652 | 31.88d |  |
| 654 | 9.3.3 | **Script 3** | 5d? | 2005-02-05 | 2005-02-10 |  | 31.88d |  |
| 655 | 9.3.3.1 | Scenario(text) | 1d? | 2005-02-05 | 2005-02-05 |  | 31.88d | 0d |
| 656 | 9.3.3.2 | Постановка задач | 1d? | 2005-02-07 | 2005-02-07 | 655 | 31.88d | 0d |
| 657 | 9.3.3.3 | Implimentation | 1d? | 2005-02-08 | 2005-02-08 | 656 | 31.88d | 0d |
| 658 | 9.3.3.4 | Dilogs/VO/Icons/Objects/Animations | 1d? | 2005-02-09 | 2005-02-09 | 657 | 31.88d | 0d |
| 659 | 9.3.3.5 | Настройка | 1d? | 2005-02-10 | 2005-02-10 | 658 | 31.88d |  |

| ID | WBS | Task | Duration | Start | Finish | Predecessors | Total slack | Free slack | Deadline | Resources | Work |
| --- | --- | --- | --- | --- | --- | --- | --- | --- | --- | --- | --- |
| 660 | 9.3.4 | **Script 4** | 5d? | 2005-02-05 | 2005-02-10 |  | 31.88d |  |  |  |  |
| 661 | 9.3.4.1 | Scenario(text) | 1d? | 2005-02-05 | 2005-02-05 |  | 31.88d | 0d |  |  |  |
| 662 | 9.3.4.2 | Постановка задач | 1d? | 2005-02-07 | 2005-02-07 | 661 | 31.88d | 0d |  |  |  |
| 663 | 9.3.4.3 | Implimentation | 1d? | 2005-02-08 | 2005-02-08 | 662 | 31.88d | 0d |  |  |  |
| 664 | 9.3.4.4 | Dilogs/VO/Icons/Objects/Animations | 1d? | 2005-02-09 | 2005-02-09 | 663 | 31.88d | 0d |  |  |  |
| 665 | 9.3.4.5 | Настройка | 1d? | 2005-02-10 | 2005-02-10 | 664 | 31.88d |  |  |  |  |
| 666 | 9.3.5 | **Script 5** | 5d? | 2005-02-05 | 2005-02-10 |  | 31.88d |  |  |  |  |
| 667 | 9.3.5.1 | Scenario(text) | 1d? | 2005-02-05 | 2005-02-05 |  | 31.88d | 0d |  |  |  |
| 668 | 9.3.5.2 | Постановка задач | 1d? | 2005-02-07 | 2005-02-07 | 667 | 31.88d | 0d |  |  |  |
| 669 | 9.3.5.3 | Implimentation | 1d? | 2005-02-08 | 2005-02-08 | 668 | 31.88d | 0d |  |  |  |
| 670 | 9.3.5.4 | Dilogs/VO/Icons/Objects/Animations | 1d? | 2005-02-09 | 2005-02-09 | 669 | 31.88d | 0d |  |  |  |
| 671 | 9.3.5.5 | Настройка | 1d? | 2005-02-10 | 2005-02-10 | 670 | 31.88d |  |  |  |  |
| 673 | 10 | **17_Radar_Monolith_Control_Underground** | 11d? | 2005-02-18 | 2005-03-02 | 595 | 25.88d |  | 2005-04-29 | Джим, Угрюмый | 88h |
| 674 | 10.1 | **LevelDesign** | 11d? | 2005-02-18 | 2005-03-02 |  | 25.88d |  | 2005-04-01 |  |  |
| 675 | 10.1.1 | **Stage 1** | 11d? | 2005-02-18 | 2005-03-02 |  | 25.88d |  |  |  |  |
| 676 | 10.1.1.1 | List of Changes | 2d | 2005-02-18 | 2005-02-19 |  | 25.88d | 0d |  |  |  |
| 677 | 10.1.1.2 | Changed Geometry | 1d? | 2005-02-21 | 2005-02-21 | 676 | 25.88d | 0d |  |  |  |
| 678 | 10.1.1.3 | Check List 1 | 1d? | 2005-02-22 | 2005-02-22 | 677 | 25.88d | 0d |  |  |  |
| 679 | 10.1.1.4 | Check List 2 | 1d? | 2005-02-23 | 2005-02-23 | 678 | 25.88d | 0d |  |  |  |
| 680 | 10.1.1.5 | Check List 3 | 1d? | 2005-02-24 | 2005-02-24 | 679 | 25.88d | 0d |  |  |  |
| 681 | 10.1.1.6 | Check List 4 | 1d? | 2005-02-25 | 2005-02-25 | 680 | 25.88d | 0d |  |  |  |
| 682 | 10.1.1.7 | Render Geometry | 1d? | 2005-02-26 | 2005-02-26 | 681 | 25.88d | 0d |  |  |  |
| 683 | 10.1.1.8 | Grass | 1d? | 2005-02-28 | 2005-02-28 | 682 | 25.88d | 0d |  |  |  |
| 684 | 10.1.1.9 | AI Maps | 1d? | 2005-03-01 | 2005-03-01 | 683 | 25.88d | 0d |  |  |  |
| 685 | 10.1.1.10 | Graphs | 1d? | 2005-03-02 | 2005-03-02 | 684 | 25.88d |  |  |  |  |

| ID | WBS | Task | Duration | Start | Finish | Predecessors | Total slack | Free slack |
| --- | --- | --- | --- | --- | --- | --- | --- | --- |
| 687 | 10.2 | **GameDesign** | 3d? | 2005-02-18 | 2005-02-21 |  | 57.88d |  |
| 688 | 10.2.1 | **Secrets** | 3d? | 2005-02-18 | 2005-02-21 |  | 57.88d |  |
| 689 | 10.2.1.1 | **Stage 1** | 3d? | 2005-02-18 | 2005-02-21 |  | 57.88d |  |
| 690 | 10.2.1.1.1 | Design | 1d? | 2005-02-18 | 2005-02-18 |  | 57.88d | 0d |
| 691 | 10.2.1.1.2 | Implementation | 1d? | 2005-02-19 | 2005-02-19 | 690 | 57.88d | 0d |
| 692 | 10.2.1.1.3 | Tuning | 1d? | 2005-02-21 | 2005-02-21 | 691 | 57.88d |  |
| 693 | 10.2.2 | **Smartterrains** | 3d? | 2005-02-18 | 2005-02-21 |  | 57.88d |  |
| 694 | 10.2.2.1 | **Stage 1** | 3d? | 2005-02-18 | 2005-02-21 |  | 57.88d |  |
| 695 | 10.2.2.1.1 | Design | 1d? | 2005-02-18 | 2005-02-18 |  | 57.88d | 0d |
| 696 | 10.2.2.1.2 | Implementation | 1d? | 2005-02-19 | 2005-02-19 | 695 | 57.88d | 0d |
| 697 | 10.2.2.1.3 | Tuning | 1d? | 2005-02-21 | 2005-02-21 | 696 | 57.88d |  |
| 698 | 10.2.3 | **Monsters/Spawns** | 3d? | 2005-02-18 | 2005-02-21 |  | 57.88d |  |
| 699 | 10.2.3.1 | **Stage 1** | 3d? | 2005-02-18 | 2005-02-21 |  | 57.88d |  |
| 700 | 10.2.3.1.1 | Design | 1d? | 2005-02-18 | 2005-02-18 |  | 57.88d | 0d |
| 701 | 10.2.3.1.2 | Implementation | 1d? | 2005-02-19 | 2005-02-19 | 700 | 57.88d | 0d |
| 702 | 10.2.3.1.3 | Tuning | 1d? | 2005-02-21 | 2005-02-21 | 701 | 57.88d |  |
| 703 | 10.2.4 | **Stalkers/Spawns** | 3d? | 2005-02-18 | 2005-02-21 |  | 57.88d |  |
| 704 | 10.2.4.1 | **Stage 1** | 3d? | 2005-02-18 | 2005-02-21 |  | 57.88d |  |
| 705 | 10.2.4.1.1 | Design | 1d? | 2005-02-18 | 2005-02-18 |  | 57.88d | 0d |
| 706 | 10.2.4.1.2 | Implementation | 1d? | 2005-02-19 | 2005-02-19 | 705 | 57.88d | 0d |
| 707 | 10.2.4.1.3 | Tuning | 1d? | 2005-02-21 | 2005-02-21 | 706 | 57.88d |  |
| 708 | 10.2.5 | **Anomalies/Spawns** | 3d? | 2005-02-18 | 2005-02-21 |  | 57.88d |  |
| 709 | 10.2.5.1 | **Stage 1** | 3d? | 2005-02-18 | 2005-02-21 |  | 57.88d |  |
| 710 | 10.2.5.1.1 | Design | 1d? | 2005-02-18 | 2005-02-18 |  | 57.88d | 0d |
| 711 | 10.2.5.1.2 | Implementation | 1d? | 2005-02-19 | 2005-02-19 | 710 | 57.88d | 0d |
| 712 | 10.2.5.1.3 | Tuning | 1d? | 2005-02-21 | 2005-02-21 | 711 | 57.88d |  |

| ID | WBS | Task | Duration | Start | Finish | Predecessors | Total slack | Free slack |
| --- | --- | --- | --- | --- | --- | --- | --- | --- |
| 713 | 10.2.6 | **Physicks** | 3d? | 2005-02-18 | 2005-02-21 |  | 57.88d |  |
| 714 | 10.2.6.1 | **Stage 1** | 3d? | 2005-02-18 | 2005-02-21 |  | 57.88d |  |
| 715 | 10.2.6.1.1 | Design | 1d? | 2005-02-18 | 2005-02-18 |  | 57.88d | 0d |
| 716 | 10.2.6.1.2 | Implementation | 1d? | 2005-02-19 | 2005-02-19 | 715 | 57.88d | 0d |
| 717 | 10.2.6.1.3 | Tuning | 1d? | 2005-02-21 | 2005-02-21 | 716 | 57.88d |  |
| 719 | 10.3 | **Scripts** | 5d? | 2005-02-18 | 2005-02-23 |  | 55.88d |  |
| 720 | 10.3.1 | **Script 1** | 5d? | 2005-02-18 | 2005-02-23 |  | 55.88d |  |
| 721 | 10.3.1.1 | Scenario(text) | 1d? | 2005-02-18 | 2005-02-18 |  | 55.88d | 0d |
| 722 | 10.3.1.2 | Постановка задач | 1d? | 2005-02-19 | 2005-02-19 | 721 | 55.88d | 0d |
| 723 | 10.3.1.3 | Implimentation | 1d? | 2005-02-21 | 2005-02-21 | 722 | 55.88d | 0d |
| 724 | 10.3.1.4 | Dilogs/VO/Icons/Objects/Animations | 1d? | 2005-02-22 | 2005-02-22 | 723 | 55.88d | 0d |
| 725 | 10.3.1.5 | Настройка | 1d? | 2005-02-23 | 2005-02-23 | 724 | 55.88d |  |
| 726 | 10.3.2 | **Script 2** | 5d? | 2005-02-18 | 2005-02-23 |  | 55.88d |  |
| 727 | 10.3.2.1 | Scenario(text) | 1d? | 2005-02-18 | 2005-02-18 |  | 55.88d | 0d |
| 728 | 10.3.2.2 | Постановка задач | 1d? | 2005-02-19 | 2005-02-19 | 727 | 55.88d | 0d |
| 729 | 10.3.2.3 | Implimentation | 1d? | 2005-02-21 | 2005-02-21 | 728 | 55.88d | 0d |
| 730 | 10.3.2.4 | Dilogs/VO/Icons/Objects/Animations | 1d? | 2005-02-22 | 2005-02-22 | 729 | 55.88d | 0d |
| 731 | 10.3.2.5 | Настройка | 1d? | 2005-02-23 | 2005-02-23 | 730 | 55.88d |  |
| 732 | 10.3.3 | **Script 3** | 5d? | 2005-02-18 | 2005-02-23 |  | 55.88d |  |
| 733 | 10.3.3.1 | Scenario(text) | 1d? | 2005-02-18 | 2005-02-18 |  | 55.88d | 0d |
| 734 | 10.3.3.2 | Постановка задач | 1d? | 2005-02-19 | 2005-02-19 | 733 | 55.88d | 0d |
| 735 | 10.3.3.3 | Implimentation | 1d? | 2005-02-21 | 2005-02-21 | 734 | 55.88d | 0d |
| 736 | 10.3.3.4 | Dilogs/VO/Icons/Objects/Animations | 1d? | 2005-02-22 | 2005-02-22 | 735 | 55.88d | 0d |
| 737 | 10.3.3.5 | Настройка | 1d? | 2005-02-23 | 2005-02-23 | 736 | 55.88d |  |

| ID | WBS | Task | Duration | Start | Finish | Predecessors | Total slack | Free slack | Deadline | Resources | Work |
| --- | --- | --- | --- | --- | --- | --- | --- | --- | --- | --- | --- |
| 738 | 10.3.4 | **Script 4** | 5d? | 2005-02-18 | 2005-02-23 |  | 55.88d |  |  |  |  |
| 739 | 10.3.4.1 | Scenario(text) | 1d? | 2005-02-18 | 2005-02-18 |  | 55.88d | 0d |  |  |  |
| 740 | 10.3.4.2 | Постановка задач | 1d? | 2005-02-19 | 2005-02-19 | 739 | 55.88d | 0d |  |  |  |
| 741 | 10.3.4.3 | Implimentation | 1d? | 2005-02-21 | 2005-02-21 | 740 | 55.88d | 0d |  |  |  |
| 742 | 10.3.4.4 | Dilogs/VO/Icons/Objects/Animations | 1d? | 2005-02-22 | 2005-02-22 | 741 | 55.88d | 0d |  |  |  |
| 743 | 10.3.4.5 | Настройка | 1d? | 2005-02-23 | 2005-02-23 | 742 | 55.88d |  |  |  |  |
| 744 | 10.3.5 | **Script 5** | 5d? | 2005-02-18 | 2005-02-23 |  | 55.88d |  |  |  |  |
| 745 | 10.3.5.1 | Scenario(text) | 1d? | 2005-02-18 | 2005-02-18 |  | 55.88d | 0d |  |  |  |
| 746 | 10.3.5.2 | Постановка задач | 1d? | 2005-02-19 | 2005-02-19 | 745 | 55.88d | 0d |  |  |  |
| 747 | 10.3.5.3 | Implimentation | 1d? | 2005-02-21 | 2005-02-21 | 746 | 55.88d | 0d |  |  |  |
| 748 | 10.3.5.4 | Dilogs/VO/Icons/Objects/Animations | 1d? | 2005-02-22 | 2005-02-22 | 747 | 55.88d | 0d |  |  |  |
| 749 | 10.3.5.5 | Настройка | 1d? | 2005-02-23 | 2005-02-23 | 748 | 55.88d |  |  |  |  |
| 755 | 11 | **08_Rostok_Bar** | 11d? | 2005-01-24 | 2005-02-04 |  | -20.12d | 0d | 2005-02-07 | Коан, Руслан | 88h |
| 756 | 11.1 | **LevelDesign** | 11d? | 2005-01-24 | 2005-02-04 |  | -20.12d | 0d | 2005-02-01 |  |  |
| 757 | 11.1.1 | **Stage 1** | 11d? | 2005-01-24 | 2005-02-04 |  | -20.12d | 0d |  |  |  |
| 758 | 11.1.1.1 | List of Changes | 2d | 2005-01-24 | 2005-01-25 |  | -20.12d | 0d |  |  |  |
| 759 | 11.1.1.2 | Changed Geometry | 1d? | 2005-01-26 | 2005-01-26 | 758 | -20.12d | 0d |  |  |  |
| 760 | 11.1.1.3 | Check List 1 | 1d? | 2005-01-27 | 2005-01-27 | 759 | -20.12d | 0d |  |  |  |
| 761 | 11.1.1.4 | Check List 2 | 1d? | 2005-01-28 | 2005-01-28 | 760 | -20.12d | 0d |  |  |  |
| 762 | 11.1.1.5 | Check List 3 | 1d? | 2005-01-29 | 2005-01-29 | 761 | -20.12d | 0d |  |  |  |
| 763 | 11.1.1.6 | Check List 4 | 1d? | 2005-01-31 | 2005-01-31 | 762 | -20.12d | 0d |  |  |  |
| 764 | 11.1.1.7 | Render Geometry | 1d? | 2005-02-01 | 2005-02-01 | 763 | -20.12d | 0d |  |  |  |
| 765 | 11.1.1.8 | Grass | 1d? | 2005-02-02 | 2005-02-02 | 764 | -20.12d | 0d |  |  |  |
| 766 | 11.1.1.9 | AI Maps | 1d? | 2005-02-03 | 2005-02-03 | 765 | -20.12d | 0d |  |  |  |
| 767 | 11.1.1.10 | Graphs | 1d? | 2005-02-04 | 2005-02-04 | 766 | -20.12d | 0d |  |  |  |

| ID | WBS | Task | Duration | Start | Finish | Predecessors | Total slack | Free slack |
| --- | --- | --- | --- | --- | --- | --- | --- | --- |
| 769 | 11.2 | **GameDesign** | 3d? | 2005-01-24 | 2005-01-26 |  | -12.12d | 0d |
| 770 | 11.2.1 | **Secrets** | 3d? | 2005-01-24 | 2005-01-26 |  | -12.12d | 0d |
| 771 | 11.2.1.1 | **Stage 1** | 3d? | 2005-01-24 | 2005-01-26 |  | -12.12d | 0d |
| 772 | 11.2.1.1.1 | Design | 1d? | 2005-01-24 | 2005-01-24 |  | -12.12d | 0d |
| 773 | 11.2.1.1.2 | Implementation | 1d? | 2005-01-25 | 2005-01-25 | 772 | -12.12d | 0d |
| 774 | 11.2.1.1.3 | Tuning | 1d? | 2005-01-26 | 2005-01-26 | 773 | -12.12d | 0d |
| 775 | 11.2.2 | **Smartterrains** | 3d? | 2005-01-24 | 2005-01-26 |  | -12.12d | 0d |
| 776 | 11.2.2.1 | **Stage 1** | 3d? | 2005-01-24 | 2005-01-26 |  | -12.12d | 0d |
| 777 | 11.2.2.1.1 | Design | 1d? | 2005-01-24 | 2005-01-24 |  | -12.12d | 0d |
| 778 | 11.2.2.1.2 | Implementation | 1d? | 2005-01-25 | 2005-01-25 | 777 | -12.12d | 0d |
| 779 | 11.2.2.1.3 | Tuning | 1d? | 2005-01-26 | 2005-01-26 | 778 | -12.12d | 0d |
| 780 | 11.2.3 | **Monsters/Spawns** | 3d? | 2005-01-24 | 2005-01-26 |  | -12.12d | 0d |
| 781 | 11.2.3.1 | **Stage 1** | 3d? | 2005-01-24 | 2005-01-26 |  | -12.12d | 0d |
| 782 | 11.2.3.1.1 | Design | 1d? | 2005-01-24 | 2005-01-24 |  | -12.12d | 0d |
| 783 | 11.2.3.1.2 | Implementation | 1d? | 2005-01-25 | 2005-01-25 | 782 | -12.12d | 0d |
| 784 | 11.2.3.1.3 | Tuning | 1d? | 2005-01-26 | 2005-01-26 | 783 | -12.12d | 0d |
| 785 | 11.2.4 | **Stalkers/Spawns** | 3d? | 2005-01-24 | 2005-01-26 |  | -12.12d | 0d |
| 786 | 11.2.4.1 | **Stage 1** | 3d? | 2005-01-24 | 2005-01-26 |  | -12.12d | 0d |
| 787 | 11.2.4.1.1 | Design | 1d? | 2005-01-24 | 2005-01-24 |  | -12.12d | 0d |
| 788 | 11.2.4.1.2 | Implementation | 1d? | 2005-01-25 | 2005-01-25 | 787 | -12.12d | 0d |
| 789 | 11.2.4.1.3 | Tuning | 1d? | 2005-01-26 | 2005-01-26 | 788 | -12.12d | 0d |
| 790 | 11.2.5 | **Anomalies/Spawns** | 3d? | 2005-01-24 | 2005-01-26 |  | -12.12d | 0d |
| 791 | 11.2.5.1 | **Stage 1** | 3d? | 2005-01-24 | 2005-01-26 |  | -12.12d | 0d |
| 792 | 11.2.5.1.1 | Design | 1d? | 2005-01-24 | 2005-01-24 |  | -12.12d | 0d |
| 793 | 11.2.5.1.2 | Implementation | 1d? | 2005-01-25 | 2005-01-25 | 792 | -12.12d | 0d |
| 794 | 11.2.5.1.3 | Tuning | 1d? | 2005-01-26 | 2005-01-26 | 793 | -12.12d | 0d |

| ID | WBS | Task | Duration | Start | Finish | Predecessors | Total slack | Free slack |
| --- | --- | --- | --- | --- | --- | --- | --- | --- |
| 795 | 11.2.6 | **Physicks** | 3d? | 2005-01-24 | 2005-01-26 |  | -12.12d | 0d |
| 796 | 11.2.6.1 | **Stage 1** | 3d? | 2005-01-24 | 2005-01-26 |  | -12.12d | 0d |
| 797 | 11.2.6.1.1 | Design | 1d? | 2005-01-24 | 2005-01-24 |  | -12.12d | 0d |
| 798 | 11.2.6.1.2 | Implementation | 1d? | 2005-01-25 | 2005-01-25 | 797 | -12.12d | 0d |
| 799 | 11.2.6.1.3 | Tuning | 1d? | 2005-01-26 | 2005-01-26 | 798 | -12.12d | 0d |
| 801 | 11.3 | **Scripts** | 5d? | 2005-01-24 | 2005-01-28 |  | -14.12d | 0d |
| 802 | 11.3.1 | **Script 1** | 5d? | 2005-01-24 | 2005-01-28 |  | -14.12d | 0d |
| 803 | 11.3.1.1 | Scenario(text) | 1d? | 2005-01-24 | 2005-01-24 |  | -14.12d | 0d |
| 804 | 11.3.1.2 | Постановка задач | 1d? | 2005-01-25 | 2005-01-25 | 803 | -14.12d | 0d |
| 805 | 11.3.1.3 | Implimentation | 1d? | 2005-01-26 | 2005-01-26 | 804 | -14.12d | 0d |
| 806 | 11.3.1.4 | Dilogs/VO/Icons/Objects/Animations | 1d? | 2005-01-27 | 2005-01-27 | 805 | -14.12d | 0d |
| 807 | 11.3.1.5 | Настройка | 1d? | 2005-01-28 | 2005-01-28 | 806 | -14.12d | 0d |
| 808 | 11.3.2 | **Script 2** | 5d? | 2005-01-24 | 2005-01-28 |  | -14.12d | 0d |
| 809 | 11.3.2.1 | Scenario(text) | 1d? | 2005-01-24 | 2005-01-24 |  | -14.12d | 0d |
| 810 | 11.3.2.2 | Постановка задач | 1d? | 2005-01-25 | 2005-01-25 | 809 | -14.12d | 0d |
| 811 | 11.3.2.3 | Implimentation | 1d? | 2005-01-26 | 2005-01-26 | 810 | -14.12d | 0d |
| 812 | 11.3.2.4 | Dilogs/VO/Icons/Objects/Animations | 1d? | 2005-01-27 | 2005-01-27 | 811 | -14.12d | 0d |
| 813 | 11.3.2.5 | Настройка | 1d? | 2005-01-28 | 2005-01-28 | 812 | -14.12d | 0d |
| 814 | 11.3.3 | **Script 3** | 5d? | 2005-01-24 | 2005-01-28 |  | -14.12d | 0d |
| 815 | 11.3.3.1 | Scenario(text) | 1d? | 2005-01-24 | 2005-01-24 |  | -14.12d | 0d |
| 816 | 11.3.3.2 | Постановка задач | 1d? | 2005-01-25 | 2005-01-25 | 815 | -14.12d | 0d |
| 817 | 11.3.3.3 | Implimentation | 1d? | 2005-01-26 | 2005-01-26 | 816 | -14.12d | 0d |
| 818 | 11.3.3.4 | Dilogs/VO/Icons/Objects/Animations | 1d? | 2005-01-27 | 2005-01-27 | 817 | -14.12d | 0d |
| 819 | 11.3.3.5 | Настройка | 1d? | 2005-01-28 | 2005-01-28 | 818 | -14.12d | 0d |

| ID | WBS | Task | Duration | Start | Finish | Predecessors | Total slack | Free slack | Deadline | Resources | Work |
| --- | --- | --- | --- | --- | --- | --- | --- | --- | --- | --- | --- |
| 820 | 11.3.4 | **Script 4** | 5d? | 2005-01-24 | 2005-01-28 |  | -14.12d | 0d |  |  |  |
| 821 | 11.3.4.1 | Scenario(text) | 1d? | 2005-01-24 | 2005-01-24 |  | -14.12d | 0d |  |  |  |
| 822 | 11.3.4.2 | Постановка задач | 1d? | 2005-01-25 | 2005-01-25 | 821 | -14.12d | 0d |  |  |  |
| 823 | 11.3.4.3 | Implimentation | 1d? | 2005-01-26 | 2005-01-26 | 822 | -14.12d | 0d |  |  |  |
| 824 | 11.3.4.4 | Dilogs/VO/Icons/Objects/Animations | 1d? | 2005-01-27 | 2005-01-27 | 823 | -14.12d | 0d |  |  |  |
| 825 | 11.3.4.5 | Настройка | 1d? | 2005-01-28 | 2005-01-28 | 824 | -14.12d | 0d |  |  |  |
| 826 | 11.3.5 | **Script 5** | 5d? | 2005-01-24 | 2005-01-28 |  | -14.12d | 0d |  |  |  |
| 827 | 11.3.5.1 | Scenario(text) | 1d? | 2005-01-24 | 2005-01-24 |  | -14.12d | 0d |  |  |  |
| 828 | 11.3.5.2 | Постановка задач | 1d? | 2005-01-25 | 2005-01-25 | 827 | -14.12d | 0d |  |  |  |
| 829 | 11.3.5.3 | Implimentation | 1d? | 2005-01-26 | 2005-01-26 | 828 | -14.12d | 0d |  |  |  |
| 830 | 11.3.5.4 | Dilogs/VO/Icons/Objects/Animations | 1d? | 2005-01-27 | 2005-01-27 | 829 | -14.12d | 0d |  |  |  |
| 831 | 11.3.5.5 | Настройка | 1d? | 2005-01-28 | 2005-01-28 | 830 | -14.12d | 0d |  |  |  |
| 833 | 12 | **09_Rostok_Dolg** | 11d? | 2005-02-05 | 2005-02-17 | 755 | -20.12d | 0d | 2005-02-15 | Коан, Руслан | 88h |
| 834 | 12.1 | **LevelDesign** | 11d? | 2005-02-05 | 2005-02-17 |  | -20.12d | 0d | 2005-02-07 |  |  |
| 835 | 12.1.1 | **Stage 1** | 11d? | 2005-02-05 | 2005-02-17 |  | -20.12d | 0d |  |  |  |
| 836 | 12.1.1.1 | List of Changes | 2d | 2005-02-05 | 2005-02-07 |  | -20.12d | 0d |  |  |  |
| 837 | 12.1.1.2 | Changed Geometry | 1d? | 2005-02-08 | 2005-02-08 | 836 | -20.12d | 0d |  |  |  |
| 838 | 12.1.1.3 | Check List 1 | 1d? | 2005-02-09 | 2005-02-09 | 837 | -20.12d | 0d |  |  |  |
| 839 | 12.1.1.4 | Check List 2 | 1d? | 2005-02-10 | 2005-02-10 | 838 | -20.12d | 0d |  |  |  |
| 840 | 12.1.1.5 | Check List 3 | 1d? | 2005-02-11 | 2005-02-11 | 839 | -20.12d | 0d |  |  |  |
| 841 | 12.1.1.6 | Check List 4 | 1d? | 2005-02-12 | 2005-02-12 | 840 | -20.12d | 0d |  |  |  |
| 842 | 12.1.1.7 | Render Geometry | 1d? | 2005-02-14 | 2005-02-14 | 841 | -20.12d | 0d |  |  |  |
| 843 | 12.1.1.8 | Grass | 1d? | 2005-02-15 | 2005-02-15 | 842 | -20.12d | 0d |  |  |  |
| 844 | 12.1.1.9 | AI Maps | 1d? | 2005-02-16 | 2005-02-16 | 843 | -20.12d | 0d |  |  |  |
| 845 | 12.1.1.10 | Graphs | 1d? | 2005-02-17 | 2005-02-17 | 844 | -20.12d | 0d |  |  |  |

| ID | WBS | Task | Duration | Start | Finish | Predecessors | Total slack | Free slack |
| --- | --- | --- | --- | --- | --- | --- | --- | --- |
| 847 | 12.2 | **GameDesign** | 3d? | 2005-02-05 | 2005-02-08 |  | -12.12d | 0d |
| 848 | 12.2.1 | **Secrets** | 3d? | 2005-02-05 | 2005-02-08 |  | -12.12d | 0d |
| 849 | 12.2.1.1 | **Stage 1** | 3d? | 2005-02-05 | 2005-02-08 |  | -12.12d | 0d |
| 850 | 12.2.1.1.1 | Design | 1d? | 2005-02-05 | 2005-02-05 |  | -12.12d | 0d |
| 851 | 12.2.1.1.2 | Implementation | 1d? | 2005-02-07 | 2005-02-07 | 850 | -12.12d | 0d |
| 852 | 12.2.1.1.3 | Tuning | 1d? | 2005-02-08 | 2005-02-08 | 851 | -12.12d | 0d |
| 853 | 12.2.2 | **Smartterrains** | 3d? | 2005-02-05 | 2005-02-08 |  | -12.12d | 0d |
| 854 | 12.2.2.1 | **Stage 1** | 3d? | 2005-02-05 | 2005-02-08 |  | -12.12d | 0d |
| 855 | 12.2.2.1.1 | Design | 1d? | 2005-02-05 | 2005-02-05 |  | -12.12d | 0d |
| 856 | 12.2.2.1.2 | Implementation | 1d? | 2005-02-07 | 2005-02-07 | 855 | -12.12d | 0d |
| 857 | 12.2.2.1.3 | Tuning | 1d? | 2005-02-08 | 2005-02-08 | 856 | -12.12d | 0d |
| 858 | 12.2.3 | **Monsters/Spawns** | 3d? | 2005-02-05 | 2005-02-08 |  | -12.12d | 0d |
| 859 | 12.2.3.1 | **Stage 1** | 3d? | 2005-02-05 | 2005-02-08 |  | -12.12d | 0d |
| 860 | 12.2.3.1.1 | Design | 1d? | 2005-02-05 | 2005-02-05 |  | -12.12d | 0d |
| 861 | 12.2.3.1.2 | Implementation | 1d? | 2005-02-07 | 2005-02-07 | 860 | -12.12d | 0d |
| 862 | 12.2.3.1.3 | Tuning | 1d? | 2005-02-08 | 2005-02-08 | 861 | -12.12d | 0d |
| 863 | 12.2.4 | **Stalkers/Spawns** | 3d? | 2005-02-05 | 2005-02-08 |  | -12.12d | 0d |
| 864 | 12.2.4.1 | **Stage 1** | 3d? | 2005-02-05 | 2005-02-08 |  | -12.12d | 0d |
| 865 | 12.2.4.1.1 | Design | 1d? | 2005-02-05 | 2005-02-05 |  | -12.12d | 0d |
| 866 | 12.2.4.1.2 | Implementation | 1d? | 2005-02-07 | 2005-02-07 | 865 | -12.12d | 0d |
| 867 | 12.2.4.1.3 | Tuning | 1d? | 2005-02-08 | 2005-02-08 | 866 | -12.12d | 0d |
| 868 | 12.2.5 | **Anomalies/Spawns** | 3d? | 2005-02-05 | 2005-02-08 |  | -12.12d | 0d |
| 869 | 12.2.5.1 | **Stage 1** | 3d? | 2005-02-05 | 2005-02-08 |  | -12.12d | 0d |
| 870 | 12.2.5.1.1 | Design | 1d? | 2005-02-05 | 2005-02-05 |  | -12.12d | 0d |
| 871 | 12.2.5.1.2 | Implementation | 1d? | 2005-02-07 | 2005-02-07 | 870 | -12.12d | 0d |
| 872 | 12.2.5.1.3 | Tuning | 1d? | 2005-02-08 | 2005-02-08 | 871 | -12.12d | 0d |

| ID | WBS | Task | Duration | Start | Finish | Predecessors | Total slack | Free slack |
| --- | --- | --- | --- | --- | --- | --- | --- | --- |
| 873 | 12.2.6 | **Physicks** | 3d? | 2005-02-05 | 2005-02-08 |  | -12.12d | 0d |
| 874 | 12.2.6.1 | **Stage 1** | 3d? | 2005-02-05 | 2005-02-08 |  | -12.12d | 0d |
| 875 | 12.2.6.1.1 | Design | 1d? | 2005-02-05 | 2005-02-05 |  | -12.12d | 0d |
| 876 | 12.2.6.1.2 | Implementation | 1d? | 2005-02-07 | 2005-02-07 | 875 | -12.12d | 0d |
| 877 | 12.2.6.1.3 | Tuning | 1d? | 2005-02-08 | 2005-02-08 | 876 | -12.12d | 0d |
| 879 | 12.3 | **Scripts** | 5d? | 2005-02-05 | 2005-02-10 |  | -14.12d | 0d |
| 880 | 12.3.1 | **Script 1** | 5d? | 2005-02-05 | 2005-02-10 |  | -14.12d | 0d |
| 881 | 12.3.1.1 | Scenario(text) | 1d? | 2005-02-05 | 2005-02-05 |  | -14.12d | 0d |
| 882 | 12.3.1.2 | Постановка задач | 1d? | 2005-02-07 | 2005-02-07 | 881 | -14.12d | 0d |
| 883 | 12.3.1.3 | Implimentation | 1d? | 2005-02-08 | 2005-02-08 | 882 | -14.12d | 0d |
| 884 | 12.3.1.4 | Dilogs/VO/Icons/Objects/Animations | 1d? | 2005-02-09 | 2005-02-09 | 883 | -14.12d | 0d |
| 885 | 12.3.1.5 | Настройка | 1d? | 2005-02-10 | 2005-02-10 | 884 | -14.12d | 0d |
| 886 | 12.3.2 | **Script 2** | 5d? | 2005-02-05 | 2005-02-10 |  | -14.12d | 0d |
| 887 | 12.3.2.1 | Scenario(text) | 1d? | 2005-02-05 | 2005-02-05 |  | -14.12d | 0d |
| 888 | 12.3.2.2 | Постановка задач | 1d? | 2005-02-07 | 2005-02-07 | 887 | -14.12d | 0d |
| 889 | 12.3.2.3 | Implimentation | 1d? | 2005-02-08 | 2005-02-08 | 888 | -14.12d | 0d |
| 890 | 12.3.2.4 | Dilogs/VO/Icons/Objects/Animations | 1d? | 2005-02-09 | 2005-02-09 | 889 | -14.12d | 0d |
| 891 | 12.3.2.5 | Настройка | 1d? | 2005-02-10 | 2005-02-10 | 890 | -14.12d | 0d |
| 892 | 12.3.3 | **Script 3** | 5d? | 2005-02-05 | 2005-02-10 |  | -14.12d | 0d |
| 893 | 12.3.3.1 | Scenario(text) | 1d? | 2005-02-05 | 2005-02-05 |  | -14.12d | 0d |
| 894 | 12.3.3.2 | Постановка задач | 1d? | 2005-02-07 | 2005-02-07 | 893 | -14.12d | 0d |
| 895 | 12.3.3.3 | Implimentation | 1d? | 2005-02-08 | 2005-02-08 | 894 | -14.12d | 0d |
| 896 | 12.3.3.4 | Dilogs/VO/Icons/Objects/Animations | 1d? | 2005-02-09 | 2005-02-09 | 895 | -14.12d | 0d |
| 897 | 12.3.3.5 | Настройка | 1d? | 2005-02-10 | 2005-02-10 | 896 | -14.12d | 0d |

| ID | WBS | Task | Duration | Start | Finish | Predecessors | Total slack | Free slack | Deadline | Resources | Work |
| --- | --- | --- | --- | --- | --- | --- | --- | --- | --- | --- | --- |
| 898 | 12.3.4 | **Script 4** | 5d? | 2005-02-05 | 2005-02-10 |  | -14.12d | 0d |  |  |  |
| 899 | 12.3.4.1 | Scenario(text) | 1d? | 2005-02-05 | 2005-02-05 |  | -14.12d | 0d |  |  |  |
| 900 | 12.3.4.2 | Постановка задач | 1d? | 2005-02-07 | 2005-02-07 | 899 | -14.12d | 0d |  |  |  |
| 901 | 12.3.4.3 | Implimentation | 1d? | 2005-02-08 | 2005-02-08 | 900 | -14.12d | 0d |  |  |  |
| 902 | 12.3.4.4 | Dilogs/VO/Icons/Objects/Animations | 1d? | 2005-02-09 | 2005-02-09 | 901 | -14.12d | 0d |  |  |  |
| 903 | 12.3.4.5 | Настройка | 1d? | 2005-02-10 | 2005-02-10 | 902 | -14.12d | 0d |  |  |  |
| 904 | 12.3.5 | **Script 5** | 5d? | 2005-02-05 | 2005-02-10 |  | -14.12d | 0d |  |  |  |
| 905 | 12.3.5.1 | Scenario(text) | 1d? | 2005-02-05 | 2005-02-05 |  | -14.12d | 0d |  |  |  |
| 906 | 12.3.5.2 | Постановка задач | 1d? | 2005-02-07 | 2005-02-07 | 905 | -14.12d | 0d |  |  |  |
| 907 | 12.3.5.3 | Implimentation | 1d? | 2005-02-08 | 2005-02-08 | 906 | -14.12d | 0d |  |  |  |
| 908 | 12.3.5.4 | Dilogs/VO/Icons/Objects/Animations | 1d? | 2005-02-09 | 2005-02-09 | 907 | -14.12d | 0d |  |  |  |
| 909 | 12.3.5.5 | Настройка | 1d? | 2005-02-10 | 2005-02-10 | 908 | -14.12d | 0d |  |  |  |
| 912 | 13 | **07_Rostok** | 11d? | 2005-02-18 | 2005-03-02 | 833 | -20.12d | 0d | 2005-03-15 | Коан, Руслан | 88h |
| 913 | 13.1 | **LevelDesign** | 11d? | 2005-02-18 | 2005-03-02 |  | -20.12d | 0d | 2005-02-07 |  |  |
| 914 | 13.1.1 | **Stage 1** | 11d? | 2005-02-18 | 2005-03-02 |  | -20.12d | 0d |  |  |  |
| 915 | 13.1.1.1 | List of Changes | 2d | 2005-02-18 | 2005-02-19 |  | -20.12d | 0d |  |  |  |
| 916 | 13.1.1.2 | Changed Geometry | 1d? | 2005-02-21 | 2005-02-21 | 915 | -20.12d | 0d |  |  |  |
| 917 | 13.1.1.3 | Check List 1 | 1d? | 2005-02-22 | 2005-02-22 | 916 | -20.12d | 0d |  |  |  |
| 918 | 13.1.1.4 | Check List 2 | 1d? | 2005-02-23 | 2005-02-23 | 917 | -20.12d | 0d |  |  |  |
| 919 | 13.1.1.5 | Check List 3 | 1d? | 2005-02-24 | 2005-02-24 | 918 | -20.12d | 0d |  |  |  |
| 920 | 13.1.1.6 | Check List 4 | 1d? | 2005-02-25 | 2005-02-25 | 919 | -20.12d | 0d |  |  |  |
| 921 | 13.1.1.7 | Render Geometry | 1d? | 2005-02-26 | 2005-02-26 | 920 | -20.12d | 0d |  |  |  |
| 922 | 13.1.1.8 | Grass | 1d? | 2005-02-28 | 2005-02-28 | 921 | -20.12d | 0d |  |  |  |
| 923 | 13.1.1.9 | AI Maps | 1d? | 2005-03-01 | 2005-03-01 | 922 | -20.12d | 0d |  |  |  |
| 924 | 13.1.1.10 | Graphs | 1d? | 2005-03-02 | 2005-03-02 | 923 | -20.12d | 0d |  |  |  |

| ID | WBS | Task | Duration | Start | Finish | Predecessors | Total slack | Free slack |
| --- | --- | --- | --- | --- | --- | --- | --- | --- |
| 926 | 13.2 | **GameDesign** | 3d? | 2005-02-18 | 2005-02-21 |  | 7.88d |  |
| 927 | 13.2.1 | **Secrets** | 3d? | 2005-02-18 | 2005-02-21 |  | 7.88d |  |
| 928 | 13.2.1.1 | **Stage 1** | 3d? | 2005-02-18 | 2005-02-21 |  | 7.88d |  |
| 929 | 13.2.1.1.1 | Design | 1d? | 2005-02-18 | 2005-02-18 |  | 7.88d | 0d |
| 930 | 13.2.1.1.2 | Implementation | 1d? | 2005-02-19 | 2005-02-19 | 929 | 7.88d | 0d |
| 931 | 13.2.1.1.3 | Tuning | 1d? | 2005-02-21 | 2005-02-21 | 930 | 7.88d |  |
| 932 | 13.2.2 | **Smartterrains** | 3d? | 2005-02-18 | 2005-02-21 |  | 7.88d |  |
| 933 | 13.2.2.1 | **Stage 1** | 3d? | 2005-02-18 | 2005-02-21 |  | 7.88d |  |
| 934 | 13.2.2.1.1 | Design | 1d? | 2005-02-18 | 2005-02-18 |  | 7.88d | 0d |
| 935 | 13.2.2.1.2 | Implementation | 1d? | 2005-02-19 | 2005-02-19 | 934 | 7.88d | 0d |
| 936 | 13.2.2.1.3 | Tuning | 1d? | 2005-02-21 | 2005-02-21 | 935 | 7.88d |  |
| 937 | 13.2.3 | **Monsters/Spawns** | 3d? | 2005-02-18 | 2005-02-21 |  | 7.88d |  |
| 938 | 13.2.3.1 | **Stage 1** | 3d? | 2005-02-18 | 2005-02-21 |  | 7.88d |  |
| 939 | 13.2.3.1.1 | Design | 1d? | 2005-02-18 | 2005-02-18 |  | 7.88d | 0d |
| 940 | 13.2.3.1.2 | Implementation | 1d? | 2005-02-19 | 2005-02-19 | 939 | 7.88d | 0d |
| 941 | 13.2.3.1.3 | Tuning | 1d? | 2005-02-21 | 2005-02-21 | 940 | 7.88d |  |
| 942 | 13.2.4 | **Stalkers/Spawns** | 3d? | 2005-02-18 | 2005-02-21 |  | 7.88d |  |
| 943 | 13.2.4.1 | **Stage 1** | 3d? | 2005-02-18 | 2005-02-21 |  | 7.88d |  |
| 944 | 13.2.4.1.1 | Design | 1d? | 2005-02-18 | 2005-02-18 |  | 7.88d | 0d |
| 945 | 13.2.4.1.2 | Implementation | 1d? | 2005-02-19 | 2005-02-19 | 944 | 7.88d | 0d |
| 946 | 13.2.4.1.3 | Tuning | 1d? | 2005-02-21 | 2005-02-21 | 945 | 7.88d |  |
| 947 | 13.2.5 | **Anomalies/Spawns** | 3d? | 2005-02-18 | 2005-02-21 |  | 7.88d |  |
| 948 | 13.2.5.1 | **Stage 1** | 3d? | 2005-02-18 | 2005-02-21 |  | 7.88d |  |
| 949 | 13.2.5.1.1 | Design | 1d? | 2005-02-18 | 2005-02-18 |  | 7.88d | 0d |
| 950 | 13.2.5.1.2 | Implementation | 1d? | 2005-02-19 | 2005-02-19 | 949 | 7.88d | 0d |
| 951 | 13.2.5.1.3 | Tuning | 1d? | 2005-02-21 | 2005-02-21 | 950 | 7.88d |  |

| ID | WBS | Task | Duration | Start | Finish | Predecessors | Total slack | Free slack |
| --- | --- | --- | --- | --- | --- | --- | --- | --- |
| 952 | 13.2.6 | **Physicks** | 3d? | 2005-02-18 | 2005-02-21 |  | 7.88d |  |
| 953 | 13.2.6.1 | **Stage 1** | 3d? | 2005-02-18 | 2005-02-21 |  | 7.88d |  |
| 954 | 13.2.6.1.1 | Design | 1d? | 2005-02-18 | 2005-02-18 |  | 7.88d | 0d |
| 955 | 13.2.6.1.2 | Implementation | 1d? | 2005-02-19 | 2005-02-19 | 954 | 7.88d | 0d |
| 956 | 13.2.6.1.3 | Tuning | 1d? | 2005-02-21 | 2005-02-21 | 955 | 7.88d |  |
| 958 | 13.3 | **Scripts** | 5d? | 2005-02-18 | 2005-02-23 |  | 5.88d |  |
| 959 | 13.3.1 | **Script 1** | 5d? | 2005-02-18 | 2005-02-23 |  | 5.88d |  |
| 960 | 13.3.1.1 | Scenario(text) | 1d? | 2005-02-18 | 2005-02-18 |  | 5.88d | 0d |
| 961 | 13.3.1.2 | Постановка задач | 1d? | 2005-02-19 | 2005-02-19 | 960 | 5.88d | 0d |
| 962 | 13.3.1.3 | Implimentation | 1d? | 2005-02-21 | 2005-02-21 | 961 | 5.88d | 0d |
| 963 | 13.3.1.4 | Dilogs/VO/Icons/Objects/Animations | 1d? | 2005-02-22 | 2005-02-22 | 962 | 5.88d | 0d |
| 964 | 13.3.1.5 | Настройка | 1d? | 2005-02-23 | 2005-02-23 | 963 | 5.88d |  |
| 965 | 13.3.2 | **Script 2** | 5d? | 2005-02-18 | 2005-02-23 |  | 5.88d |  |
| 966 | 13.3.2.1 | Scenario(text) | 1d? | 2005-02-18 | 2005-02-18 |  | 5.88d | 0d |
| 967 | 13.3.2.2 | Постановка задач | 1d? | 2005-02-19 | 2005-02-19 | 966 | 5.88d | 0d |
| 968 | 13.3.2.3 | Implimentation | 1d? | 2005-02-21 | 2005-02-21 | 967 | 5.88d | 0d |
| 969 | 13.3.2.4 | Dilogs/VO/Icons/Objects/Animations | 1d? | 2005-02-22 | 2005-02-22 | 968 | 5.88d | 0d |
| 970 | 13.3.2.5 | Настройка | 1d? | 2005-02-23 | 2005-02-23 | 969 | 5.88d |  |
| 971 | 13.3.3 | **Script 3** | 5d? | 2005-02-18 | 2005-02-23 |  | 5.88d |  |
| 972 | 13.3.3.1 | Scenario(text) | 1d? | 2005-02-18 | 2005-02-18 |  | 5.88d | 0d |
| 973 | 13.3.3.2 | Постановка задач | 1d? | 2005-02-19 | 2005-02-19 | 972 | 5.88d | 0d |
| 974 | 13.3.3.3 | Implimentation | 1d? | 2005-02-21 | 2005-02-21 | 973 | 5.88d | 0d |
| 975 | 13.3.3.4 | Dilogs/VO/Icons/Objects/Animations | 1d? | 2005-02-22 | 2005-02-22 | 974 | 5.88d | 0d |
| 976 | 13.3.3.5 | Настройка | 1d? | 2005-02-23 | 2005-02-23 | 975 | 5.88d |  |

| ID | WBS | Task | Duration | Start | Finish | Predecessors | Total slack | Free slack | Deadline | Resources | Work |
| --- | --- | --- | --- | --- | --- | --- | --- | --- | --- | --- | --- |
| 977 | 13.3.4 | **Script 4** | 5d? | 2005-02-18 | 2005-02-23 |  | 5.88d |  |  |  |  |
| 978 | 13.3.4.1 | Scenario(text) | 1d? | 2005-02-18 | 2005-02-18 |  | 5.88d | 0d |  |  |  |
| 979 | 13.3.4.2 | Постановка задач | 1d? | 2005-02-19 | 2005-02-19 | 978 | 5.88d | 0d |  |  |  |
| 980 | 13.3.4.3 | Implimentation | 1d? | 2005-02-21 | 2005-02-21 | 979 | 5.88d | 0d |  |  |  |
| 981 | 13.3.4.4 | Dilogs/VO/Icons/Objects/Animations | 1d? | 2005-02-22 | 2005-02-22 | 980 | 5.88d | 0d |  |  |  |
| 982 | 13.3.4.5 | Настройка | 1d? | 2005-02-23 | 2005-02-23 | 981 | 5.88d |  |  |  |  |
| 983 | 13.3.5 | **Script 5** | 5d? | 2005-02-18 | 2005-02-23 |  | 5.88d |  |  |  |  |
| 984 | 13.3.5.1 | Scenario(text) | 1d? | 2005-02-18 | 2005-02-18 |  | 5.88d | 0d |  |  |  |
| 985 | 13.3.5.2 | Постановка задач | 1d? | 2005-02-19 | 2005-02-19 | 984 | 5.88d | 0d |  |  |  |
| 986 | 13.3.5.3 | Implimentation | 1d? | 2005-02-21 | 2005-02-21 | 985 | 5.88d | 0d |  |  |  |
| 987 | 13.3.5.4 | Dilogs/VO/Icons/Objects/Animations | 1d? | 2005-02-22 | 2005-02-22 | 986 | 5.88d | 0d |  |  |  |
| 988 | 13.3.5.5 | Настройка | 1d? | 2005-02-23 | 2005-02-23 | 987 | 5.88d |  |  |  |  |
| 990 | 14 | **11_Yantar** | 11d? | 2005-03-03 | 2005-03-15 | 912 | -0.12d | 0d | 2005-04-15 | Коан, Руслан | 88h |
| 991 | 14.1 | **LevelDesign** | 11d? | 2005-03-03 | 2005-03-15 |  | -0.12d | 0d | 2005-03-15 |  |  |
| 992 | 14.1.1 | **Stage 1** | 11d? | 2005-03-03 | 2005-03-15 |  | -0.12d | 0d |  |  |  |
| 993 | 14.1.1.1 | List of Changes | 2d | 2005-03-03 | 2005-03-04 |  | -0.12d | 0d |  |  |  |
| 994 | 14.1.1.2 | Changed Geometry | 1d? | 2005-03-05 | 2005-03-05 | 993 | -0.12d | 0d |  |  |  |
| 995 | 14.1.1.3 | Check List 1 | 1d? | 2005-03-07 | 2005-03-07 | 994 | -0.12d | 0d |  |  |  |
| 996 | 14.1.1.4 | Check List 2 | 1d? | 2005-03-08 | 2005-03-08 | 995 | -0.12d | 0d |  |  |  |
| 997 | 14.1.1.5 | Check List 3 | 1d? | 2005-03-09 | 2005-03-09 | 996 | -0.12d | 0d |  |  |  |
| 998 | 14.1.1.6 | Check List 4 | 1d? | 2005-03-10 | 2005-03-10 | 997 | -0.12d | 0d |  |  |  |
| 999 | 14.1.1.7 | Render Geometry | 1d? | 2005-03-11 | 2005-03-11 | 998 | -0.12d | 0d |  |  |  |
| 1000 | 14.1.1.8 | Grass | 1d? | 2005-03-12 | 2005-03-12 | 999 | -0.12d | 0d |  |  |  |
| 1001 | 14.1.1.9 | AI Maps | 1d? | 2005-03-14 | 2005-03-14 | 1000 | -0.12d | 0d |  |  |  |
| 1002 | 14.1.1.10 | Graphs | 1d? | 2005-03-15 | 2005-03-15 | 1001 | -0.12d | 0d |  |  |  |

| ID | WBS | Task | Duration | Start | Finish | Predecessors | Total slack | Free slack |
| --- | --- | --- | --- | --- | --- | --- | --- | --- |
| 1004 | 14.2 | **GameDesign** | 3d? | 2005-03-03 | 2005-03-05 |  | 23.88d |  |
| 1005 | 14.2.1 | **Secrets** | 3d? | 2005-03-03 | 2005-03-05 |  | 23.88d |  |
| 1006 | 14.2.1.1 | **Stage 1** | 3d? | 2005-03-03 | 2005-03-05 |  | 23.88d |  |
| 1007 | 14.2.1.1.1 | Design | 1d? | 2005-03-03 | 2005-03-03 |  | 23.88d | 0d |
| 1008 | 14.2.1.1.2 | Implementation | 1d? | 2005-03-04 | 2005-03-04 | 1007 | 23.88d | 0d |
| 1009 | 14.2.1.1.3 | Tuning | 1d? | 2005-03-05 | 2005-03-05 | 1008 | 23.88d |  |
| 1010 | 14.2.2 | **Smartterrains** | 3d? | 2005-03-03 | 2005-03-05 |  | 23.88d |  |
| 1011 | 14.2.2.1 | **Stage 1** | 3d? | 2005-03-03 | 2005-03-05 |  | 23.88d |  |
| 1012 | 14.2.2.1.1 | Design | 1d? | 2005-03-03 | 2005-03-03 |  | 23.88d | 0d |
| 1013 | 14.2.2.1.2 | Implementation | 1d? | 2005-03-04 | 2005-03-04 | 1012 | 23.88d | 0d |
| 1014 | 14.2.2.1.3 | Tuning | 1d? | 2005-03-05 | 2005-03-05 | 1013 | 23.88d |  |
| 1015 | 14.2.3 | **Monsters/Spawns** | 3d? | 2005-03-03 | 2005-03-05 |  | 23.88d |  |
| 1016 | 14.2.3.1 | **Stage 1** | 3d? | 2005-03-03 | 2005-03-05 |  | 23.88d |  |
| 1017 | 14.2.3.1.1 | Design | 1d? | 2005-03-03 | 2005-03-03 |  | 23.88d | 0d |
| 1018 | 14.2.3.1.2 | Implementation | 1d? | 2005-03-04 | 2005-03-04 | 1017 | 23.88d | 0d |
| 1019 | 14.2.3.1.3 | Tuning | 1d? | 2005-03-05 | 2005-03-05 | 1018 | 23.88d |  |
| 1020 | 14.2.4 | **Stalkers/Spawns** | 3d? | 2005-03-03 | 2005-03-05 |  | 23.88d |  |
| 1021 | 14.2.4.1 | **Stage 1** | 3d? | 2005-03-03 | 2005-03-05 |  | 23.88d |  |
| 1022 | 14.2.4.1.1 | Design | 1d? | 2005-03-03 | 2005-03-03 |  | 23.88d | 0d |
| 1023 | 14.2.4.1.2 | Implementation | 1d? | 2005-03-04 | 2005-03-04 | 1022 | 23.88d | 0d |
| 1024 | 14.2.4.1.3 | Tuning | 1d? | 2005-03-05 | 2005-03-05 | 1023 | 23.88d |  |
| 1025 | 14.2.5 | **Anomalies/Spawns** | 3d? | 2005-03-03 | 2005-03-05 |  | 23.88d |  |
| 1026 | 14.2.5.1 | **Stage 1** | 3d? | 2005-03-03 | 2005-03-05 |  | 23.88d |  |
| 1027 | 14.2.5.1.1 | Design | 1d? | 2005-03-03 | 2005-03-03 |  | 23.88d | 0d |
| 1028 | 14.2.5.1.2 | Implementation | 1d? | 2005-03-04 | 2005-03-04 | 1027 | 23.88d | 0d |
| 1029 | 14.2.5.1.3 | Tuning | 1d? | 2005-03-05 | 2005-03-05 | 1028 | 23.88d |  |

| ID | WBS | Task | Duration | Start | Finish | Predecessors | Total slack | Free slack |
| --- | --- | --- | --- | --- | --- | --- | --- | --- |
| 1030 | 14.2.6 | **Physicks** | 3d? | 2005-03-03 | 2005-03-05 |  | 23.88d |  |
| 1031 | 14.2.6.1 | **Stage 1** | 3d? | 2005-03-03 | 2005-03-05 |  | 23.88d |  |
| 1032 | 14.2.6.1.1 | Design | 1d? | 2005-03-03 | 2005-03-03 |  | 23.88d | 0d |
| 1033 | 14.2.6.1.2 | Implementation | 1d? | 2005-03-04 | 2005-03-04 | 1032 | 23.88d | 0d |
| 1034 | 14.2.6.1.3 | Tuning | 1d? | 2005-03-05 | 2005-03-05 | 1033 | 23.88d |  |
| 1036 | 14.3 | **Scripts** | 5d? | 2005-03-03 | 2005-03-08 |  | 21.88d |  |
| 1037 | 14.3.1 | **Script 1** | 5d? | 2005-03-03 | 2005-03-08 |  | 21.88d |  |
| 1038 | 14.3.1.1 | Scenario(text) | 1d? | 2005-03-03 | 2005-03-03 |  | 21.88d | 0d |
| 1039 | 14.3.1.2 | Постановка задач | 1d? | 2005-03-04 | 2005-03-04 | 1038 | 21.88d | 0d |
| 1040 | 14.3.1.3 | Implimentation | 1d? | 2005-03-05 | 2005-03-05 | 1039 | 21.88d | 0d |
| 1041 | 14.3.1.4 | Dilogs/VO/Icons/Objects/Animations | 1d? | 2005-03-07 | 2005-03-07 | 1040 | 21.88d | 0d |
| 1042 | 14.3.1.5 | Настройка | 1d? | 2005-03-08 | 2005-03-08 | 1041 | 21.88d |  |
| 1043 | 14.3.2 | **Script 2** | 5d? | 2005-03-03 | 2005-03-08 |  | 21.88d |  |
| 1044 | 14.3.2.1 | Scenario(text) | 1d? | 2005-03-03 | 2005-03-03 |  | 21.88d | 0d |
| 1045 | 14.3.2.2 | Постановка задач | 1d? | 2005-03-04 | 2005-03-04 | 1044 | 21.88d | 0d |
| 1046 | 14.3.2.3 | Implimentation | 1d? | 2005-03-05 | 2005-03-05 | 1045 | 21.88d | 0d |
| 1047 | 14.3.2.4 | Dilogs/VO/Icons/Objects/Animations | 1d? | 2005-03-07 | 2005-03-07 | 1046 | 21.88d | 0d |
| 1048 | 14.3.2.5 | Настройка | 1d? | 2005-03-08 | 2005-03-08 | 1047 | 21.88d |  |
| 1049 | 14.3.3 | **Script 3** | 5d? | 2005-03-03 | 2005-03-08 |  | 21.88d |  |
| 1050 | 14.3.3.1 | Scenario(text) | 1d? | 2005-03-03 | 2005-03-03 |  | 21.88d | 0d |
| 1051 | 14.3.3.2 | Постановка задач | 1d? | 2005-03-04 | 2005-03-04 | 1050 | 21.88d | 0d |
| 1052 | 14.3.3.3 | Implimentation | 1d? | 2005-03-05 | 2005-03-05 | 1051 | 21.88d | 0d |
| 1053 | 14.3.3.4 | Dilogs/VO/Icons/Objects/Animations | 1d? | 2005-03-07 | 2005-03-07 | 1052 | 21.88d | 0d |
| 1054 | 14.3.3.5 | Настройка | 1d? | 2005-03-08 | 2005-03-08 | 1053 | 21.88d |  |

| ID | WBS | Task | Duration | Start | Finish | Predecessors | Total slack | Free slack | Deadline | Resources | Work |
| --- | --- | --- | --- | --- | --- | --- | --- | --- | --- | --- | --- |
| 1055 | 14.3.4 | **Script 4** | 5d? | 2005-03-03 | 2005-03-08 |  | 21.88d |  |  |  |  |
| 1056 | 14.3.4.1 | Scenario(text) | 1d? | 2005-03-03 | 2005-03-03 |  | 21.88d | 0d |  |  |  |
| 1057 | 14.3.4.2 | Постановка задач | 1d? | 2005-03-04 | 2005-03-04 | 1056 | 21.88d | 0d |  |  |  |
| 1058 | 14.3.4.3 | Implimentation | 1d? | 2005-03-05 | 2005-03-05 | 1057 | 21.88d | 0d |  |  |  |
| 1059 | 14.3.4.4 | Dilogs/VO/Icons/Objects/Animations | 1d? | 2005-03-07 | 2005-03-07 | 1058 | 21.88d | 0d |  |  |  |
| 1060 | 14.3.4.5 | Настройка | 1d? | 2005-03-08 | 2005-03-08 | 1059 | 21.88d |  |  |  |  |
| 1061 | 14.3.5 | **Script 5** | 5d? | 2005-03-03 | 2005-03-08 |  | 21.88d |  |  |  |  |
| 1062 | 14.3.5.1 | Scenario(text) | 1d? | 2005-03-03 | 2005-03-03 |  | 21.88d | 0d |  |  |  |
| 1063 | 14.3.5.2 | Постановка задач | 1d? | 2005-03-04 | 2005-03-04 | 1062 | 21.88d | 0d |  |  |  |
| 1064 | 14.3.5.3 | Implimentation | 1d? | 2005-03-05 | 2005-03-05 | 1063 | 21.88d | 0d |  |  |  |
| 1065 | 14.3.5.4 | Dilogs/VO/Icons/Objects/Animations | 1d? | 2005-03-07 | 2005-03-07 | 1064 | 21.88d | 0d |  |  |  |
| 1066 | 14.3.5.5 | Настройка | 1d? | 2005-03-08 | 2005-03-08 | 1065 | 21.88d |  |  |  |  |
| 1068 | 15 | **22_Warlab** | 11d? | 2005-03-16 | 2005-03-28 | 990 | 15.88d |  | 2005-05-13 | Коан, Руслан | 88h |
| 1069 | 15.1 | **LevelDesign** | 11d? | 2005-03-16 | 2005-03-28 |  | 15.88d |  | 2005-04-15 |  |  |
| 1070 | 15.1.1 | **Stage 1** | 11d? | 2005-03-16 | 2005-03-28 |  | 15.88d |  |  |  |  |
| 1071 | 15.1.1.1 | List of Changes | 2d | 2005-03-16 | 2005-03-17 |  | 15.88d | 0d |  |  |  |
| 1072 | 15.1.1.2 | Changed Geometry | 1d? | 2005-03-18 | 2005-03-18 | 1071 | 15.88d | 0d |  |  |  |
| 1073 | 15.1.1.3 | Check List 1 | 1d? | 2005-03-19 | 2005-03-19 | 1072 | 15.88d | 0d |  |  |  |
| 1074 | 15.1.1.4 | Check List 2 | 1d? | 2005-03-21 | 2005-03-21 | 1073 | 15.88d | 0d |  |  |  |
| 1075 | 15.1.1.5 | Check List 3 | 1d? | 2005-03-22 | 2005-03-22 | 1074 | 15.88d | 0d |  |  |  |
| 1076 | 15.1.1.6 | Check List 4 | 1d? | 2005-03-23 | 2005-03-23 | 1075 | 15.88d | 0d |  |  |  |
| 1077 | 15.1.1.7 | Render Geometry | 1d? | 2005-03-24 | 2005-03-24 | 1076 | 15.88d | 0d |  |  |  |
| 1078 | 15.1.1.8 | Grass | 1d? | 2005-03-25 | 2005-03-25 | 1077 | 15.88d | 0d |  |  |  |
| 1079 | 15.1.1.9 | AI Maps | 1d? | 2005-03-26 | 2005-03-26 | 1078 | 15.88d | 0d |  |  |  |
| 1080 | 15.1.1.10 | Graphs | 1d? | 2005-03-28 | 2005-03-28 | 1079 | 15.88d |  |  |  |  |

| ID | WBS | Task | Duration | Start | Finish | Predecessors | Total slack | Free slack |
| --- | --- | --- | --- | --- | --- | --- | --- | --- |
| 1082 | 15.2 | **GameDesign** | 3d? | 2005-03-16 | 2005-03-18 |  | 47.88d |  |
| 1083 | 15.2.1 | **Secrets** | 3d? | 2005-03-16 | 2005-03-18 |  | 47.88d |  |
| 1084 | 15.2.1.1 | **Stage 1** | 3d? | 2005-03-16 | 2005-03-18 |  | 47.88d |  |
| 1085 | 15.2.1.1.1 | Design | 1d? | 2005-03-16 | 2005-03-16 |  | 47.88d | 0d |
| 1086 | 15.2.1.1.2 | Implementation | 1d? | 2005-03-17 | 2005-03-17 | 1085 | 47.88d | 0d |
| 1087 | 15.2.1.1.3 | Tuning | 1d? | 2005-03-18 | 2005-03-18 | 1086 | 47.88d |  |
| 1088 | 15.2.2 | **Smartterrains** | 3d? | 2005-03-16 | 2005-03-18 |  | 47.88d |  |
| 1089 | 15.2.2.1 | **Stage 1** | 3d? | 2005-03-16 | 2005-03-18 |  | 47.88d |  |
| 1090 | 15.2.2.1.1 | Design | 1d? | 2005-03-16 | 2005-03-16 |  | 47.88d | 0d |
| 1091 | 15.2.2.1.2 | Implementation | 1d? | 2005-03-17 | 2005-03-17 | 1090 | 47.88d | 0d |
| 1092 | 15.2.2.1.3 | Tuning | 1d? | 2005-03-18 | 2005-03-18 | 1091 | 47.88d |  |
| 1093 | 15.2.3 | **Monsters/Spawns** | 3d? | 2005-03-16 | 2005-03-18 |  | 47.88d |  |
| 1094 | 15.2.3.1 | **Stage 1** | 3d? | 2005-03-16 | 2005-03-18 |  | 47.88d |  |
| 1095 | 15.2.3.1.1 | Design | 1d? | 2005-03-16 | 2005-03-16 |  | 47.88d | 0d |
| 1096 | 15.2.3.1.2 | Implementation | 1d? | 2005-03-17 | 2005-03-17 | 1095 | 47.88d | 0d |
| 1097 | 15.2.3.1.3 | Tuning | 1d? | 2005-03-18 | 2005-03-18 | 1096 | 47.88d |  |
| 1098 | 15.2.4 | **Stalkers/Spawns** | 3d? | 2005-03-16 | 2005-03-18 |  | 47.88d |  |
| 1099 | 15.2.4.1 | **Stage 1** | 3d? | 2005-03-16 | 2005-03-18 |  | 47.88d |  |
| 1100 | 15.2.4.1.1 | Design | 1d? | 2005-03-16 | 2005-03-16 |  | 47.88d | 0d |
| 1101 | 15.2.4.1.2 | Implementation | 1d? | 2005-03-17 | 2005-03-17 | 1100 | 47.88d | 0d |
| 1102 | 15.2.4.1.3 | Tuning | 1d? | 2005-03-18 | 2005-03-18 | 1101 | 47.88d |  |
| 1103 | 15.2.5 | **Anomalies/Spawns** | 3d? | 2005-03-16 | 2005-03-18 |  | 47.88d |  |
| 1104 | 15.2.5.1 | **Stage 1** | 3d? | 2005-03-16 | 2005-03-18 |  | 47.88d |  |
| 1105 | 15.2.5.1.1 | Design | 1d? | 2005-03-16 | 2005-03-16 |  | 47.88d | 0d |
| 1106 | 15.2.5.1.2 | Implementation | 1d? | 2005-03-17 | 2005-03-17 | 1105 | 47.88d | 0d |
| 1107 | 15.2.5.1.3 | Tuning | 1d? | 2005-03-18 | 2005-03-18 | 1106 | 47.88d |  |

| ID | WBS | Task | Duration | Start | Finish | Predecessors | Total slack | Free slack |
| --- | --- | --- | --- | --- | --- | --- | --- | --- |
| 1108 | 15.2.6 | **Physicks** | 3d? | 2005-03-16 | 2005-03-18 |  | 47.88d |  |
| 1109 | 15.2.6.1 | **Stage 1** | 3d? | 2005-03-16 | 2005-03-18 |  | 47.88d |  |
| 1110 | 15.2.6.1.1 | Design | 1d? | 2005-03-16 | 2005-03-16 |  | 47.88d | 0d |
| 1111 | 15.2.6.1.2 | Implementation | 1d? | 2005-03-17 | 2005-03-17 | 1110 | 47.88d | 0d |
| 1112 | 15.2.6.1.3 | Tuning | 1d? | 2005-03-18 | 2005-03-18 | 1111 | 47.88d |  |
| 1114 | 15.3 | **Scripts** | 5d? | 2005-03-16 | 2005-03-21 |  | 45.88d |  |
| 1115 | 15.3.1 | **Script 1** | 5d? | 2005-03-16 | 2005-03-21 |  | 45.88d |  |
| 1116 | 15.3.1.1 | Scenario(text) | 1d? | 2005-03-16 | 2005-03-16 |  | 45.88d | 0d |
| 1117 | 15.3.1.2 | Постановка задач | 1d? | 2005-03-17 | 2005-03-17 | 1116 | 45.88d | 0d |
| 1118 | 15.3.1.3 | Implimentation | 1d? | 2005-03-18 | 2005-03-18 | 1117 | 45.88d | 0d |
| 1119 | 15.3.1.4 | Dilogs/VO/Icons/Objects/Animations | 1d? | 2005-03-19 | 2005-03-19 | 1118 | 45.88d | 0d |
| 1120 | 15.3.1.5 | Настройка | 1d? | 2005-03-21 | 2005-03-21 | 1119 | 45.88d |  |
| 1121 | 15.3.2 | **Script 2** | 5d? | 2005-03-16 | 2005-03-21 |  | 45.88d |  |
| 1122 | 15.3.2.1 | Scenario(text) | 1d? | 2005-03-16 | 2005-03-16 |  | 45.88d | 0d |
| 1123 | 15.3.2.2 | Постановка задач | 1d? | 2005-03-17 | 2005-03-17 | 1122 | 45.88d | 0d |
| 1124 | 15.3.2.3 | Implimentation | 1d? | 2005-03-18 | 2005-03-18 | 1123 | 45.88d | 0d |
| 1125 | 15.3.2.4 | Dilogs/VO/Icons/Objects/Animations | 1d? | 2005-03-19 | 2005-03-19 | 1124 | 45.88d | 0d |
| 1126 | 15.3.2.5 | Настройка | 1d? | 2005-03-21 | 2005-03-21 | 1125 | 45.88d |  |
| 1127 | 15.3.3 | **Script 3** | 5d? | 2005-03-16 | 2005-03-21 |  | 45.88d |  |
| 1128 | 15.3.3.1 | Scenario(text) | 1d? | 2005-03-16 | 2005-03-16 |  | 45.88d | 0d |
| 1129 | 15.3.3.2 | Постановка задач | 1d? | 2005-03-17 | 2005-03-17 | 1128 | 45.88d | 0d |
| 1130 | 15.3.3.3 | Implimentation | 1d? | 2005-03-18 | 2005-03-18 | 1129 | 45.88d | 0d |
| 1131 | 15.3.3.4 | Dilogs/VO/Icons/Objects/Animations | 1d? | 2005-03-19 | 2005-03-19 | 1130 | 45.88d | 0d |
| 1132 | 15.3.3.5 | Настройка | 1d? | 2005-03-21 | 2005-03-21 | 1131 | 45.88d |  |

| ID | WBS | Task | Duration | Start | Finish | Predecessors | Total slack | Free slack | Deadline | Resources | Work |
| --- | --- | --- | --- | --- | --- | --- | --- | --- | --- | --- | --- |
| 1133 | 15.3.4 | **Script 4** | 5d? | 2005-03-16 | 2005-03-21 |  | 45.88d |  |  |  |  |
| 1134 | 15.3.4.1 | Scenario(text) | 1d? | 2005-03-16 | 2005-03-16 |  | 45.88d | 0d |  |  |  |
| 1135 | 15.3.4.2 | Постановка задач | 1d? | 2005-03-17 | 2005-03-17 | 1134 | 45.88d | 0d |  |  |  |
| 1136 | 15.3.4.3 | Implimentation | 1d? | 2005-03-18 | 2005-03-18 | 1135 | 45.88d | 0d |  |  |  |
| 1137 | 15.3.4.4 | Dilogs/VO/Icons/Objects/Animations | 1d? | 2005-03-19 | 2005-03-19 | 1136 | 45.88d | 0d |  |  |  |
| 1138 | 15.3.4.5 | Настройка | 1d? | 2005-03-21 | 2005-03-21 | 1137 | 45.88d |  |  |  |  |
| 1139 | 15.3.5 | **Script 5** | 5d? | 2005-03-16 | 2005-03-21 |  | 45.88d |  |  |  |  |
| 1140 | 15.3.5.1 | Scenario(text) | 1d? | 2005-03-16 | 2005-03-16 |  | 45.88d | 0d |  |  |  |
| 1141 | 15.3.5.2 | Постановка задач | 1d? | 2005-03-17 | 2005-03-17 | 1140 | 45.88d | 0d |  |  |  |
| 1142 | 15.3.5.3 | Implimentation | 1d? | 2005-03-18 | 2005-03-18 | 1141 | 45.88d | 0d |  |  |  |
| 1143 | 15.3.5.4 | Dilogs/VO/Icons/Objects/Animations | 1d? | 2005-03-19 | 2005-03-19 | 1142 | 45.88d | 0d |  |  |  |
| 1144 | 15.3.5.5 | Настройка | 1d? | 2005-03-21 | 2005-03-21 | 1143 | 45.88d |  |  |  |  |
| 1153 | 16 | **10_Military_Base** | 11d? | 2005-01-24 | 2005-02-04 |  | -29.12d | 0d | 2005-03-01 | Маст Дай, Сидорович | 88h |
| 1154 | 16.1 | **LevelDesign** | 11d? | 2005-01-24 | 2005-02-04 |  | -29.12d | 0d | 2005-02-07 |  |  |
| 1155 | 16.1.1 | **Stage 1** | 11d? | 2005-01-24 | 2005-02-04 |  | -29.12d | 0d |  |  |  |
| 1156 | 16.1.1.1 | List of Changes | 2d | 2005-01-24 | 2005-01-25 |  | -29.12d | 0d |  |  |  |
| 1157 | 16.1.1.2 | Changed Geometry | 1d? | 2005-01-26 | 2005-01-26 | 1156 | -29.12d | 0d |  |  |  |
| 1158 | 16.1.1.3 | Check List 1 | 1d? | 2005-01-27 | 2005-01-27 | 1157 | -29.12d | 0d |  |  |  |
| 1159 | 16.1.1.4 | Check List 2 | 1d? | 2005-01-28 | 2005-01-28 | 1158 | -29.12d | 0d |  |  |  |
| 1160 | 16.1.1.5 | Check List 3 | 1d? | 2005-01-29 | 2005-01-29 | 1159 | -29.12d | 0d |  |  |  |
| 1161 | 16.1.1.6 | Check List 4 | 1d? | 2005-01-31 | 2005-01-31 | 1160 | -29.12d | 0d |  |  |  |
| 1162 | 16.1.1.7 | Render Geometry | 1d? | 2005-02-01 | 2005-02-01 | 1161 | -29.12d | 0d |  |  |  |
| 1163 | 16.1.1.8 | Grass | 1d? | 2005-02-02 | 2005-02-02 | 1162 | -29.12d | 0d |  |  |  |
| 1164 | 16.1.1.9 | AI Maps | 1d? | 2005-02-03 | 2005-02-03 | 1163 | -29.12d | 0d |  |  |  |
| 1165 | 16.1.1.10 | Graphs | 1d? | 2005-02-04 | 2005-02-04 | 1164 | -29.12d | 0d |  |  |  |

| ID | WBS | Task | Duration | Start | Finish | Predecessors | Total slack | Free slack |
| --- | --- | --- | --- | --- | --- | --- | --- | --- |
| 1167 | 16.2 | **GameDesign** | 3d? | 2005-01-24 | 2005-01-26 |  | -21.12d | 0d |
| 1168 | 16.2.1 | **Secrets** | 3d? | 2005-01-24 | 2005-01-26 |  | -21.12d | 0d |
| 1169 | 16.2.1.1 | **Stage 1** | 3d? | 2005-01-24 | 2005-01-26 |  | -21.12d | 0d |
| 1170 | 16.2.1.1.1 | Design | 1d? | 2005-01-24 | 2005-01-24 |  | -21.12d | 0d |
| 1171 | 16.2.1.1.2 | Implementation | 1d? | 2005-01-25 | 2005-01-25 | 1170 | -21.12d | 0d |
| 1172 | 16.2.1.1.3 | Tuning | 1d? | 2005-01-26 | 2005-01-26 | 1171 | -21.12d | 0d |
| 1173 | 16.2.2 | **Smartterrains** | 3d? | 2005-01-24 | 2005-01-26 |  | -21.12d | 0d |
| 1174 | 16.2.2.1 | **Stage 1** | 3d? | 2005-01-24 | 2005-01-26 |  | -21.12d | 0d |
| 1175 | 16.2.2.1.1 | Design | 1d? | 2005-01-24 | 2005-01-24 |  | -21.12d | 0d |
| 1176 | 16.2.2.1.2 | Implementation | 1d? | 2005-01-25 | 2005-01-25 | 1175 | -21.12d | 0d |
| 1177 | 16.2.2.1.3 | Tuning | 1d? | 2005-01-26 | 2005-01-26 | 1176 | -21.12d | 0d |
| 1178 | 16.2.3 | **Monsters/Spawns** | 3d? | 2005-01-24 | 2005-01-26 |  | -21.12d | 0d |
| 1179 | 16.2.3.1 | **Stage 1** | 3d? | 2005-01-24 | 2005-01-26 |  | -21.12d | 0d |
| 1180 | 16.2.3.1.1 | Design | 1d? | 2005-01-24 | 2005-01-24 |  | -21.12d | 0d |
| 1181 | 16.2.3.1.2 | Implementation | 1d? | 2005-01-25 | 2005-01-25 | 1180 | -21.12d | 0d |
| 1182 | 16.2.3.1.3 | Tuning | 1d? | 2005-01-26 | 2005-01-26 | 1181 | -21.12d | 0d |
| 1183 | 16.2.4 | **Stalkers/Spawns** | 3d? | 2005-01-24 | 2005-01-26 |  | -21.12d | 0d |
| 1184 | 16.2.4.1 | **Stage 1** | 3d? | 2005-01-24 | 2005-01-26 |  | -21.12d | 0d |
| 1185 | 16.2.4.1.1 | Design | 1d? | 2005-01-24 | 2005-01-24 |  | -21.12d | 0d |
| 1186 | 16.2.4.1.2 | Implementation | 1d? | 2005-01-25 | 2005-01-25 | 1185 | -21.12d | 0d |
| 1187 | 16.2.4.1.3 | Tuning | 1d? | 2005-01-26 | 2005-01-26 | 1186 | -21.12d | 0d |
| 1188 | 16.2.5 | **Anomalies/Spawns** | 3d? | 2005-01-24 | 2005-01-26 |  | -21.12d | 0d |
| 1189 | 16.2.5.1 | **Stage 1** | 3d? | 2005-01-24 | 2005-01-26 |  | -21.12d | 0d |
| 1190 | 16.2.5.1.1 | Design | 1d? | 2005-01-24 | 2005-01-24 |  | -21.12d | 0d |
| 1191 | 16.2.5.1.2 | Implementation | 1d? | 2005-01-25 | 2005-01-25 | 1190 | -21.12d | 0d |
| 1192 | 16.2.5.1.3 | Tuning | 1d? | 2005-01-26 | 2005-01-26 | 1191 | -21.12d | 0d |

| ID | WBS | Task | Duration | Start | Finish | Predecessors | Total slack | Free slack |
| --- | --- | --- | --- | --- | --- | --- | --- | --- |
| 1193 | 16.2.6 | **Physicks** | 3d? | 2005-01-24 | 2005-01-26 |  | -21.12d | 0d |
| 1194 | 16.2.6.1 | **Stage 1** | 3d? | 2005-01-24 | 2005-01-26 |  | -21.12d | 0d |
| 1195 | 16.2.6.1.1 | Design | 1d? | 2005-01-24 | 2005-01-24 |  | -21.12d | 0d |
| 1196 | 16.2.6.1.2 | Implementation | 1d? | 2005-01-25 | 2005-01-25 | 1195 | -21.12d | 0d |
| 1197 | 16.2.6.1.3 | Tuning | 1d? | 2005-01-26 | 2005-01-26 | 1196 | -21.12d | 0d |
| 1199 | 16.3 | **Scripts** | 5d? | 2005-01-24 | 2005-01-28 |  | -23.12d | 0d |
| 1200 | 16.3.1 | **Script 1** | 5d? | 2005-01-24 | 2005-01-28 |  | -23.12d | 0d |
| 1201 | 16.3.1.1 | Scenario(text) | 1d? | 2005-01-24 | 2005-01-24 |  | -23.12d | 0d |
| 1202 | 16.3.1.2 | Постановка задач | 1d? | 2005-01-25 | 2005-01-25 | 1201 | -23.12d | 0d |
| 1203 | 16.3.1.3 | Implimentation | 1d? | 2005-01-26 | 2005-01-26 | 1202 | -23.12d | 0d |
| 1204 | 16.3.1.4 | Dilogs/VO/Icons/Objects/Animations | 1d? | 2005-01-27 | 2005-01-27 | 1203 | -23.12d | 0d |
| 1205 | 16.3.1.5 | Настройка | 1d? | 2005-01-28 | 2005-01-28 | 1204 | -23.12d | 0d |
| 1206 | 16.3.2 | **Script 2** | 5d? | 2005-01-24 | 2005-01-28 |  | -23.12d | 0d |
| 1207 | 16.3.2.1 | Scenario(text) | 1d? | 2005-01-24 | 2005-01-24 |  | -23.12d | 0d |
| 1208 | 16.3.2.2 | Постановка задач | 1d? | 2005-01-25 | 2005-01-25 | 1207 | -23.12d | 0d |
| 1209 | 16.3.2.3 | Implimentation | 1d? | 2005-01-26 | 2005-01-26 | 1208 | -23.12d | 0d |
| 1210 | 16.3.2.4 | Dilogs/VO/Icons/Objects/Animations | 1d? | 2005-01-27 | 2005-01-27 | 1209 | -23.12d | 0d |
| 1211 | 16.3.2.5 | Настройка | 1d? | 2005-01-28 | 2005-01-28 | 1210 | -23.12d | 0d |
| 1212 | 16.3.3 | **Script 3** | 5d? | 2005-01-24 | 2005-01-28 |  | -23.12d | 0d |
| 1213 | 16.3.3.1 | Scenario(text) | 1d? | 2005-01-24 | 2005-01-24 |  | -23.12d | 0d |
| 1214 | 16.3.3.2 | Постановка задач | 1d? | 2005-01-25 | 2005-01-25 | 1213 | -23.12d | 0d |
| 1215 | 16.3.3.3 | Implimentation | 1d? | 2005-01-26 | 2005-01-26 | 1214 | -23.12d | 0d |
| 1216 | 16.3.3.4 | Dilogs/VO/Icons/Objects/Animations | 1d? | 2005-01-27 | 2005-01-27 | 1215 | -23.12d | 0d |
| 1217 | 16.3.3.5 | Настройка | 1d? | 2005-01-28 | 2005-01-28 | 1216 | -23.12d | 0d |

| ID | WBS | Task | Duration | Start | Finish | Predecessors | Total slack | Free slack | Deadline | Resources | Work |
| --- | --- | --- | --- | --- | --- | --- | --- | --- | --- | --- | --- |
| 1218 | 16.3.4 | **Script 4** | 5d? | 2005-01-24 | 2005-01-28 |  | -23.12d | 0d |  |  |  |
| 1219 | 16.3.4.1 | Scenario(text) | 1d? | 2005-01-24 | 2005-01-24 |  | -23.12d | 0d |  |  |  |
| 1220 | 16.3.4.2 | Постановка задач | 1d? | 2005-01-25 | 2005-01-25 | 1219 | -23.12d | 0d |  |  |  |
| 1221 | 16.3.4.3 | Implimentation | 1d? | 2005-01-26 | 2005-01-26 | 1220 | -23.12d | 0d |  |  |  |
| 1222 | 16.3.4.4 | Dilogs/VO/Icons/Objects/Animations | 1d? | 2005-01-27 | 2005-01-27 | 1221 | -23.12d | 0d |  |  |  |
| 1223 | 16.3.4.5 | Настройка | 1d? | 2005-01-28 | 2005-01-28 | 1222 | -23.12d | 0d |  |  |  |
| 1224 | 16.3.5 | **Script 5** | 5d? | 2005-01-24 | 2005-01-28 |  | -23.12d | 0d |  |  |  |
| 1225 | 16.3.5.1 | Scenario(text) | 1d? | 2005-01-24 | 2005-01-24 |  | -23.12d | 0d |  |  |  |
| 1226 | 16.3.5.2 | Постановка задач | 1d? | 2005-01-25 | 2005-01-25 | 1225 | -23.12d | 0d |  |  |  |
| 1227 | 16.3.5.3 | Implimentation | 1d? | 2005-01-26 | 2005-01-26 | 1226 | -23.12d | 0d |  |  |  |
| 1228 | 16.3.5.4 | Dilogs/VO/Icons/Objects/Animations | 1d? | 2005-01-27 | 2005-01-27 | 1227 | -23.12d | 0d |  |  |  |
| 1229 | 16.3.5.5 | Настройка | 1d? | 2005-01-28 | 2005-01-28 | 1228 | -23.12d | 0d |  |  |  |
| 1232 | 17 | **20_Sarcofag** | 11d? | 2005-02-05 | 2005-02-17 | 1153 | -29.12d | 0d | 2005-04-01 | Маст Дай, Сидорович | 88h |
| 1233 | 17.1 | **LevelDesign** | 11d? | 2005-02-05 | 2005-02-17 |  | -29.12d | 0d | 2005-03-01 |  |  |
| 1234 | 17.1.1 | **Stage 1** | 11d? | 2005-02-05 | 2005-02-17 |  | -29.12d | 0d |  |  |  |
| 1235 | 17.1.1.1 | List of Changes | 2d | 2005-02-05 | 2005-02-07 |  | -29.12d | 0d |  |  |  |
| 1236 | 17.1.1.2 | Changed Geometry | 1d? | 2005-02-08 | 2005-02-08 | 1235 | -29.12d | 0d |  |  |  |
| 1237 | 17.1.1.3 | Check List 1 | 1d? | 2005-02-09 | 2005-02-09 | 1236 | -29.12d | 0d |  |  |  |
| 1238 | 17.1.1.4 | Check List 2 | 1d? | 2005-02-10 | 2005-02-10 | 1237 | -29.12d | 0d |  |  |  |
| 1239 | 17.1.1.5 | Check List 3 | 1d? | 2005-02-11 | 2005-02-11 | 1238 | -29.12d | 0d |  |  |  |
| 1240 | 17.1.1.6 | Check List 4 | 1d? | 2005-02-12 | 2005-02-12 | 1239 | -29.12d | 0d |  |  |  |
| 1241 | 17.1.1.7 | Render Geometry | 1d? | 2005-02-14 | 2005-02-14 | 1240 | -29.12d | 0d |  |  |  |
| 1242 | 17.1.1.8 | Grass | 1d? | 2005-02-15 | 2005-02-15 | 1241 | -29.12d | 0d |  |  |  |
| 1243 | 17.1.1.9 | AI Maps | 1d? | 2005-02-16 | 2005-02-16 | 1242 | -29.12d | 0d |  |  |  |
| 1244 | 17.1.1.10 | Graphs | 1d? | 2005-02-17 | 2005-02-17 | 1243 | -29.12d | 0d |  |  |  |

| ID | WBS | Task | Duration | Start | Finish | Predecessors | Total slack | Free slack |
| --- | --- | --- | --- | --- | --- | --- | --- | --- |
| 1246 | 17.2 | **GameDesign** | 3d? | 2005-02-05 | 2005-02-08 |  | -21.12d | 0d |
| 1247 | 17.2.1 | **Secrets** | 3d? | 2005-02-05 | 2005-02-08 |  | -21.12d | 0d |
| 1248 | 17.2.1.1 | **Stage 1** | 3d? | 2005-02-05 | 2005-02-08 |  | -21.12d | 0d |
| 1249 | 17.2.1.1.1 | Design | 1d? | 2005-02-05 | 2005-02-05 |  | -21.12d | 0d |
| 1250 | 17.2.1.1.2 | Implementation | 1d? | 2005-02-07 | 2005-02-07 | 1249 | -21.12d | 0d |
| 1251 | 17.2.1.1.3 | Tuning | 1d? | 2005-02-08 | 2005-02-08 | 1250 | -21.12d | 0d |
| 1252 | 17.2.2 | **Smartterrains** | 3d? | 2005-02-05 | 2005-02-08 |  | -21.12d | 0d |
| 1253 | 17.2.2.1 | **Stage 1** | 3d? | 2005-02-05 | 2005-02-08 |  | -21.12d | 0d |
| 1254 | 17.2.2.1.1 | Design | 1d? | 2005-02-05 | 2005-02-05 |  | -21.12d | 0d |
| 1255 | 17.2.2.1.2 | Implementation | 1d? | 2005-02-07 | 2005-02-07 | 1254 | -21.12d | 0d |
| 1256 | 17.2.2.1.3 | Tuning | 1d? | 2005-02-08 | 2005-02-08 | 1255 | -21.12d | 0d |
| 1257 | 17.2.3 | **Monsters/Spawns** | 3d? | 2005-02-05 | 2005-02-08 |  | -21.12d | 0d |
| 1258 | 17.2.3.1 | **Stage 1** | 3d? | 2005-02-05 | 2005-02-08 |  | -21.12d | 0d |
| 1259 | 17.2.3.1.1 | Design | 1d? | 2005-02-05 | 2005-02-05 |  | -21.12d | 0d |
| 1260 | 17.2.3.1.2 | Implementation | 1d? | 2005-02-07 | 2005-02-07 | 1259 | -21.12d | 0d |
| 1261 | 17.2.3.1.3 | Tuning | 1d? | 2005-02-08 | 2005-02-08 | 1260 | -21.12d | 0d |
| 1262 | 17.2.4 | **Stalkers/Spawns** | 3d? | 2005-02-05 | 2005-02-08 |  | -21.12d | 0d |
| 1263 | 17.2.4.1 | **Stage 1** | 3d? | 2005-02-05 | 2005-02-08 |  | -21.12d | 0d |
| 1264 | 17.2.4.1.1 | Design | 1d? | 2005-02-05 | 2005-02-05 |  | -21.12d | 0d |
| 1265 | 17.2.4.1.2 | Implementation | 1d? | 2005-02-07 | 2005-02-07 | 1264 | -21.12d | 0d |
| 1266 | 17.2.4.1.3 | Tuning | 1d? | 2005-02-08 | 2005-02-08 | 1265 | -21.12d | 0d |
| 1267 | 17.2.5 | **Anomalies/Spawns** | 3d? | 2005-02-05 | 2005-02-08 |  | -21.12d | 0d |
| 1268 | 17.2.5.1 | **Stage 1** | 3d? | 2005-02-05 | 2005-02-08 |  | -21.12d | 0d |
| 1269 | 17.2.5.1.1 | Design | 1d? | 2005-02-05 | 2005-02-05 |  | -21.12d | 0d |
| 1270 | 17.2.5.1.2 | Implementation | 1d? | 2005-02-07 | 2005-02-07 | 1269 | -21.12d | 0d |
| 1271 | 17.2.5.1.3 | Tuning | 1d? | 2005-02-08 | 2005-02-08 | 1270 | -21.12d | 0d |

| ID | WBS | Task | Duration | Start | Finish | Predecessors | Total slack | Free slack |
| --- | --- | --- | --- | --- | --- | --- | --- | --- |
| 1272 | 17.2.6 | **Physicks** | 3d? | 2005-02-05 | 2005-02-08 |  | -21.12d | 0d |
| 1273 | 17.2.6.1 | **Stage 1** | 3d? | 2005-02-05 | 2005-02-08 |  | -21.12d | 0d |
| 1274 | 17.2.6.1.1 | Design | 1d? | 2005-02-05 | 2005-02-05 |  | -21.12d | 0d |
| 1275 | 17.2.6.1.2 | Implementation | 1d? | 2005-02-07 | 2005-02-07 | 1274 | -21.12d | 0d |
| 1276 | 17.2.6.1.3 | Tuning | 1d? | 2005-02-08 | 2005-02-08 | 1275 | -21.12d | 0d |
| 1278 | 17.3 | **Scripts** | 5d? | 2005-02-05 | 2005-02-10 |  | -23.12d | 0d |
| 1279 | 17.3.1 | **Script 1** | 5d? | 2005-02-05 | 2005-02-10 |  | -23.12d | 0d |
| 1280 | 17.3.1.1 | Scenario(text) | 1d? | 2005-02-05 | 2005-02-05 |  | -23.12d | 0d |
| 1281 | 17.3.1.2 | Постановка задач | 1d? | 2005-02-07 | 2005-02-07 | 1280 | -23.12d | 0d |
| 1282 | 17.3.1.3 | Implimentation | 1d? | 2005-02-08 | 2005-02-08 | 1281 | -23.12d | 0d |
| 1283 | 17.3.1.4 | Dilogs/VO/Icons/Objects/Animations | 1d? | 2005-02-09 | 2005-02-09 | 1282 | -23.12d | 0d |
| 1284 | 17.3.1.5 | Настройка | 1d? | 2005-02-10 | 2005-02-10 | 1283 | -23.12d | 0d |
| 1285 | 17.3.2 | **Script 2** | 5d? | 2005-02-05 | 2005-02-10 |  | -23.12d | 0d |
| 1286 | 17.3.2.1 | Scenario(text) | 1d? | 2005-02-05 | 2005-02-05 |  | -23.12d | 0d |
| 1287 | 17.3.2.2 | Постановка задач | 1d? | 2005-02-07 | 2005-02-07 | 1286 | -23.12d | 0d |
| 1288 | 17.3.2.3 | Implimentation | 1d? | 2005-02-08 | 2005-02-08 | 1287 | -23.12d | 0d |
| 1289 | 17.3.2.4 | Dilogs/VO/Icons/Objects/Animations | 1d? | 2005-02-09 | 2005-02-09 | 1288 | -23.12d | 0d |
| 1290 | 17.3.2.5 | Настройка | 1d? | 2005-02-10 | 2005-02-10 | 1289 | -23.12d | 0d |
| 1291 | 17.3.3 | **Script 3** | 5d? | 2005-02-05 | 2005-02-10 |  | -23.12d | 0d |
| 1292 | 17.3.3.1 | Scenario(text) | 1d? | 2005-02-05 | 2005-02-05 |  | -23.12d | 0d |
| 1293 | 17.3.3.2 | Постановка задач | 1d? | 2005-02-07 | 2005-02-07 | 1292 | -23.12d | 0d |
| 1294 | 17.3.3.3 | Implimentation | 1d? | 2005-02-08 | 2005-02-08 | 1293 | -23.12d | 0d |
| 1295 | 17.3.3.4 | Dilogs/VO/Icons/Objects/Animations | 1d? | 2005-02-09 | 2005-02-09 | 1294 | -23.12d | 0d |
| 1296 | 17.3.3.5 | Настройка | 1d? | 2005-02-10 | 2005-02-10 | 1295 | -23.12d | 0d |

| ID | WBS | Task | Duration | Start | Finish | Predecessors | Total slack | Free slack | Deadline | Resources | Work |
| --- | --- | --- | --- | --- | --- | --- | --- | --- | --- | --- | --- |
| 1297 | 17.3.4 | **Script 4** | 5d? | 2005-02-05 | 2005-02-10 |  | -23.12d | 0d |  |  |  |
| 1298 | 17.3.4.1 | Scenario(text) | 1d? | 2005-02-05 | 2005-02-05 |  | -23.12d | 0d |  |  |  |
| 1299 | 17.3.4.2 | Постановка задач | 1d? | 2005-02-07 | 2005-02-07 | 1298 | -23.12d | 0d |  |  |  |
| 1300 | 17.3.4.3 | Implimentation | 1d? | 2005-02-08 | 2005-02-08 | 1299 | -23.12d | 0d |  |  |  |
| 1301 | 17.3.4.4 | Dilogs/VO/Icons/Objects/Animations | 1d? | 2005-02-09 | 2005-02-09 | 1300 | -23.12d | 0d |  |  |  |
| 1302 | 17.3.4.5 | Настройка | 1d? | 2005-02-10 | 2005-02-10 | 1301 | -23.12d | 0d |  |  |  |
| 1303 | 17.3.5 | **Script 5** | 5d? | 2005-02-05 | 2005-02-10 |  | -23.12d | 0d |  |  |  |
| 1304 | 17.3.5.1 | Scenario(text) | 1d? | 2005-02-05 | 2005-02-05 |  | -23.12d | 0d |  |  |  |
| 1305 | 17.3.5.2 | Постановка задач | 1d? | 2005-02-07 | 2005-02-07 | 1304 | -23.12d | 0d |  |  |  |
| 1306 | 17.3.5.3 | Implimentation | 1d? | 2005-02-08 | 2005-02-08 | 1305 | -23.12d | 0d |  |  |  |
| 1307 | 17.3.5.4 | Dilogs/VO/Icons/Objects/Animations | 1d? | 2005-02-09 | 2005-02-09 | 1306 | -23.12d | 0d |  |  |  |
| 1308 | 17.3.5.5 | Настройка | 1d? | 2005-02-10 | 2005-02-10 | 1307 | -23.12d | 0d |  |  |  |
| 1310 | 18 | **19_Stancia** | 11d? | 2005-02-18 | 2005-03-02 | 1232 | -29.12d | 0d | 2005-04-29 | Маст Дай, Сидорович | 88h |
| 1311 | 18.1 | **LevelDesign** | 11d? | 2005-02-18 | 2005-03-02 |  | -29.12d | 0d | 2005-01-27 |  |  |
| 1312 | 18.1.1 | **Stage 1** | 11d? | 2005-02-18 | 2005-03-02 |  | -29.12d | 0d |  |  |  |
| 1313 | 18.1.1.1 | List of Changes | 2d | 2005-02-18 | 2005-02-19 |  | -29.12d | 0d |  |  |  |
| 1314 | 18.1.1.2 | Changed Geometry | 1d? | 2005-02-21 | 2005-02-21 | 1313 | -29.12d | 0d |  |  |  |
| 1315 | 18.1.1.3 | Check List 1 | 1d? | 2005-02-22 | 2005-02-22 | 1314 | -29.12d | 0d |  |  |  |
| 1316 | 18.1.1.4 | Check List 2 | 1d? | 2005-02-23 | 2005-02-23 | 1315 | -29.12d | 0d |  |  |  |
| 1317 | 18.1.1.5 | Check List 3 | 1d? | 2005-02-24 | 2005-02-24 | 1316 | -29.12d | 0d |  |  |  |
| 1318 | 18.1.1.6 | Check List 4 | 1d? | 2005-02-25 | 2005-02-25 | 1317 | -29.12d | 0d |  |  |  |
| 1319 | 18.1.1.7 | Render Geometry | 1d? | 2005-02-26 | 2005-02-26 | 1318 | -29.12d | 0d |  |  |  |
| 1320 | 18.1.1.8 | Grass | 1d? | 2005-02-28 | 2005-02-28 | 1319 | -29.12d | 0d |  |  |  |
| 1321 | 18.1.1.9 | AI Maps | 1d? | 2005-03-01 | 2005-03-01 | 1320 | -29.12d | 0d |  |  |  |
| 1322 | 18.1.1.10 | Graphs | 1d? | 2005-03-02 | 2005-03-02 | 1321 | -29.12d | 0d |  |  |  |

| ID | WBS | Task | Duration | Start | Finish | Predecessors | Total slack | Free slack |
| --- | --- | --- | --- | --- | --- | --- | --- | --- |
| 1324 | 18.2 | **GameDesign** | 3d? | 2005-02-18 | 2005-02-21 |  | 57.88d |  |
| 1325 | 18.2.1 | **Secrets** | 3d? | 2005-02-18 | 2005-02-21 |  | 57.88d |  |
| 1326 | 18.2.1.1 | **Stage 1** | 3d? | 2005-02-18 | 2005-02-21 |  | 57.88d |  |
| 1327 | 18.2.1.1.1 | Design | 1d? | 2005-02-18 | 2005-02-18 |  | 57.88d | 0d |
| 1328 | 18.2.1.1.2 | Implementation | 1d? | 2005-02-19 | 2005-02-19 | 1327 | 57.88d | 0d |
| 1329 | 18.2.1.1.3 | Tuning | 1d? | 2005-02-21 | 2005-02-21 | 1328 | 57.88d |  |
| 1330 | 18.2.2 | **Smartterrains** | 3d? | 2005-02-18 | 2005-02-21 |  | 57.88d |  |
| 1331 | 18.2.2.1 | **Stage 1** | 3d? | 2005-02-18 | 2005-02-21 |  | 57.88d |  |
| 1332 | 18.2.2.1.1 | Design | 1d? | 2005-02-18 | 2005-02-18 |  | 57.88d | 0d |
| 1333 | 18.2.2.1.2 | Implementation | 1d? | 2005-02-19 | 2005-02-19 | 1332 | 57.88d | 0d |
| 1334 | 18.2.2.1.3 | Tuning | 1d? | 2005-02-21 | 2005-02-21 | 1333 | 57.88d |  |
| 1335 | 18.2.3 | **Monsters/Spawns** | 3d? | 2005-02-18 | 2005-02-21 |  | 57.88d |  |
| 1336 | 18.2.3.1 | **Stage 1** | 3d? | 2005-02-18 | 2005-02-21 |  | 57.88d |  |
| 1337 | 18.2.3.1.1 | Design | 1d? | 2005-02-18 | 2005-02-18 |  | 57.88d | 0d |
| 1338 | 18.2.3.1.2 | Implementation | 1d? | 2005-02-19 | 2005-02-19 | 1337 | 57.88d | 0d |
| 1339 | 18.2.3.1.3 | Tuning | 1d? | 2005-02-21 | 2005-02-21 | 1338 | 57.88d |  |
| 1340 | 18.2.4 | **Stalkers/Spawns** | 3d? | 2005-02-18 | 2005-02-21 |  | 57.88d |  |
| 1341 | 18.2.4.1 | **Stage 1** | 3d? | 2005-02-18 | 2005-02-21 |  | 57.88d |  |
| 1342 | 18.2.4.1.1 | Design | 1d? | 2005-02-18 | 2005-02-18 |  | 57.88d | 0d |
| 1343 | 18.2.4.1.2 | Implementation | 1d? | 2005-02-19 | 2005-02-19 | 1342 | 57.88d | 0d |
| 1344 | 18.2.4.1.3 | Tuning | 1d? | 2005-02-21 | 2005-02-21 | 1343 | 57.88d |  |
| 1345 | 18.2.5 | **Anomalies/Spawns** | 3d? | 2005-02-18 | 2005-02-21 |  | 57.88d |  |
| 1346 | 18.2.5.1 | **Stage 1** | 3d? | 2005-02-18 | 2005-02-21 |  | 57.88d |  |
| 1347 | 18.2.5.1.1 | Design | 1d? | 2005-02-18 | 2005-02-18 |  | 57.88d | 0d |
| 1348 | 18.2.5.1.2 | Implementation | 1d? | 2005-02-19 | 2005-02-19 | 1347 | 57.88d | 0d |
| 1349 | 18.2.5.1.3 | Tuning | 1d? | 2005-02-21 | 2005-02-21 | 1348 | 57.88d |  |

| ID | WBS | Task | Duration | Start | Finish | Predecessors | Total slack | Free slack |
| --- | --- | --- | --- | --- | --- | --- | --- | --- |
| 1350 | 18.2.6 | **Physicks** | 3d? | 2005-02-18 | 2005-02-21 |  | 57.88d |  |
| 1351 | 18.2.6.1 | **Stage 1** | 3d? | 2005-02-18 | 2005-02-21 |  | 57.88d |  |
| 1352 | 18.2.6.1.1 | Design | 1d? | 2005-02-18 | 2005-02-18 |  | 57.88d | 0d |
| 1353 | 18.2.6.1.2 | Implementation | 1d? | 2005-02-19 | 2005-02-19 | 1352 | 57.88d | 0d |
| 1354 | 18.2.6.1.3 | Tuning | 1d? | 2005-02-21 | 2005-02-21 | 1353 | 57.88d |  |
| 1356 | 18.3 | **Scripts** | 5d? | 2005-02-18 | 2005-02-23 |  | 55.88d |  |
| 1357 | 18.3.1 | **Script 1** | 5d? | 2005-02-18 | 2005-02-23 |  | 55.88d |  |
| 1358 | 18.3.1.1 | Scenario(text) | 1d? | 2005-02-18 | 2005-02-18 |  | 55.88d | 0d |
| 1359 | 18.3.1.2 | Постановка задач | 1d? | 2005-02-19 | 2005-02-19 | 1358 | 55.88d | 0d |
| 1360 | 18.3.1.3 | Implimentation | 1d? | 2005-02-21 | 2005-02-21 | 1359 | 55.88d | 0d |
| 1361 | 18.3.1.4 | Dilogs/VO/Icons/Objects/Animations | 1d? | 2005-02-22 | 2005-02-22 | 1360 | 55.88d | 0d |
| 1362 | 18.3.1.5 | Настройка | 1d? | 2005-02-23 | 2005-02-23 | 1361 | 55.88d |  |
| 1363 | 18.3.2 | **Script 2** | 5d? | 2005-02-18 | 2005-02-23 |  | 55.88d |  |
| 1364 | 18.3.2.1 | Scenario(text) | 1d? | 2005-02-18 | 2005-02-18 |  | 55.88d | 0d |
| 1365 | 18.3.2.2 | Постановка задач | 1d? | 2005-02-19 | 2005-02-19 | 1364 | 55.88d | 0d |
| 1366 | 18.3.2.3 | Implimentation | 1d? | 2005-02-21 | 2005-02-21 | 1365 | 55.88d | 0d |
| 1367 | 18.3.2.4 | Dilogs/VO/Icons/Objects/Animations | 1d? | 2005-02-22 | 2005-02-22 | 1366 | 55.88d | 0d |
| 1368 | 18.3.2.5 | Настройка | 1d? | 2005-02-23 | 2005-02-23 | 1367 | 55.88d |  |
| 1369 | 18.3.3 | **Script 3** | 5d? | 2005-02-18 | 2005-02-23 |  | 55.88d |  |
| 1370 | 18.3.3.1 | Scenario(text) | 1d? | 2005-02-18 | 2005-02-18 |  | 55.88d | 0d |
| 1371 | 18.3.3.2 | Постановка задач | 1d? | 2005-02-19 | 2005-02-19 | 1370 | 55.88d | 0d |
| 1372 | 18.3.3.3 | Implimentation | 1d? | 2005-02-21 | 2005-02-21 | 1371 | 55.88d | 0d |
| 1373 | 18.3.3.4 | Dilogs/VO/Icons/Objects/Animations | 1d? | 2005-02-22 | 2005-02-22 | 1372 | 55.88d | 0d |
| 1374 | 18.3.3.5 | Настройка | 1d? | 2005-02-23 | 2005-02-23 | 1373 | 55.88d |  |

| ID | WBS | Task | Duration | Start | Finish | Predecessors | Total slack | Free slack | Deadline | Resources | Work |
| --- | --- | --- | --- | --- | --- | --- | --- | --- | --- | --- | --- |
| 1375 | 18.3.4 | **Script 4** | 5d? | 2005-02-18 | 2005-02-23 |  | 55.88d |  |  |  |  |
| 1376 | 18.3.4.1 | Scenario(text) | 1d? | 2005-02-18 | 2005-02-18 |  | 55.88d | 0d |  |  |  |
| 1377 | 18.3.4.2 | Постановка задач | 1d? | 2005-02-19 | 2005-02-19 | 1376 | 55.88d | 0d |  |  |  |
| 1378 | 18.3.4.3 | Implimentation | 1d? | 2005-02-21 | 2005-02-21 | 1377 | 55.88d | 0d |  |  |  |
| 1379 | 18.3.4.4 | Dilogs/VO/Icons/Objects/Animations | 1d? | 2005-02-22 | 2005-02-22 | 1378 | 55.88d | 0d |  |  |  |
| 1380 | 18.3.4.5 | Настройка | 1d? | 2005-02-23 | 2005-02-23 | 1379 | 55.88d |  |  |  |  |
| 1381 | 18.3.5 | **Script 5** | 5d? | 2005-02-18 | 2005-02-23 |  | 55.88d |  |  |  |  |
| 1382 | 18.3.5.1 | Scenario(text) | 1d? | 2005-02-18 | 2005-02-18 |  | 55.88d | 0d |  |  |  |
| 1383 | 18.3.5.2 | Постановка задач | 1d? | 2005-02-19 | 2005-02-19 | 1382 | 55.88d | 0d |  |  |  |
| 1384 | 18.3.5.3 | Implimentation | 1d? | 2005-02-21 | 2005-02-21 | 1383 | 55.88d | 0d |  |  |  |
| 1385 | 18.3.5.4 | Dilogs/VO/Icons/Objects/Animations | 1d? | 2005-02-22 | 2005-02-22 | 1384 | 55.88d | 0d |  |  |  |
| 1386 | 18.3.5.5 | Настройка | 1d? | 2005-02-23 | 2005-02-23 | 1385 | 55.88d |  |  |  |  |
| 1391 | 19 | **15_Radar** | 11d? | 2005-01-24 | 2005-02-04 |  | 1.88d | 0d | 2005-03-01 | Лестат, Чугай | 88h |
| 1392 | 19.1 | **LevelDesign** | 11d? | 2005-01-24 | 2005-02-04 |  | 1.88d |  | 2005-02-07 |  |  |
| 1393 | 19.1.1 | **Stage 1** | 11d? | 2005-01-24 | 2005-02-04 |  | 1.88d |  |  |  |  |
| 1394 | 19.1.1.1 | List of Changes | 2d | 2005-01-24 | 2005-01-25 |  | 1.88d | 0d |  |  |  |
| 1395 | 19.1.1.2 | Changed Geometry | 1d? | 2005-01-26 | 2005-01-26 | 1394 | 1.88d | 0d |  |  |  |
| 1396 | 19.1.1.3 | Check List 1 | 1d? | 2005-01-27 | 2005-01-27 | 1395 | 1.88d | 0d |  |  |  |
| 1397 | 19.1.1.4 | Check List 2 | 1d? | 2005-01-28 | 2005-01-28 | 1396 | 1.88d | 0d |  |  |  |
| 1398 | 19.1.1.5 | Check List 3 | 1d? | 2005-01-29 | 2005-01-29 | 1397 | 1.88d | 0d |  |  |  |
| 1399 | 19.1.1.6 | Check List 4 | 1d? | 2005-01-31 | 2005-01-31 | 1398 | 1.88d | 0d |  |  |  |
| 1400 | 19.1.1.7 | Render Geometry | 1d? | 2005-02-01 | 2005-02-01 | 1399 | 1.88d | 0d |  |  |  |
| 1401 | 19.1.1.8 | Grass | 1d? | 2005-02-02 | 2005-02-02 | 1400 | 1.88d | 0d |  |  |  |
| 1402 | 19.1.1.9 | AI Maps | 1d? | 2005-02-03 | 2005-02-03 | 1401 | 1.88d | 0d |  |  |  |
| 1403 | 19.1.1.10 | Graphs | 1d? | 2005-02-04 | 2005-02-04 | 1402 | 1.88d |  |  |  |  |

| ID | WBS | Task | Duration | Start | Finish | Predecessors | Total slack | Free slack |
| --- | --- | --- | --- | --- | --- | --- | --- | --- |
| 1405 | 19.2 | **GameDesign** | 3d? | 2005-01-24 | 2005-01-26 |  | 17.88d |  |
| 1406 | 19.2.1 | **Secrets** | 3d? | 2005-01-24 | 2005-01-26 |  | 17.88d |  |
| 1407 | 19.2.1.1 | **Stage 1** | 3d? | 2005-01-24 | 2005-01-26 |  | 17.88d |  |
| 1408 | 19.2.1.1.1 | Design | 1d? | 2005-01-24 | 2005-01-24 |  | 17.88d | 0d |
| 1409 | 19.2.1.1.2 | Implementation | 1d? | 2005-01-25 | 2005-01-25 | 1408 | 17.88d | 0d |
| 1410 | 19.2.1.1.3 | Tuning | 1d? | 2005-01-26 | 2005-01-26 | 1409 | 17.88d |  |
| 1411 | 19.2.2 | **Smartterrains** | 3d? | 2005-01-24 | 2005-01-26 |  | 17.88d |  |
| 1412 | 19.2.2.1 | **Stage 1** | 3d? | 2005-01-24 | 2005-01-26 |  | 17.88d |  |
| 1413 | 19.2.2.1.1 | Design | 1d? | 2005-01-24 | 2005-01-24 |  | 17.88d | 0d |
| 1414 | 19.2.2.1.2 | Implementation | 1d? | 2005-01-25 | 2005-01-25 | 1413 | 17.88d | 0d |
| 1415 | 19.2.2.1.3 | Tuning | 1d? | 2005-01-26 | 2005-01-26 | 1414 | 17.88d |  |
| 1416 | 19.2.3 | **Monsters/Spawns** | 3d? | 2005-01-24 | 2005-01-26 |  | 17.88d |  |
| 1417 | 19.2.3.1 | **Stage 1** | 3d? | 2005-01-24 | 2005-01-26 |  | 17.88d |  |
| 1418 | 19.2.3.1.1 | Design | 1d? | 2005-01-24 | 2005-01-24 |  | 17.88d | 0d |
| 1419 | 19.2.3.1.2 | Implementation | 1d? | 2005-01-25 | 2005-01-25 | 1418 | 17.88d | 0d |
| 1420 | 19.2.3.1.3 | Tuning | 1d? | 2005-01-26 | 2005-01-26 | 1419 | 17.88d |  |
| 1421 | 19.2.4 | **Stalkers/Spawns** | 3d? | 2005-01-24 | 2005-01-26 |  | 17.88d |  |
| 1422 | 19.2.4.1 | **Stage 1** | 3d? | 2005-01-24 | 2005-01-26 |  | 17.88d |  |
| 1423 | 19.2.4.1.1 | Design | 1d? | 2005-01-24 | 2005-01-24 |  | 17.88d | 0d |
| 1424 | 19.2.4.1.2 | Implementation | 1d? | 2005-01-25 | 2005-01-25 | 1423 | 17.88d | 0d |
| 1425 | 19.2.4.1.3 | Tuning | 1d? | 2005-01-26 | 2005-01-26 | 1424 | 17.88d |  |
| 1426 | 19.2.5 | **Anomalies/Spawns** | 3d? | 2005-01-24 | 2005-01-26 |  | 17.88d |  |
| 1427 | 19.2.5.1 | **Stage 1** | 3d? | 2005-01-24 | 2005-01-26 |  | 17.88d |  |
| 1428 | 19.2.5.1.1 | Design | 1d? | 2005-01-24 | 2005-01-24 |  | 17.88d | 0d |
| 1429 | 19.2.5.1.2 | Implementation | 1d? | 2005-01-25 | 2005-01-25 | 1428 | 17.88d | 0d |
| 1430 | 19.2.5.1.3 | Tuning | 1d? | 2005-01-26 | 2005-01-26 | 1429 | 17.88d |  |

| ID | WBS | Task | Duration | Start | Finish | Predecessors | Total slack | Free slack |
| --- | --- | --- | --- | --- | --- | --- | --- | --- |
| 1431 | 19.2.6 | **Physicks** | 3d? | 2005-01-24 | 2005-01-26 |  | 17.88d |  |
| 1432 | 19.2.6.1 | **Stage 1** | 3d? | 2005-01-24 | 2005-01-26 |  | 17.88d |  |
| 1433 | 19.2.6.1.1 | Design | 1d? | 2005-01-24 | 2005-01-24 |  | 17.88d | 0d |
| 1434 | 19.2.6.1.2 | Implementation | 1d? | 2005-01-25 | 2005-01-25 | 1433 | 17.88d | 0d |
| 1435 | 19.2.6.1.3 | Tuning | 1d? | 2005-01-26 | 2005-01-26 | 1434 | 17.88d |  |
| 1437 | 19.3 | **Scripts** | 5d? | 2005-01-24 | 2005-01-28 |  | 15.88d |  |
| 1438 | 19.3.1 | **Script 1** | 5d? | 2005-01-24 | 2005-01-28 |  | 15.88d |  |
| 1439 | 19.3.1.1 | Scenario(text) | 1d? | 2005-01-24 | 2005-01-24 |  | 15.88d | 0d |
| 1440 | 19.3.1.2 | Постановка задач | 1d? | 2005-01-25 | 2005-01-25 | 1439 | 15.88d | 0d |
| 1441 | 19.3.1.3 | Implimentation | 1d? | 2005-01-26 | 2005-01-26 | 1440 | 15.88d | 0d |
| 1442 | 19.3.1.4 | Dilogs/VO/Icons/Objects/Animations | 1d? | 2005-01-27 | 2005-01-27 | 1441 | 15.88d | 0d |
| 1443 | 19.3.1.5 | Настройка | 1d? | 2005-01-28 | 2005-01-28 | 1442 | 15.88d |  |
| 1444 | 19.3.2 | **Script 2** | 5d? | 2005-01-24 | 2005-01-28 |  | 15.88d |  |
| 1445 | 19.3.2.1 | Scenario(text) | 1d? | 2005-01-24 | 2005-01-24 |  | 15.88d | 0d |
| 1446 | 19.3.2.2 | Постановка задач | 1d? | 2005-01-25 | 2005-01-25 | 1445 | 15.88d | 0d |
| 1447 | 19.3.2.3 | Implimentation | 1d? | 2005-01-26 | 2005-01-26 | 1446 | 15.88d | 0d |
| 1448 | 19.3.2.4 | Dilogs/VO/Icons/Objects/Animations | 1d? | 2005-01-27 | 2005-01-27 | 1447 | 15.88d | 0d |
| 1449 | 19.3.2.5 | Настройка | 1d? | 2005-01-28 | 2005-01-28 | 1448 | 15.88d |  |
| 1450 | 19.3.3 | **Script 3** | 5d? | 2005-01-24 | 2005-01-28 |  | 15.88d |  |
| 1451 | 19.3.3.1 | Scenario(text) | 1d? | 2005-01-24 | 2005-01-24 |  | 15.88d | 0d |
| 1452 | 19.3.3.2 | Постановка задач | 1d? | 2005-01-25 | 2005-01-25 | 1451 | 15.88d | 0d |
| 1453 | 19.3.3.3 | Implimentation | 1d? | 2005-01-26 | 2005-01-26 | 1452 | 15.88d | 0d |
| 1454 | 19.3.3.4 | Dilogs/VO/Icons/Objects/Animations | 1d? | 2005-01-27 | 2005-01-27 | 1453 | 15.88d | 0d |
| 1455 | 19.3.3.5 | Настройка | 1d? | 2005-01-28 | 2005-01-28 | 1454 | 15.88d |  |

| ID | WBS | Task | Duration | Start | Finish | Predecessors | Total slack | Free slack | Deadline | Resources | Work |
| --- | --- | --- | --- | --- | --- | --- | --- | --- | --- | --- | --- |
| 1456 | 19.3.4 | **Script 4** | 5d? | 2005-01-24 | 2005-01-28 |  | 15.88d |  |  |  |  |
| 1457 | 19.3.4.1 | Scenario(text) | 1d? | 2005-01-24 | 2005-01-24 |  | 15.88d | 0d |  |  |  |
| 1458 | 19.3.4.2 | Постановка задач | 1d? | 2005-01-25 | 2005-01-25 | 1457 | 15.88d | 0d |  |  |  |
| 1459 | 19.3.4.3 | Implimentation | 1d? | 2005-01-26 | 2005-01-26 | 1458 | 15.88d | 0d |  |  |  |
| 1460 | 19.3.4.4 | Dilogs/VO/Icons/Objects/Animations | 1d? | 2005-01-27 | 2005-01-27 | 1459 | 15.88d | 0d |  |  |  |
| 1461 | 19.3.4.5 | Настройка | 1d? | 2005-01-28 | 2005-01-28 | 1460 | 15.88d |  |  |  |  |
| 1462 | 19.3.5 | **Script 5** | 5d? | 2005-01-24 | 2005-01-28 |  | 15.88d |  |  |  |  |
| 1463 | 19.3.5.1 | Scenario(text) | 1d? | 2005-01-24 | 2005-01-24 |  | 15.88d | 0d |  |  |  |
| 1464 | 19.3.5.2 | Постановка задач | 1d? | 2005-01-25 | 2005-01-25 | 1463 | 15.88d | 0d |  |  |  |
| 1465 | 19.3.5.3 | Implimentation | 1d? | 2005-01-26 | 2005-01-26 | 1464 | 15.88d | 0d |  |  |  |
| 1466 | 19.3.5.4 | Dilogs/VO/Icons/Objects/Animations | 1d? | 2005-01-27 | 2005-01-27 | 1465 | 15.88d | 0d |  |  |  |
| 1467 | 19.3.5.5 | Настройка | 1d? | 2005-01-28 | 2005-01-28 | 1466 | 15.88d |  |  |  |  |
| 1470 | 20 | **12_Yantar_Underground** | 11d? | 2005-02-05 | 2005-02-17 | 1391 | 9.88d | 0d | 2005-03-15 | Лестат, Чугай | 88h |
| 1471 | 20.1 | **LevelDesign** | 11d? | 2005-02-05 | 2005-02-17 |  | 9.88d |  | 2005-03-01 |  |  |
| 1472 | 20.1.1 | **Stage 1** | 11d? | 2005-02-05 | 2005-02-17 |  | 9.88d |  |  |  |  |
| 1473 | 20.1.1.1 | List of Changes | 2d | 2005-02-05 | 2005-02-07 |  | 9.88d | 0d |  |  |  |
| 1474 | 20.1.1.2 | Changed Geometry | 1d? | 2005-02-08 | 2005-02-08 | 1473 | 9.88d | 0d |  |  |  |
| 1475 | 20.1.1.3 | Check List 1 | 1d? | 2005-02-09 | 2005-02-09 | 1474 | 9.88d | 0d |  |  |  |
| 1476 | 20.1.1.4 | Check List 2 | 1d? | 2005-02-10 | 2005-02-10 | 1475 | 9.88d | 0d |  |  |  |
| 1477 | 20.1.1.5 | Check List 3 | 1d? | 2005-02-11 | 2005-02-11 | 1476 | 9.88d | 0d |  |  |  |
| 1478 | 20.1.1.6 | Check List 4 | 1d? | 2005-02-12 | 2005-02-12 | 1477 | 9.88d | 0d |  |  |  |
| 1479 | 20.1.1.7 | Render Geometry | 1d? | 2005-02-14 | 2005-02-14 | 1478 | 9.88d | 0d |  |  |  |
| 1480 | 20.1.1.8 | Grass | 1d? | 2005-02-15 | 2005-02-15 | 1479 | 9.88d | 0d |  |  |  |
| 1481 | 20.1.1.9 | AI Maps | 1d? | 2005-02-16 | 2005-02-16 | 1480 | 9.88d | 0d |  |  |  |
| 1482 | 20.1.1.10 | Graphs | 1d? | 2005-02-17 | 2005-02-17 | 1481 | 9.88d |  |  |  |  |

| ID | WBS | Task | Duration | Start | Finish | Predecessors | Total slack | Free slack |
| --- | --- | --- | --- | --- | --- | --- | --- | --- |
| 1484 | 20.2 | **GameDesign** | 3d? | 2005-02-05 | 2005-02-08 |  | 18.88d |  |
| 1485 | 20.2.1 | **Secrets** | 3d? | 2005-02-05 | 2005-02-08 |  | 18.88d |  |
| 1486 | 20.2.1.1 | **Stage 1** | 3d? | 2005-02-05 | 2005-02-08 |  | 18.88d |  |
| 1487 | 20.2.1.1.1 | Design | 1d? | 2005-02-05 | 2005-02-05 |  | 18.88d | 0d |
| 1488 | 20.2.1.1.2 | Implementation | 1d? | 2005-02-07 | 2005-02-07 | 1487 | 18.88d | 0d |
| 1489 | 20.2.1.1.3 | Tuning | 1d? | 2005-02-08 | 2005-02-08 | 1488 | 18.88d |  |
| 1490 | 20.2.2 | **Smartterrains** | 3d? | 2005-02-05 | 2005-02-08 |  | 18.88d |  |
| 1491 | 20.2.2.1 | **Stage 1** | 3d? | 2005-02-05 | 2005-02-08 |  | 18.88d |  |
| 1492 | 20.2.2.1.1 | Design | 1d? | 2005-02-05 | 2005-02-05 |  | 18.88d | 0d |
| 1493 | 20.2.2.1.2 | Implementation | 1d? | 2005-02-07 | 2005-02-07 | 1492 | 18.88d | 0d |
| 1494 | 20.2.2.1.3 | Tuning | 1d? | 2005-02-08 | 2005-02-08 | 1493 | 18.88d |  |
| 1495 | 20.2.3 | **Monsters/Spawns** | 3d? | 2005-02-05 | 2005-02-08 |  | 18.88d |  |
| 1496 | 20.2.3.1 | **Stage 1** | 3d? | 2005-02-05 | 2005-02-08 |  | 18.88d |  |
| 1497 | 20.2.3.1.1 | Design | 1d? | 2005-02-05 | 2005-02-05 |  | 18.88d | 0d |
| 1498 | 20.2.3.1.2 | Implementation | 1d? | 2005-02-07 | 2005-02-07 | 1497 | 18.88d | 0d |
| 1499 | 20.2.3.1.3 | Tuning | 1d? | 2005-02-08 | 2005-02-08 | 1498 | 18.88d |  |
| 1500 | 20.2.4 | **Stalkers/Spawns** | 3d? | 2005-02-05 | 2005-02-08 |  | 18.88d |  |
| 1501 | 20.2.4.1 | **Stage 1** | 3d? | 2005-02-05 | 2005-02-08 |  | 18.88d |  |
| 1502 | 20.2.4.1.1 | Design | 1d? | 2005-02-05 | 2005-02-05 |  | 18.88d | 0d |
| 1503 | 20.2.4.1.2 | Implementation | 1d? | 2005-02-07 | 2005-02-07 | 1502 | 18.88d | 0d |
| 1504 | 20.2.4.1.3 | Tuning | 1d? | 2005-02-08 | 2005-02-08 | 1503 | 18.88d |  |
| 1505 | 20.2.5 | **Anomalies/Spawns** | 3d? | 2005-02-05 | 2005-02-08 |  | 18.88d |  |
| 1506 | 20.2.5.1 | **Stage 1** | 3d? | 2005-02-05 | 2005-02-08 |  | 18.88d |  |
| 1507 | 20.2.5.1.1 | Design | 1d? | 2005-02-05 | 2005-02-05 |  | 18.88d | 0d |
| 1508 | 20.2.5.1.2 | Implementation | 1d? | 2005-02-07 | 2005-02-07 | 1507 | 18.88d | 0d |
| 1509 | 20.2.5.1.3 | Tuning | 1d? | 2005-02-08 | 2005-02-08 | 1508 | 18.88d |  |

| ID | WBS | Task | Duration | Start | Finish | Predecessors | Total slack | Free slack |
| --- | --- | --- | --- | --- | --- | --- | --- | --- |
| 1510 | 20.2.6 | **Physicks** | 3d? | 2005-02-05 | 2005-02-08 |  | 18.88d |  |
| 1511 | 20.2.6.1 | **Stage 1** | 3d? | 2005-02-05 | 2005-02-08 |  | 18.88d |  |
| 1512 | 20.2.6.1.1 | Design | 1d? | 2005-02-05 | 2005-02-05 |  | 18.88d | 0d |
| 1513 | 20.2.6.1.2 | Implementation | 1d? | 2005-02-07 | 2005-02-07 | 1512 | 18.88d | 0d |
| 1514 | 20.2.6.1.3 | Tuning | 1d? | 2005-02-08 | 2005-02-08 | 1513 | 18.88d |  |
| 1516 | 20.3 | **Scripts** | 5d? | 2005-02-05 | 2005-02-10 |  | 16.88d |  |
| 1517 | 20.3.1 | **Script 1** | 5d? | 2005-02-05 | 2005-02-10 |  | 16.88d |  |
| 1518 | 20.3.1.1 | Scenario(text) | 1d? | 2005-02-05 | 2005-02-05 |  | 16.88d | 0d |
| 1519 | 20.3.1.2 | Постановка задач | 1d? | 2005-02-07 | 2005-02-07 | 1518 | 16.88d | 0d |
| 1520 | 20.3.1.3 | Implimentation | 1d? | 2005-02-08 | 2005-02-08 | 1519 | 16.88d | 0d |
| 1521 | 20.3.1.4 | Dilogs/VO/Icons/Objects/Animations | 1d? | 2005-02-09 | 2005-02-09 | 1520 | 16.88d | 0d |
| 1522 | 20.3.1.5 | Настройка | 1d? | 2005-02-10 | 2005-02-10 | 1521 | 16.88d |  |
| 1523 | 20.3.2 | **Script 2** | 5d? | 2005-02-05 | 2005-02-10 |  | 16.88d |  |
| 1524 | 20.3.2.1 | Scenario(text) | 1d? | 2005-02-05 | 2005-02-05 |  | 16.88d | 0d |
| 1525 | 20.3.2.2 | Постановка задач | 1d? | 2005-02-07 | 2005-02-07 | 1524 | 16.88d | 0d |
| 1526 | 20.3.2.3 | Implimentation | 1d? | 2005-02-08 | 2005-02-08 | 1525 | 16.88d | 0d |
| 1527 | 20.3.2.4 | Dilogs/VO/Icons/Objects/Animations | 1d? | 2005-02-09 | 2005-02-09 | 1526 | 16.88d | 0d |
| 1528 | 20.3.2.5 | Настройка | 1d? | 2005-02-10 | 2005-02-10 | 1527 | 16.88d |  |
| 1529 | 20.3.3 | **Script 3** | 5d? | 2005-02-05 | 2005-02-10 |  | 16.88d |  |
| 1530 | 20.3.3.1 | Scenario(text) | 1d? | 2005-02-05 | 2005-02-05 |  | 16.88d | 0d |
| 1531 | 20.3.3.2 | Постановка задач | 1d? | 2005-02-07 | 2005-02-07 | 1530 | 16.88d | 0d |
| 1532 | 20.3.3.3 | Implimentation | 1d? | 2005-02-08 | 2005-02-08 | 1531 | 16.88d | 0d |
| 1533 | 20.3.3.4 | Dilogs/VO/Icons/Objects/Animations | 1d? | 2005-02-09 | 2005-02-09 | 1532 | 16.88d | 0d |
| 1534 | 20.3.3.5 | Настройка | 1d? | 2005-02-10 | 2005-02-10 | 1533 | 16.88d |  |

| ID | WBS | Task | Duration | Start | Finish | Predecessors | Total slack | Free slack | Deadline | Resources | Work |
| --- | --- | --- | --- | --- | --- | --- | --- | --- | --- | --- | --- |
| 1535 | 20.3.4 | **Script 4** | 5d? | 2005-02-05 | 2005-02-10 |  | 16.88d |  |  |  |  |
| 1536 | 20.3.4.1 | Scenario(text) | 1d? | 2005-02-05 | 2005-02-05 |  | 16.88d | 0d |  |  |  |
| 1537 | 20.3.4.2 | Постановка задач | 1d? | 2005-02-07 | 2005-02-07 | 1536 | 16.88d | 0d |  |  |  |
| 1538 | 20.3.4.3 | Implimentation | 1d? | 2005-02-08 | 2005-02-08 | 1537 | 16.88d | 0d |  |  |  |
| 1539 | 20.3.4.4 | Dilogs/VO/Icons/Objects/Animations | 1d? | 2005-02-09 | 2005-02-09 | 1538 | 16.88d | 0d |  |  |  |
| 1540 | 20.3.4.5 | Настройка | 1d? | 2005-02-10 | 2005-02-10 | 1539 | 16.88d |  |  |  |  |
| 1541 | 20.3.5 | **Script 5** | 5d? | 2005-02-05 | 2005-02-10 |  | 16.88d |  |  |  |  |
| 1542 | 20.3.5.1 | Scenario(text) | 1d? | 2005-02-05 | 2005-02-05 |  | 16.88d | 0d |  |  |  |
| 1543 | 20.3.5.2 | Постановка задач | 1d? | 2005-02-07 | 2005-02-07 | 1542 | 16.88d | 0d |  |  |  |
| 1544 | 20.3.5.3 | Implimentation | 1d? | 2005-02-08 | 2005-02-08 | 1543 | 16.88d | 0d |  |  |  |
| 1545 | 20.3.5.4 | Dilogs/VO/Icons/Objects/Animations | 1d? | 2005-02-09 | 2005-02-09 | 1544 | 16.88d | 0d |  |  |  |
| 1546 | 20.3.5.5 | Настройка | 1d? | 2005-02-10 | 2005-02-10 | 1545 | 16.88d |  |  |  |  |
| 1549 | 21 | **14_Swamp** | 11d? | 2005-02-18 | 2005-03-02 | 1470 | 10.88d |  | 2005-04-15 | Лестат, Чугай | 88h |
| 1550 | 21.1 | **LevelDesign** | 11d? | 2005-02-18 | 2005-03-02 |  | 10.88d |  | 2005-03-15 |  |  |
| 1551 | 21.1.1 | **Stage 1** | 11d? | 2005-02-18 | 2005-03-02 |  | 10.88d |  |  |  |  |
| 1552 | 21.1.1.1 | List of Changes | 2d | 2005-02-18 | 2005-02-19 |  | 10.88d | 0d |  |  |  |
| 1553 | 21.1.1.2 | Changed Geometry | 1d? | 2005-02-21 | 2005-02-21 | 1552 | 10.88d | 0d |  |  |  |
| 1554 | 21.1.1.3 | Check List 1 | 1d? | 2005-02-22 | 2005-02-22 | 1553 | 10.88d | 0d |  |  |  |
| 1555 | 21.1.1.4 | Check List 2 | 1d? | 2005-02-23 | 2005-02-23 | 1554 | 10.88d | 0d |  |  |  |
| 1556 | 21.1.1.5 | Check List 3 | 1d? | 2005-02-24 | 2005-02-24 | 1555 | 10.88d | 0d |  |  |  |
| 1557 | 21.1.1.6 | Check List 4 | 1d? | 2005-02-25 | 2005-02-25 | 1556 | 10.88d | 0d |  |  |  |
| 1558 | 21.1.1.7 | Render Geometry | 1d? | 2005-02-26 | 2005-02-26 | 1557 | 10.88d | 0d |  |  |  |
| 1559 | 21.1.1.8 | Grass | 1d? | 2005-02-28 | 2005-02-28 | 1558 | 10.88d | 0d |  |  |  |
| 1560 | 21.1.1.9 | AI Maps | 1d? | 2005-03-01 | 2005-03-01 | 1559 | 10.88d | 0d |  |  |  |
| 1561 | 21.1.1.10 | Graphs | 1d? | 2005-03-02 | 2005-03-02 | 1560 | 10.88d |  |  |  |  |

| ID | WBS | Task | Duration | Start | Finish | Predecessors | Total slack | Free slack |
| --- | --- | --- | --- | --- | --- | --- | --- | --- |
| 1563 | 21.2 | **GameDesign** | 3d? | 2005-02-18 | 2005-02-21 |  | 45.88d |  |
| 1564 | 21.2.1 | **Secrets** | 3d? | 2005-02-18 | 2005-02-21 |  | 45.88d |  |
| 1565 | 21.2.1.1 | **Stage 1** | 3d? | 2005-02-18 | 2005-02-21 |  | 45.88d |  |
| 1566 | 21.2.1.1.1 | Design | 1d? | 2005-02-18 | 2005-02-18 |  | 45.88d | 0d |
| 1567 | 21.2.1.1.2 | Implementation | 1d? | 2005-02-19 | 2005-02-19 | 1566 | 45.88d | 0d |
| 1568 | 21.2.1.1.3 | Tuning | 1d? | 2005-02-21 | 2005-02-21 | 1567 | 45.88d |  |
| 1569 | 21.2.2 | **Smartterrains** | 3d? | 2005-02-18 | 2005-02-21 |  | 45.88d |  |
| 1570 | 21.2.2.1 | **Stage 1** | 3d? | 2005-02-18 | 2005-02-21 |  | 45.88d |  |
| 1571 | 21.2.2.1.1 | Design | 1d? | 2005-02-18 | 2005-02-18 |  | 45.88d | 0d |
| 1572 | 21.2.2.1.2 | Implementation | 1d? | 2005-02-19 | 2005-02-19 | 1571 | 45.88d | 0d |
| 1573 | 21.2.2.1.3 | Tuning | 1d? | 2005-02-21 | 2005-02-21 | 1572 | 45.88d |  |
| 1574 | 21.2.3 | **Monsters/Spawns** | 3d? | 2005-02-18 | 2005-02-21 |  | 45.88d |  |
| 1575 | 21.2.3.1 | **Stage 1** | 3d? | 2005-02-18 | 2005-02-21 |  | 45.88d |  |
| 1576 | 21.2.3.1.1 | Design | 1d? | 2005-02-18 | 2005-02-18 |  | 45.88d | 0d |
| 1577 | 21.2.3.1.2 | Implementation | 1d? | 2005-02-19 | 2005-02-19 | 1576 | 45.88d | 0d |
| 1578 | 21.2.3.1.3 | Tuning | 1d? | 2005-02-21 | 2005-02-21 | 1577 | 45.88d |  |
| 1579 | 21.2.4 | **Stalkers/Spawns** | 3d? | 2005-02-18 | 2005-02-21 |  | 45.88d |  |
| 1580 | 21.2.4.1 | **Stage 1** | 3d? | 2005-02-18 | 2005-02-21 |  | 45.88d |  |
| 1581 | 21.2.4.1.1 | Design | 1d? | 2005-02-18 | 2005-02-18 |  | 45.88d | 0d |
| 1582 | 21.2.4.1.2 | Implementation | 1d? | 2005-02-19 | 2005-02-19 | 1581 | 45.88d | 0d |
| 1583 | 21.2.4.1.3 | Tuning | 1d? | 2005-02-21 | 2005-02-21 | 1582 | 45.88d |  |
| 1584 | 21.2.5 | **Anomalies/Spawns** | 3d? | 2005-02-18 | 2005-02-21 |  | 45.88d |  |
| 1585 | 21.2.5.1 | **Stage 1** | 3d? | 2005-02-18 | 2005-02-21 |  | 45.88d |  |
| 1586 | 21.2.5.1.1 | Design | 1d? | 2005-02-18 | 2005-02-18 |  | 45.88d | 0d |
| 1587 | 21.2.5.1.2 | Implementation | 1d? | 2005-02-19 | 2005-02-19 | 1586 | 45.88d | 0d |
| 1588 | 21.2.5.1.3 | Tuning | 1d? | 2005-02-21 | 2005-02-21 | 1587 | 45.88d |  |

| ID | WBS | Task | Duration | Start | Finish | Predecessors | Total slack | Free slack |
| --- | --- | --- | --- | --- | --- | --- | --- | --- |
| 1589 | 21.2.6 | **Physicks** | 3d? | 2005-02-18 | 2005-02-21 |  | 45.88d |  |
| 1590 | 21.2.6.1 | **Stage 1** | 3d? | 2005-02-18 | 2005-02-21 |  | 45.88d |  |
| 1591 | 21.2.6.1.1 | Design | 1d? | 2005-02-18 | 2005-02-18 |  | 45.88d | 0d |
| 1592 | 21.2.6.1.2 | Implementation | 1d? | 2005-02-19 | 2005-02-19 | 1591 | 45.88d | 0d |
| 1593 | 21.2.6.1.3 | Tuning | 1d? | 2005-02-21 | 2005-02-21 | 1592 | 45.88d |  |
| 1595 | 21.3 | **Scripts** | 5d? | 2005-02-18 | 2005-02-23 |  | 43.88d |  |
| 1596 | 21.3.1 | **Script 1** | 5d? | 2005-02-18 | 2005-02-23 |  | 43.88d |  |
| 1597 | 21.3.1.1 | Scenario(text) | 1d? | 2005-02-18 | 2005-02-18 |  | 43.88d | 0d |
| 1598 | 21.3.1.2 | Постановка задач | 1d? | 2005-02-19 | 2005-02-19 | 1597 | 43.88d | 0d |
| 1599 | 21.3.1.3 | Implimentation | 1d? | 2005-02-21 | 2005-02-21 | 1598 | 43.88d | 0d |
| 1600 | 21.3.1.4 | Dilogs/VO/Icons/Objects/Animations | 1d? | 2005-02-22 | 2005-02-22 | 1599 | 43.88d | 0d |
| 1601 | 21.3.1.5 | Настройка | 1d? | 2005-02-23 | 2005-02-23 | 1600 | 43.88d |  |
| 1602 | 21.3.2 | **Script 2** | 5d? | 2005-02-18 | 2005-02-23 |  | 43.88d |  |
| 1603 | 21.3.2.1 | Scenario(text) | 1d? | 2005-02-18 | 2005-02-18 |  | 43.88d | 0d |
| 1604 | 21.3.2.2 | Постановка задач | 1d? | 2005-02-19 | 2005-02-19 | 1603 | 43.88d | 0d |
| 1605 | 21.3.2.3 | Implimentation | 1d? | 2005-02-21 | 2005-02-21 | 1604 | 43.88d | 0d |
| 1606 | 21.3.2.4 | Dilogs/VO/Icons/Objects/Animations | 1d? | 2005-02-22 | 2005-02-22 | 1605 | 43.88d | 0d |
| 1607 | 21.3.2.5 | Настройка | 1d? | 2005-02-23 | 2005-02-23 | 1606 | 43.88d |  |
| 1608 | 21.3.3 | **Script 3** | 5d? | 2005-02-18 | 2005-02-23 |  | 43.88d |  |
| 1609 | 21.3.3.1 | Scenario(text) | 1d? | 2005-02-18 | 2005-02-18 |  | 43.88d | 0d |
| 1610 | 21.3.3.2 | Постановка задач | 1d? | 2005-02-19 | 2005-02-19 | 1609 | 43.88d | 0d |
| 1611 | 21.3.3.3 | Implimentation | 1d? | 2005-02-21 | 2005-02-21 | 1610 | 43.88d | 0d |
| 1612 | 21.3.3.4 | Dilogs/VO/Icons/Objects/Animations | 1d? | 2005-02-22 | 2005-02-22 | 1611 | 43.88d | 0d |
| 1613 | 21.3.3.5 | Настройка | 1d? | 2005-02-23 | 2005-02-23 | 1612 | 43.88d |  |

| ID | WBS | Task | Duration | Start | Finish | Predecessors | Total slack | Free slack |
| --- | --- | --- | --- | --- | --- | --- | --- | --- |
| 1614 | 21.3.4 | **Script 4** | 5d? | 2005-02-18 | 2005-02-23 |  | 43.88d |  |
| 1615 | 21.3.4.1 | Scenario(text) | 1d? | 2005-02-18 | 2005-02-18 |  | 43.88d | 0d |
| 1616 | 21.3.4.2 | Постановка задач | 1d? | 2005-02-19 | 2005-02-19 | 1615 | 43.88d | 0d |
| 1617 | 21.3.4.3 | Implimentation | 1d? | 2005-02-21 | 2005-02-21 | 1616 | 43.88d | 0d |
| 1618 | 21.3.4.4 | Dilogs/VO/Icons/Objects/Animations | 1d? | 2005-02-22 | 2005-02-22 | 1617 | 43.88d | 0d |
| 1619 | 21.3.4.5 | Настройка | 1d? | 2005-02-23 | 2005-02-23 | 1618 | 43.88d |  |
| 1620 | 21.3.5 | **Script 5** | 5d? | 2005-02-18 | 2005-02-23 |  | 43.88d |  |
| 1621 | 21.3.5.1 | Scenario(text) | 1d? | 2005-02-18 | 2005-02-18 |  | 43.88d | 0d |
| 1622 | 21.3.5.2 | Постановка задач | 1d? | 2005-02-19 | 2005-02-19 | 1621 | 43.88d | 0d |
| 1623 | 21.3.5.3 | Implimentation | 1d? | 2005-02-21 | 2005-02-21 | 1622 | 43.88d | 0d |
| 1624 | 21.3.5.4 | Dilogs/VO/Icons/Objects/Animations | 1d? | 2005-02-22 | 2005-02-22 | 1623 | 43.88d | 0d |
| 1625 | 21.3.5.5 | Настройка | 1d? | 2005-02-23 | 2005-02-23 | 1624 | 43.88d |  |
| 1640 | 22 | **21_Generators** | 11d? | 2005-01-24 | 2005-02-04 |  | 44d |  |
| 1641 | 22.1 | **LevelDesign** | 11d? | 2005-01-24 | 2005-02-04 |  | 44d |  |
| 1642 | 22.1.1 | **Stage 1** | 11d? | 2005-01-24 | 2005-02-04 |  | 44d |  |
| 1643 | 22.1.1.1 | List of Changes | 2d | 2005-01-24 | 2005-01-25 |  | 44d | 0d |
| 1644 | 22.1.1.2 | Changed Geometry | 1d? | 2005-01-26 | 2005-01-26 | 1643 | 44d | 0d |
| 1645 | 22.1.1.3 | Check List 1 | 1d? | 2005-01-27 | 2005-01-27 | 1644 | 44d | 0d |
| 1646 | 22.1.1.4 | Check List 2 | 1d? | 2005-01-28 | 2005-01-28 | 1645 | 44d | 0d |
| 1647 | 22.1.1.5 | Check List 3 | 1d? | 2005-01-29 | 2005-01-29 | 1646 | 44d | 0d |
| 1648 | 22.1.1.6 | Check List 4 | 1d? | 2005-01-31 | 2005-01-31 | 1647 | 44d | 0d |
| 1649 | 22.1.1.7 | Render Geometry | 1d? | 2005-02-01 | 2005-02-01 | 1648 | 44d | 0d |
| 1650 | 22.1.1.8 | Grass | 1d? | 2005-02-02 | 2005-02-02 | 1649 | 44d | 0d |
| 1651 | 22.1.1.9 | AI Maps | 1d? | 2005-02-03 | 2005-02-03 | 1650 | 44d | 0d |
| 1652 | 22.1.1.10 | Graphs | 1d? | 2005-02-04 | 2005-02-04 | 1651 | 44d |  |

| ID | WBS | Task | Duration | Start | Finish | Predecessors | Total slack | Free slack |
| --- | --- | --- | --- | --- | --- | --- | --- | --- |
| 1654 | 22.2 | **GameDesign** | 3d? | 2005-01-24 | 2005-01-26 |  | 52d |  |
| 1655 | 22.2.1 | **Secrets** | 3d? | 2005-01-24 | 2005-01-26 |  | 52d |  |
| 1656 | 22.2.1.1 | **Stage 1** | 3d? | 2005-01-24 | 2005-01-26 |  | 52d |  |
| 1657 | 22.2.1.1.1 | Design | 1d? | 2005-01-24 | 2005-01-24 |  | 52d | 0d |
| 1658 | 22.2.1.1.2 | Implementation | 1d? | 2005-01-25 | 2005-01-25 | 1657 | 52d | 0d |
| 1659 | 22.2.1.1.3 | Tuning | 1d? | 2005-01-26 | 2005-01-26 | 1658 | 52d |  |
| 1660 | 22.2.2 | **Smartterrains** | 3d? | 2005-01-24 | 2005-01-26 |  | 52d |  |
| 1661 | 22.2.2.1 | **Stage 1** | 3d? | 2005-01-24 | 2005-01-26 |  | 52d |  |
| 1662 | 22.2.2.1.1 | Design | 1d? | 2005-01-24 | 2005-01-24 |  | 52d | 0d |
| 1663 | 22.2.2.1.2 | Implementation | 1d? | 2005-01-25 | 2005-01-25 | 1662 | 52d | 0d |
| 1664 | 22.2.2.1.3 | Tuning | 1d? | 2005-01-26 | 2005-01-26 | 1663 | 52d |  |
| 1665 | 22.2.3 | **Monsters/Spawns** | 3d? | 2005-01-24 | 2005-01-26 |  | 52d |  |
| 1666 | 22.2.3.1 | **Stage 1** | 3d? | 2005-01-24 | 2005-01-26 |  | 52d |  |
| 1667 | 22.2.3.1.1 | Design | 1d? | 2005-01-24 | 2005-01-24 |  | 52d | 0d |
| 1668 | 22.2.3.1.2 | Implementation | 1d? | 2005-01-25 | 2005-01-25 | 1667 | 52d | 0d |
| 1669 | 22.2.3.1.3 | Tuning | 1d? | 2005-01-26 | 2005-01-26 | 1668 | 52d |  |
| 1670 | 22.2.4 | **Stalkers/Spawns** | 3d? | 2005-01-24 | 2005-01-26 |  | 52d |  |
| 1671 | 22.2.4.1 | **Stage 1** | 3d? | 2005-01-24 | 2005-01-26 |  | 52d |  |
| 1672 | 22.2.4.1.1 | Design | 1d? | 2005-01-24 | 2005-01-24 |  | 52d | 0d |
| 1673 | 22.2.4.1.2 | Implementation | 1d? | 2005-01-25 | 2005-01-25 | 1672 | 52d | 0d |
| 1674 | 22.2.4.1.3 | Tuning | 1d? | 2005-01-26 | 2005-01-26 | 1673 | 52d |  |
| 1675 | 22.2.5 | **Anomalies/Spawns** | 3d? | 2005-01-24 | 2005-01-26 |  | 52d |  |
| 1676 | 22.2.5.1 | **Stage 1** | 3d? | 2005-01-24 | 2005-01-26 |  | 52d |  |
| 1677 | 22.2.5.1.1 | Design | 1d? | 2005-01-24 | 2005-01-24 |  | 52d | 0d |
| 1678 | 22.2.5.1.2 | Implementation | 1d? | 2005-01-25 | 2005-01-25 | 1677 | 52d | 0d |
| 1679 | 22.2.5.1.3 | Tuning | 1d? | 2005-01-26 | 2005-01-26 | 1678 | 52d |  |

| ID | WBS | Task | Duration | Start | Finish | Predecessors | Total slack | Free slack |
| --- | --- | --- | --- | --- | --- | --- | --- | --- |
| 1680 | 22.2.6 | **Physicks** | 3d? | 2005-01-24 | 2005-01-26 |  | 52d |  |
| 1681 | 22.2.6.1 | **Stage 1** | 3d? | 2005-01-24 | 2005-01-26 |  | 52d |  |
| 1682 | 22.2.6.1.1 | Design | 1d? | 2005-01-24 | 2005-01-24 |  | 52d | 0d |
| 1683 | 22.2.6.1.2 | Implementation | 1d? | 2005-01-25 | 2005-01-25 | 1682 | 52d | 0d |
| 1684 | 22.2.6.1.3 | Tuning | 1d? | 2005-01-26 | 2005-01-26 | 1683 | 52d |  |
| 1686 | 22.3 | **Scripts** | 5d? | 2005-01-24 | 2005-01-28 |  | 50d |  |
| 1687 | 22.3.1 | **Script 1** | 5d? | 2005-01-24 | 2005-01-28 |  | 50d |  |
| 1688 | 22.3.1.1 | Scenario(text) | 1d? | 2005-01-24 | 2005-01-24 |  | 50d | 0d |
| 1689 | 22.3.1.2 | Постановка задач | 1d? | 2005-01-25 | 2005-01-25 | 1688 | 50d | 0d |
| 1690 | 22.3.1.3 | Implimentation | 1d? | 2005-01-26 | 2005-01-26 | 1689 | 50d | 0d |
| 1691 | 22.3.1.4 | Dilogs/VO/Icons/Objects/Animations | 1d? | 2005-01-27 | 2005-01-27 | 1690 | 50d | 0d |
| 1692 | 22.3.1.5 | Настройка | 1d? | 2005-01-28 | 2005-01-28 | 1691 | 50d |  |
| 1693 | 22.3.2 | **Script 2** | 5d? | 2005-01-24 | 2005-01-28 |  | 50d |  |
| 1694 | 22.3.2.1 | Scenario(text) | 1d? | 2005-01-24 | 2005-01-24 |  | 50d | 0d |
| 1695 | 22.3.2.2 | Постановка задач | 1d? | 2005-01-25 | 2005-01-25 | 1694 | 50d | 0d |
| 1696 | 22.3.2.3 | Implimentation | 1d? | 2005-01-26 | 2005-01-26 | 1695 | 50d | 0d |
| 1697 | 22.3.2.4 | Dilogs/VO/Icons/Objects/Animations | 1d? | 2005-01-27 | 2005-01-27 | 1696 | 50d | 0d |
| 1698 | 22.3.2.5 | Настройка | 1d? | 2005-01-28 | 2005-01-28 | 1697 | 50d |  |
| 1699 | 22.3.3 | **Script 3** | 5d? | 2005-01-24 | 2005-01-28 |  | 50d |  |
| 1700 | 22.3.3.1 | Scenario(text) | 1d? | 2005-01-24 | 2005-01-24 |  | 50d | 0d |
| 1701 | 22.3.3.2 | Постановка задач | 1d? | 2005-01-25 | 2005-01-25 | 1700 | 50d | 0d |
| 1702 | 22.3.3.3 | Implimentation | 1d? | 2005-01-26 | 2005-01-26 | 1701 | 50d | 0d |
| 1703 | 22.3.3.4 | Dilogs/VO/Icons/Objects/Animations | 1d? | 2005-01-27 | 2005-01-27 | 1702 | 50d | 0d |
| 1704 | 22.3.3.5 | Настройка | 1d? | 2005-01-28 | 2005-01-28 | 1703 | 50d |  |

| ID | WBS | Task | Duration | Start | Finish | Predecessors | Total slack | Free slack |
| --- | --- | --- | --- | --- | --- | --- | --- | --- |
| 1705 | 22.3.4 | **Script 4** | 5d? | 2005-01-24 | 2005-01-28 |  | 50d |  |
| 1706 | 22.3.4.1 | Scenario(text) | 1d? | 2005-01-24 | 2005-01-24 |  | 50d | 0d |
| 1707 | 22.3.4.2 | Постановка задач | 1d? | 2005-01-25 | 2005-01-25 | 1706 | 50d | 0d |
| 1708 | 22.3.4.3 | Implimentation | 1d? | 2005-01-26 | 2005-01-26 | 1707 | 50d | 0d |
| 1709 | 22.3.4.4 | Dilogs/VO/Icons/Objects/Animations | 1d? | 2005-01-27 | 2005-01-27 | 1708 | 50d | 0d |
| 1710 | 22.3.4.5 | Настройка | 1d? | 2005-01-28 | 2005-01-28 | 1709 | 50d |  |
| 1711 | 22.3.5 | **Script 5** | 5d? | 2005-01-24 | 2005-01-28 |  | 50d |  |
| 1712 | 22.3.5.1 | Scenario(text) | 1d? | 2005-01-24 | 2005-01-24 |  | 50d | 0d |
| 1713 | 22.3.5.2 | Постановка задач | 1d? | 2005-01-25 | 2005-01-25 | 1712 | 50d | 0d |
| 1714 | 22.3.5.3 | Implimentation | 1d? | 2005-01-26 | 2005-01-26 | 1713 | 50d | 0d |
| 1715 | 22.3.5.4 | Dilogs/VO/Icons/Objects/Animations | 1d? | 2005-01-27 | 2005-01-27 | 1714 | 50d | 0d |
| 1716 | 22.3.5.5 | Настройка | 1d? | 2005-01-28 | 2005-01-28 | 1715 | 50d |  |
